# Cape Phase II EPC schedule

Schedule from Primavera P6, 2024-04-05 to 2029-02-06, data date 2025-11-10, A marks actual dates.

## Calendars

- Fervo-5D-8H-Holidays: Mon-Fri 08:00-12:00, 13:00-17:00; Sat-Sun off. Exceptions (off unless hours are given): 2024-05-27, 2024-07-04, 2024-09-02, 2024-11-21 to 2024-11-22, 2024-12-25, 2025-01-01, 2025-04-18, 2025-05-26, 2025-07-04, 2025-09-01, 2025-11-27 to 2025-11-28, 2025-12-22 to 2025-12-26, 2025-12-29 to 2026-01-02, 2026-04-03, 2026-05-25, 2026-09-07, 2026-11-26 to 2026-11-27, 2026-12-25, 2027-01-01, 2027-03-26, 2027-05-31, 2027-09-06, 2027-11-25 to 2027-11-26, 2028-04-14, 2028-05-29, 2028-07-04, 2028-09-04, 2028-11-23 to 2028-11-24, 2028-12-25, 2029-01-01.
- Fervo-6D-10H-Holidays: Mon-Sat 07:00-17:00; Sun off. Exceptions (off unless hours are given): 2024-05-27, 2024-07-04, 2024-09-02, 2024-11-28 to 2024-11-29, 2024-12-25, 2025-01-01, 2025-04-18 to 2025-04-19, 2025-05-26, 2025-07-04 to 2025-07-05, 2025-09-01, 2025-11-27 to 2025-11-28, 2025-12-25, 2026-01-01, 2026-04-03 to 2026-04-04, 2026-05-25, 2026-07-04, 2026-09-07, 2026-11-26 to 2026-11-27, 2026-12-25 to 2026-12-26, 2027-01-01, 2027-03-26 to 2027-03-27, 2027-05-31, 2027-09-06, 2027-11-25 to 2027-11-27, 2027-12-25, 2028-01-01, 2028-04-14 to 2028-04-15, 2028-05-29, 2028-07-04, 2028-09-04, 2028-11-23 to 2028-11-25, 2028-12-25, 2029-01-01.
- HAR-5D-08H-1S-HOLIDAYS Thru 2029: Mon-Fri 08:00-12:00, 13:00-17:00; Sat-Sun off. Exceptions (off unless hours are given): 2024-05-27, 2024-07-04, 2024-09-02, 2024-11-21 to 2024-11-22, 2024-12-25, 2025-01-01, 2025-04-18, 2025-05-26, 2025-07-04, 2025-09-01, 2025-11-27 to 2025-11-28, 2025-12-25, 2026-01-01, 2026-04-03, 2026-05-25, 2026-09-07, 2026-11-26 to 2026-11-27, 2026-12-25, 2027-01-01, 2027-03-26, 2027-05-31, 2027-09-06, 2027-11-25 to 2027-11-26, 2028-04-14, 2028-05-29, 2028-07-04, 2028-09-04, 2028-11-23 to 2028-11-24, 2028-12-25, 2029-01-01.
- HAR-4D-10H-1S-HOLIDAYS Thru 2029: Mon-Thu 07:00-12:00, 12:30-17:30; Fri-Sun off. Exceptions (off unless hours are given): 2024-05-27, 2024-07-04, 2024-09-02, 2024-11-28, 2024-12-25, 2025-01-01, 2025-05-26, 2025-09-01, 2025-11-26 to 2025-11-27, 2025-12-24 to 2025-12-25, 2025-12-29 to 2026-01-01, 2026-05-25, 2026-09-07, 2026-11-26, 2027-05-31, 2027-09-06, 2027-11-25, 2028-05-29, 2028-07-04, 2028-09-04, 2028-11-23, 2028-12-25, 2029-01-01.

## Resources

| Resource | Group |
| --- | --- |
| CONST- Steel Contractor | labor |
| CONST-Piping Contractor | labor |
| CONST- E&I Contractor | labor |
| CONST- Civil Contractor | labor |
| CONST- Paint Contractor | labor |
| CONST -Mechanical Contractor(s) | labor |
| CONST- Foundation Contractor | labor |

## Schedule

| ID | WBS | Activity | Type | Duration | Start | Finish | Predecessors | Total float | Free float | Constraint | Calendar | Resources | x-Uncertainty |
| --- | --- | --- | --- | --- | --- | --- | --- | --- | --- | --- | --- | --- | --- |
|  | 5 | **Facility # 4** |  |  | 2025-04-18 | 2028-01-12 |  |  |  |  |  |  |  |
|  | 1 | **Project Milestones** |  |  | 2025-11-10 | 2027-11-15 |  |  |  |  |  |  |  |
| PM-1110 |  | Detailed Design KOM | milestone | 0d | 2025-11-10 | 2025-11-10 |  | -111d | 0d |  |  |  |  |
| PI1004 |  | 3D Model - First Client Review |  | 2d | 2025-11-24 | 2025-11-25 | PI1002 | -111d | 0d |  |  |  |  |
| PMC1010 |  | Construction Mobilization |  | 5d | 2026-01-05 | 2026-01-10 | CONST3890 | -144d | 0d | start on or after 2026-01-05 | Fervo-6D-10H-Holidays | CONST- Civil Contractor [21 h] | H |
| PR4045 |  | OSBL P&IDs - IFA | milestone | 0d | 2026-02-05 | 2026-02-05 | PR3265 FF | 762.88d |  |  |  |  |  |
| PM-1100 |  | Approved Vendor Drawings Received (All) | milestone | 0d | 2026-04-22 | 2026-04-22 | PRO-1070 FF, PRO-1170 FF, PRO-1570 FF, PRO-1970 FF, PRO-2770 FF, PRO-7570 FF, PRO-1770 FF, PRO-2170 FF, PRO-2370 FF, PRO-3170 FF, PRO-7970 FF, PRO-1670 FF, PRO-2270 FF, PRO-3570 FF, PRO-2570 FF, PRO-3070 FF, PRO-2670 FF, PRO-3370 FF, PRO-7870 FF, PRO-2470 FF, PRO-3770 FF, PRO-8170 FF, PRO-2070 FF, PRO-3470 FF, PRO-8570 FF, PRO-3970 FF, PRO-9370 FF, PRO-3270 FF, PRO-8270 FF, PRO-3870 FF, PRO-8770 FF, PRO-4170 FF, PRO-9570 FF, PRO-8070 FF, PRO-4070 FF, PRO-8670 FF, PRO-3670 FF, PRO-9970 FF, PRO-2870 FF, PRO-8970 FF, PRO-9470 FF, PRO-9070 FF, PRO-9770 FF, PRO-8470 FF, PRO-9870 FF, PRO-10370 FF, PRO-9670 FF, PRO-10270 FF, PRO-10570 FF, PRO-10670 FF, PRO-10470 FF, PRO-10070 FF, PRO-9270 FF, PRO-7670 FF, PRO-11170 FF, PRO-11570 FF, PRO-12370 FF, PRO-11070 FF, PRO-11370 FF, PRO-11770 FF, PRO-12570 FF, PRO-11470 FF, PRO-1390 FF, PRO-9170 FF | 190d | 25d |  |  |  |  |
| PR4055 |  | OSBL P&IDs - IFH | milestone | 0d | 2026-05-13 | 2026-05-13 | PR1166 FF | 694.88d | 15d |  |  |  |  |
| PR4065 |  | OSBL P&IDs - IFD | milestone | 0d | 2026-06-04 | 2026-06-04 | PR4055, PR1176 FF | 679.88d | 67d |  |  |  |  |
| PI1008 |  | 3D Model - Stage 2 - Client Review |  | 2d | 2026-06-12 | 2026-06-15 | PI1006, PR1156, ME1011, PR1086, PR1014 | 597.88d | 0d |  |  |  |  |
| PM-1090 |  | Fabrication Vendor Drawings Received (All) | milestone | 0d | 2026-07-09 | 2026-07-09 | PRO-1080 FF, PRO-1180 FF, PRO-1380 FF, PRO-1580 FF, PRO-1980 FF, PRO-2780 FF, PRO-7580 FF, PRO-1780 FF, PRO-2180 FF, PRO-2980 FF, PRO-1880 FF, PRO-2380 FF, PRO-3180 FF, PRO-7980 FF, PRO-1680 FF, PRO-2280 FF, PRO-3580 FF, PRO-8380 FF, PRO-2580 FF, PRO-3080 FF, PRO-9180 FF, PRO-2680 FF, PRO-3380 FF, PRO-7880 FF, PRO-2480 FF, PRO-3780 FF, PRO-8180 FF, PRO-2080 FF, PRO-3480 FF, PRO-8580 FF, PRO-3980 FF, PRO-9380 FF, PRO-3280 FF, PRO-8280 FF, PRO-3880 FF, PRO-8780 FF, PRO-4180 FF, PRO-9580 FF, PRO-4280 FF, PRO-8080 FF, PRO-4080 FF, PRO-8680 FF, PRO-3680 FF, PRO-9980 FF, PRO-2880 FF, PRO-8980 FF, PRO-9480 FF, PRO-9080 FF, PRO-9780 FF, PRO-8480 FF, PRO-9880 FF, PRO-10380 FF, PRO-9680 FF, PRO-10280 FF, PRO-10580 FF, PRO-10680 FF, PRO-10480 FF, PRO-10080 FF, PRO-9280 FF, PRO-7680 FF, PRO-11180 FF, PRO-11580 FF, PRO-12380 FF, PRO-11080 FF, PRO-11380 FF, PRO-11780 FF, PRO-12580 FF, PRO-11480 FF, PRO-4270 FF, PRO-8370 FF | 599.88d | 0d |  |  |  |  |
| PI1012 |  | 3D Model - Stage 3 - Client Review |  | 2d | 2026-07-28 | 2026-07-29 | PI1010, PI1222 FF | 610.88d | 0d |  |  |  |  |
| PR4075 |  | OSBL P&IDs - IFC | milestone | 0d | 2026-09-08 | 2026-09-08 | PR4065, PR4065 FF, PR3065 FF | 612.88d |  |  |  |  |  |
| PR4085 |  | Detailed Design Complete | milestone | 0d | 2026-09-29 | 2026-09-29 | PR4035 FF, ME1006 FF, CS1448 FF, CS1088 FF, PI1142 FF, PI2328 FF, EL3615 FF, IN1168 FF, CA1088 FF, CA1128 FF, PR3985 FF, PR4005 FF, PR3965 FF, ME1375 FF, CS1238 FF, CS2228 FF, CS1008 FF, CS1128 FF, CS2288 FF, PI1132 FF, PI2318 FF, ME1007 FF, ME1013 FF, EL2318 FF, EL4395 FF, EL4425 FF, EL3295 FF, EL3335 FF, EL3375 FF, EL3415 FF, EL3455 FF, EL3495 FF, EL3535 FF, EL3575 FF, EL4455 FF, EL4465 FF, EL2348 FF, IN47553 FF, IN1088 FF, IN47613 FF, IN47683 FF, CA1168 FF | 597.88d |  |  |  |  |  |
| PM-1400 |  | Construction Complete - Front Cooler Area Complete | milestone | 0d | 2027-01-28 | 2027-01-28 | CONST5570 FF, CONST5560 FF, CONST4630 FF | 515.88d |  |  |  |  |  |
| PM-1380 |  | ORC Turbines - Receive at Site - 4A | milestone | 0d | 2027-04-05 | 2027-04-05 | PRO-11100 | 469.88d |  |  |  |  |  |
| PM-1420 |  | Construction Complete - Back Cooler Area | milestone | 0d | 2027-06-25 | 2027-06-25 | CONST5800 FF, CONST5860 FF, CONST5870 FF | 411.88d |  |  |  |  |  |
| PM-1390 |  | ORC Turbines - Receive at Site - 4B | milestone | 0d | 2027-07-23 | 2027-07-23 | PRO-12860 | 391.88d |  |  |  |  |  |
| PM-1340 |  | Station Service Transformers - Receive at Site | milestone | 0d | 2027-09-13 | 2027-09-13 | PRO-9200 FF | 355.88d |  |  |  |  |  |
| PM-1360 |  | Unit Auxiliary Transformers - Receive at Site | milestone | 0d | 2027-09-13 | 2027-09-13 | PRO-2000 FF | 355.88d |  |  |  |  |  |
| PM-1410 |  | Construction Complete - Front Main Area | milestone | 0d | 2027-10-06 | 2027-10-06 | CONST3720 FF, CONST5590 FF, CONST5600 FF, CONST5580 FF, CONST5640 FF | 338.88d |  |  |  |  |  |
| PMC1015 |  | Construction Complete - Back Main Area | milestone | 0d | 2027-11-15 | 2027-11-15 | CONST5000 FF, CONST5890 FF, CONST5900 FF, CONST5880 FF | 310.88d |  |  |  |  |  |
| PMC1020 |  | Mechanical Completion for Facility 4 | milestone | 0d | 2027-11-15 | 2027-11-15 | CONST5880 FF, CONST5890, CONST5900 FF, CONST5870 FF, CONST5860 FF, CONST5600 FF, CONST5580 FF, CONST5590 FF, CONST5640 FF, CONST5560 FF, CONST5570 FF, PRO-7600 FF, PRO-1500 FF, PRO-2200 FF, PRO-8000 FF, PRO-8800 FF, PRO-9000 FF, PRO-9500 FF, PRO-12960 FF, PRO-12980 FF, PRO-13060 FF, PRO-13080 FF, PRO-13160 FF, PRO-13180 FF, PRO-13260 FF, PRO-13280 FF, PRO-13360 FF, PRO-13380 FF, CONST4450 FF, CONST4660 FF, CONST3778 FF, CONST5810 FF, CONST5060 FF | -94.9d | 0.1d |  | Fervo-6D-10H-Holidays |  | H |
|  | ENG | **Engineering** |  |  | 2025-09-15 | 2026-09-29 |  |  |  |  |  |  |  |
|  | PR | **Process** |  |  | 2025-11-10 | 2026-09-22 |  |  |  |  |  |  |  |
|  | DB | **Design Basis** |  |  |  |  |  |  |  |  |  |  |  |
|  | 1 | **General** |  |  | 2025-11-10 | 2026-01-06 |  |  |  |  |  |  |  |
| EL4475 |  | Received Client Load List | milestone | 0d | 2025-11-10 | 2025-11-10 | PM-1110 FF | 45d | 0d |  |  |  |  |
| EL4485 |  | Load List - Review & Update |  | 30d | 2025-11-10 | 2026-01-06 | EL4475 | 45d | 2d |  |  |  |  |

| ID | WBS | Activity | Duration | Start | Finish | Predecessors | Total float | Free float |
| --- | --- | --- | --- | --- | --- | --- | --- | --- |
|  | BOD | **Basis of Design - Process** |  | 2026-01-07 | 2026-02-17 |  |  |  |
| PR1002 |  | Basis of Design - Process - IFA | 15d | 2026-01-07 | 2026-01-27 | PR3465 | 729.88d | 0d |
| PR1004 |  | Basis of Design - Process - Client Review | 5d | 2026-01-28 | 2026-02-03 | PR1002 | 729.88d | 0d |
| PR1006 |  | Basis of Design - Process - IFD | 10d | 2026-02-04 | 2026-02-17 | PR1004 | 729.88d | 127d |
|  | BEDD | **BEDD Document** |  | 2025-11-10 | 2026-01-06 |  |  |  |
| PR3445 |  | BEDD - Process - IFA | 15d | 2025-11-10 | 2025-12-02 | PM-1110 | 729.88d | 0d |
| PR3455 |  | BEDD - Process - Client Review | 5d | 2025-12-03 | 2025-12-09 | PR3445 | 729.88d | 0d |
| PR3465 |  | BEDD - Process - IFD | 10d | 2025-12-10 | 2026-01-06 | PR3455 | 729.88d | 0d |
|  | BFD | **Block Flow Diagram** |  | 2025-11-14 | 2025-12-04 |  |  |  |
| PR1010 |  | OSBL - Block Flow Diagram - IFA | 5d | 2025-11-14 | 2025-11-20 | PR1026 SS+4d | -37d | 0d |
| PR1012 |  | OSBL - Block Flow Diagram - Client Review | 5d | 2025-11-21 | 2025-12-01 | PR1010 | 268d | 0d |
| PR1014 |  | OSBL - Block Flow Diagram - IFD | 3d | 2025-12-02 | 2025-12-04 | PR1012 | 268d | 35d |
|  | HMB | **Heat & Material Balance** |  | 2025-11-10 | 2025-12-09 |  |  |  |
| PR1026 |  | OSBL - Heat & Material Balance - IFA | 10d | 2025-11-10 | 2025-11-21 | PM-1110 | -37d | 0d |
| PR1036 |  | OSBL - Heat & Material Balance - Client Review | 5d | 2025-11-24 | 2025-12-02 | PR1026 | 729.88d | 0d |
| PR1046 |  | OSBL - Heat & Material Balance - IFD | 5d | 2025-12-03 | 2025-12-09 | PR1036 | 729.88d | 130d |
|  | HMB1 | **Hydraulics** |  |  |  |  |  |  |
|  | PFD | **PFDs** |  | 2025-11-19 | 2026-01-29 |  |  |  |
| PR1066 |  | OSBL - Process Flow Diagram - IFA | 20d | 2025-11-19 | 2025-12-18 | PR1026 FF+5d, PR1010 SS+3d | -37d | 0d |
| PR1076 |  | OSBL - Process Flow Diagram - Client Review | 5d | 2025-12-19 | 2026-01-08 | PR1066 | 238d | 0d |
| PR1086 |  | OSBL - Process Flow Diagram - IFD | 15d | 2026-01-09 | 2026-01-29 | PR1076, PR1026 FF | 238d | 5d |
|  | MSD | **Material Selection Diagram** |  | 2026-01-23 | 2026-03-02 |  |  |  |
| PR1106 |  | Material Selection Diagram - IFA | 10d | 2026-01-23 | 2026-02-05 | PR1026, PR3265 FF | 213d | 0d |
| PR1116 |  | Material Selection Diagram - Client Review | 5d | 2026-02-06 | 2026-02-12 | PR1106 | 231d | 0d |
| PR1126 |  | Material Selection Diagram - IFD | 12d | 2026-02-13 | 2026-03-02 | PR1116 | 231d | 66d |

| ID | WBS | Activity | Type | Duration | Start | Finish | Predecessors | Total float | Free float |
| --- | --- | --- | --- | --- | --- | --- | --- | --- | --- |
|  | P&ID | **P&IDs** |  |  | 2025-11-10 | 2026-09-22 |  |  |  |
|  | ISBL | **OSBL P&IDs** |  |  | 2025-12-17 | 2026-09-08 |  |  |  |
| PR1146 |  | OSBL P&IDs - Development IFA |  | 20d | 2025-12-17 | 2026-01-27 | PR1066 FF+10d, PR2875 FF+10d, PR3075 FF+10d, PR2845 FF+10d, PR2815 FF+10d, PR2855 FF+10d, PR2865 FF+10d, PR4015 FF+10d, PR2835 FF+10d, PR2825 FF+10d | 43d | 0d |
| PR3265 |  | OSBL P&IDs - IFA |  | 5d | 2026-01-30 | 2026-02-05 | PR1146 FS+2d, PR3375, PR3425 | 43d | 0d |
| PR1156 |  | OSBL P&IDs - Client Review / Meeting |  | 5d | 2026-02-06 | 2026-02-12 | PR1146, PR3265 | 203d | 0d |
| PR3295 |  | OSBL P&IDs - Development IFH |  | 20d | 2026-04-09 | 2026-05-06 | PR1156, PRO-11570 FF+10d, PRO-9870 FF+10d, PRO-11470 FF+10d, PRO-8070 FF+10d | 165d | 0d |
| PR1166 |  | OSBL P&IDs - IFH |  | 5d | 2026-05-07 | 2026-05-13 | PR1156, ME1011 FF, PR1086 FF, PR1014 FF, PR3295 | 165d | 0d |
| PR1176 |  | OSBL P&IDs - IFD |  | 15d | 2026-05-14 | 2026-06-04 | PR1166, PR1126 FF, PR1266 FF, PR1156, ME1011 FF+5d, PR1086, PR1014, ME1004, PM-1100 FF+5d | 165d | 0d |
| PR3065 |  | OSBL P&IDs - IFC |  | 15d | 2026-08-18 | 2026-09-08 | PR1176, ME1006 FF, PR1456 FF, PI0106 FF, PI1142 FF, PR1006, PR1366 FF, PR1226 FF, PR1176 FF, PM-1090 FF+10d | 602.88d | 0d |
|  | OSBL | **Vendors P&IDs** |  |  | 2025-11-10 | 2025-11-10 |  |  |  |
| PR3375 |  | Received ACC P&IDs - IFD | milestone | 0d | 2025-11-10 | 2025-11-10 | PR3425 FF | 90d | 47d |
| PR3425 |  | Received Baker Huges P&IDs - IFD | milestone | 0d | 2025-11-10 | 2025-11-10 | PM-1110 FF | 90d | 0d |
|  | 1 | **ISBL P&IDs** |  |  | 2025-11-10 | 2025-11-10 |  |  |  |
| PR4025 |  | ISBL P&IDs - Received | milestone | 0d | 2025-11-10 | 2025-11-10 | PM-1110 FF | 794.88d | 192d |
|  | 2 | **Master Set P&IDs** |  |  | 2026-08-25 | 2026-09-22 |  |  |  |
| PR4035 |  | Master Set P&IDs - Assembly & CAD - IFC |  | 20d | 2026-08-25 | 2026-09-22 | PR3065 FF+10d, PR4025 | 602.88d | 5d |
|  | US | **Utility Summary** |  |  | 2026-01-09 | 2026-09-08 |  |  |  |
| PR1186 |  | Utility Summary - IFA |  | 20d | 2026-01-09 | 2026-02-05 | PR1026, PR1086 FF, PR1014 FF, PR1066 FF, PR1106 FF, PR3265 FF | 692.88d | 0d |
| PR1196 |  | Utility Summary - Client Review |  | 5d | 2026-02-06 | 2026-02-12 | PR1186 | 692.88d | 68d |
| PR1206 |  | Utility Summary - IFD |  | 10d | 2026-05-21 | 2026-06-04 | PR1196, PR1176 FF | 624.88d | 7d |
| PR3985 |  | Utility Summary - IFC |  | 10d | 2026-08-25 | 2026-09-08 | PR1206 FF, PR3065 FF | 612.88d | 15d |
|  | LL | **Line List** |  |  | 2025-12-17 | 2026-01-27 |  |  |  |
| PR1226 |  | Line List - IFA - Process Conditions Input |  | 20d | 2025-12-17 | 2026-01-27 | PR1146 FF, PR1066 FF | 220d | 7d |
|  | PEL | **Process Equipment List** |  |  |  |  |  |  |  |
|  | PDS | **OSBL - Process Equipment Data Sheets** |  |  | 2025-11-24 | 2026-01-13 |  |  |  |
| PR2815 |  | OSBL Process Equipment Data Sheets - Vapor Distribution Header |  | 20d | 2025-11-24 | 2026-01-06 | PR1026 | 48d | 0d |
| PR2825 |  | OSBL Process Equipment Data Sheets - Fire Protection Pumps |  | 25d | 2025-11-24 | 2026-01-13 | PR1026 | 43d | 0d |
| PR2845 |  | OSBL Process Equipment Data Sheets - Air Cooled Heat Exchanger - Lube Oil Cooler ??? |  | 15d | 2025-11-24 | 2025-12-16 | PR1026 | 30d | 0d |
| PR2855 |  | OSBL Process Equipment Data Sheets - Working Fluid Drain Pump |  | 20d | 2025-11-24 | 2026-01-06 | PR1026 | 48d | 0d |
| PR2865 |  | OSBL Process Equipment Data Sheets - Fire Protection Package |  | 20d | 2025-11-24 | 2026-01-06 | PR1026 | 48d | 0d |
| PR2875 |  | OSBL Process Equipment Data Sheets - Oil Water Seperator |  | 12d | 2025-11-24 | 2025-12-11 | PR1026 | 43d | 0d |
| PR3075 |  | OSBL Process Equipment Data Sheets - Fire Water/Protection Tank |  | 10d | 2025-11-24 | 2025-12-09 | PR1026 | 4d | 0d |
| PR4015 |  | OSBL Process Equipment Data Sheets - Vapor Recovery Skid |  | 20d | 2025-11-24 | 2026-01-06 | PR2815 SS | 48d | 0d |
| PR2835 |  | OSBL Process Equipment Data Sheets - Instrument Air Skid |  | 11d | 2025-12-10 | 2026-01-07 | PR1026 SS, PR3075 SS+10d | 4d | 0d |

| ID | WBS | Activity | Duration | Start | Finish | Predecessors | Total float | Free float |
| --- | --- | --- | --- | --- | --- | --- | --- | --- |
|  | PCN | **Process Control Narrative** |  | 2026-02-06 | 2026-06-18 |  |  |  |
| PR1346 |  | Process Control Narrative - IFA | 20d | 2026-02-06 | 2026-03-05 | PR1146 SS, PR1066, PR1106 | 657.88d | 0d |
| PR1356 |  | Process Control Narrative - Client Review | 5d | 2026-03-06 | 2026-03-12 | PR1346 | 657.88d | 58d |
| PR1366 |  | Process Control Narrative - IFD | 10d | 2026-06-05 | 2026-06-18 | PR1356, PR1126, PR1176 | 599.88d | 0d |
|  | PIDS | **Process Instrument Data Sheets** |  | 2026-01-14 | 2026-08-24 |  |  |  |
| PR1386 |  | Process Instrument Data Sheets - In-line Instrument | 20d | 2026-01-14 | 2026-02-10 | PR1146 FF+10d | 599.88d | 0d |
| PR3995 |  | Process Instrument Data Sheets - Off-line Instrument | 20d | 2026-02-11 | 2026-03-10 | PR1386 | 599.88d | 0d |
| PR4005 |  | Process Instrument Data Sheets - Final | 20d | 2026-07-28 | 2026-08-24 | PM-1090, PI1010 | 622.88d | 25d |
|  | HAZ | **HAZOP** |  | 2026-05-14 | 2026-06-18 |  |  |  |
| PR1426 |  | HAZOP | 5d | 2026-05-14 | 2026-05-20 | PR3295 FS+5d | 607.88d | 0d |
| PR1436 |  | HAZOP - Report - IFA | 5d | 2026-05-21 | 2026-05-28 | PR1426 | 659.88d | 0d |
| PR1446 |  | HAZOP - Client Review | 5d | 2026-05-29 | 2026-06-04 | PR1436 | 659.88d | 0d |
| PR1456 |  | HAZOP - Issue Recommendations | 10d | 2026-06-05 | 2026-06-18 | PR1446 | 659.88d | 57d |
|  | PSV | **PSV Datasheets & Summary** |  | 2026-02-11 | 2026-07-23 |  |  |  |
| PR3205 |  | PSV Datasheets & Summary - IFA | 20d | 2026-02-11 | 2026-03-10 | PR1386 | 714.88d | 0d |
| PR3215 |  | PSV Datasheets & Summary - Client Review | 5d | 2026-03-11 | 2026-03-17 | PR3205 | 714.88d | 0d |
| PR3225 |  | PSV Datasheets & Summary - IFD | 10d | 2026-03-18 | 2026-03-31 | PR3215 | 714.88d | 70d |
| PR3965 |  | PSV Datasheets & Summary - Final Summary - Vendor Data | 10d | 2026-07-10 | 2026-07-23 | PR3225, PRO-3680, PM-1090 | 644.88d | 47d |
|  | ME | **Mechanical** |  | 2025-11-19 | 2026-06-18 |  |  |  |
|  | ME1 | **Mechanical Equipment List** |  | 2025-11-19 | 2026-06-18 |  |  |  |
| PR1266 |  | Develop Equipment List | 20d | 2025-11-19 | 2025-12-18 | PR1066 FF | -37d | 0d |
| ME1000 |  | Mechanical Equipment List - IFA | 10d | 2025-12-19 | 2026-01-15 | PR1266 | 43d | 0d |
| ME1002 |  | Mechanical Equipment List - Client Review | 5d | 2026-01-16 | 2026-01-22 | ME1000 | 43d | 0d |
| ME1004 |  | Mechanical Equipment List - IFD | 10d | 2026-01-23 | 2026-02-05 | ME1002, EL1002 | 43d | 0d |
| ME1006 |  | Mechanical Equipment List - IFC | 10d | 2026-06-05 | 2026-06-18 | ME1004, PR1266 FF, EL1004, PR3295, PR1176 FF, PR1176 | 659.88d | 0d |

| ID | WBS | Activity | Duration | Start | Finish | Predecessors | Total float | Free float |
| --- | --- | --- | --- | --- | --- | --- | --- | --- |
|  | BT | **Fire Water/Protection Tank** |  | 2025-12-10 | 2026-01-13 |  |  |  |
| ME2855 |  | Develop MRQ Package - Fire Water/Protection Tank | 15d | 2025-12-10 | 2026-01-13 | PR3075 | 135d | 0d |
|  | AC | **Fire Protection Pumps** |  | 2026-01-14 | 2026-02-03 |  |  |  |
| ME1025 |  | Develop MRQ Package - Fire Protection Pumps | 15d | 2026-01-14 | 2026-02-03 | PR2825 | 120d | 0d |
|  | GLV | **Instrument Air Skid** |  | 2025-12-11 | 2026-01-14 |  |  |  |
| ME1105 |  | Develop MRQ Package - Instrument Air Skid | 15d | 2025-12-11 | 2026-01-14 | PR2835 FF+5d | 4d | 0d |
|  | FFE | **Air Cooled Heat Exchanger** |  | 2025-12-17 | 2026-01-20 |  |  |  |
| ME1195 |  | Develop MRQ Package - Air Cooled Heat Exchanger - Lube Oil Cooler ??? | 15d | 2025-12-17 | 2026-01-20 | PR2845 | 30d | 0d |
|  | FFE1 | **Vapor Recovery Skid** |  | 2026-01-07 | 2026-01-27 |  |  |  |
| ME2865 |  | Develop MRQ Package - Vapor Recovery Skid | 15d | 2026-01-07 | 2026-01-27 | PR4015 | 85d | 0d |
|  | EXC | **Datasheet for Working Fluid Drain Pump** |  | 2026-01-07 | 2026-01-27 |  |  |  |
| ME1285 |  | Develop MRQ Package - Working Fluid Drain Pump | 15d | 2026-01-07 | 2026-01-27 | PR2855 | 125d | 0d |
|  | SB | **Fire Protection Sub-Contract Package** |  | 2026-01-07 | 2026-01-27 |  |  |  |
| ME1375 |  | Develop MRQ Package - Fire Protection Sub-Contract Package - ??? What type of System - Subcontract ??? | 15d | 2026-01-07 | 2026-01-27 | PR2865 | 769.88d | 172d |
|  | Pumps | **Oil Water Separator** |  | 2025-12-12 | 2026-01-15 |  |  |  |
| ME1465 |  | Develop MRQ Package - Oil Water Separator | 15d | 2025-12-12 | 2026-01-15 | PR2875 | 43d | 0d |
|  | CV | **Civil** |  | 2025-11-10 | 2026-03-03 |  |  |  |
|  | BOD | **Basis of Design** |  | 2025-11-10 | 2025-12-16 |  |  |  |
| CS1218 |  | Basis of Design - Civil - IFA | 10d | 2025-11-10 | 2025-11-21 | PM-1110 | 744.88d | 0d |
| CS1228 |  | Basis of Design - Civil - Client Review | 5d | 2025-11-24 | 2025-12-02 | CS1218 | 789.88d | 0d |
| CS1238 |  | Basis of Design - Civil - IFD | 10d | 2025-12-03 | 2025-12-16 | CS1228 | 789.88d | 192d |
|  | RPP | **Site Design** |  | 2025-11-10 | 2025-12-02 |  |  |  |
| CS1378 |  | Site Design | 15d | 2025-11-10 | 2025-12-02 | CS1218 SS | 744.88d | 0d |
|  | GDP | **Grading & Drainage Plans** |  | 2025-12-03 | 2026-01-13 |  |  |  |
| CS1298 |  | Grading and Drainage Design | 20d | 2025-12-03 | 2026-01-13 | CS1378 | 744.88d | 0d |

| ID | WBS | Activity | Duration | Start | Finish | Predecessors | Total float | Free float |
| --- | --- | --- | --- | --- | --- | --- | --- | --- |
|  | SD | **Utility Design** |  | 2025-12-17 | 2026-01-27 |  |  |  |
| CS2178 |  | Utility Design | 20d | 2025-12-17 | 2026-01-27 | CS1298 SS+10d | 744.88d | 0d |
|  | SRV | **Survey Scope of Work** |  |  |  |  |  |  |
|  | CF | **Cut and Fill Excavation Plans** |  |  |  |  |  |  |
|  | UG | **Civil Plans** |  | 2026-01-14 | 2026-03-03 |  |  |  |
| CS1418 |  | Civil Plans - IFA | 20d | 2026-01-14 | 2026-02-10 | CS2178 SS+10d | 744.88d | 0d |
| CS1428 |  | Civil Plans - Client Review | 5d | 2026-02-11 | 2026-02-17 | CS1418 | 744.88d | 0d |
| CS1448 |  | Civil Plans - IFC | 10d | 2026-02-18 | 2026-03-03 | CS1428 | 744.88d | 147d |
|  | 1 | **Structural** |  | 2025-11-24 | 2026-08-06 |  |  |  |
|  | Geo | **Geotechnical Scope of Work** |  |  |  |  |  |  |
|  | STBOD | **Basis of Design** |  | 2025-11-24 | 2026-01-13 |  |  |  |
| CS2208 |  | Basis of Design - Structural - IFA | 10d | 2025-11-24 | 2025-12-09 | CS1218 | 779.88d | 0d |
| CS2218 |  | Basis of Design - Structural - Client Review | 5d | 2025-12-10 | 2025-12-16 | CS2208 | 779.88d | 0d |
| CS2228 |  | Basis of Design - Structural - IFC | 10d | 2025-12-17 | 2026-01-13 | CS2218 | 779.88d | 182d |
|  | PL | **Piling Analysis / Drawings** |  | 2025-11-26 | 2026-01-08 |  |  |  |
| CS1178 |  | Piling Drawings - IFA | 10d | 2025-11-26 | 2025-12-11 | PI1004 | -111d | 0d |
| CS1188 |  | Piling Drawings - Client Review | 5d | 2025-12-12 | 2025-12-18 | CS1178 | -111d | 0d |
| CS1208 |  | Piling Drawings - IFC | 5d | 2025-12-19 | 2026-01-08 | CS1188 | -111d | 1d |
|  | SD | **Standard Drawings - Structural** |  | 2026-06-12 | 2026-07-30 |  |  |  |
| CS1002 |  | Standard Drawings - Structural - IFA | 20d | 2026-06-12 | 2026-07-09 | PI1006 | 639.88d | 0d |
| CS1004 |  | Standard Drawings - Structural - Client Review | 5d | 2026-07-10 | 2026-07-16 | CS1002 | 639.88d | 0d |
| CS1008 |  | Standard Drawings - Structural - IFC | 10d | 2026-07-17 | 2026-07-30 | CS1004 | 639.88d | 42d |
|  | FND | **Foundation Analysis / Drawings (Front Cooler Area)** |  | 2025-12-19 | 2026-02-19 |  |  |  |
| CS1018 |  | Foundation Drawings - Structural - IFA (Front Cooler Area) | 20d | 2025-12-19 | 2026-01-29 | PR1266, CS1178, PI1004 | -37d | 0d |
| CS1028 |  | Foundation Drawings - Client Review (Front Cooler Area) | 5d | 2026-01-30 | 2026-02-05 | CS1018 | -37d | 0d |
| CS1048 |  | Foundation Drawings - IFC (Front Cooler Area) | 10d | 2026-02-06 | 2026-02-19 | CS1028 | -37d | 0d |

| ID | WBS | Activity | Duration | Start | Finish | Predecessors | Total float | Free float |
| --- | --- | --- | --- | --- | --- | --- | --- | --- |
|  | FND1 | **Foundation Analysis / Drawings (Other Areas)** |  | 2025-11-26 | 2026-03-26 |  |  |  |
| CS2298 |  | Foundation Drawings - Structural - IFA (Other Areas) | 60d | 2025-11-26 | 2026-03-05 | PI1004 | 79d | 0d |
| CS2308 |  | Foundation Drawings - Client Review (Other Areas) | 5d | 2026-03-06 | 2026-03-12 | CS2298 | 79d | 0d |
| CS2318 |  | Foundation Drawings - IFC (Other Areas) | 10d | 2026-03-13 | 2026-03-26 | CS2308 | 79d | 115d |
|  | <PS | **MPS Foundation / Structural Analysis / Drawings** |  | 2026-06-19 | 2026-08-06 |  |  |  |
| CS1058 |  | MPS Foundation / Structural Drawings - Structural - IFA | 20d | 2026-06-19 | 2026-07-16 | PR1266, CS1178, PI1222 FF+5d | 634.88d | 0d |
| CS1068 |  | MPS Foundation / Structural Drawings - Client Review | 5d | 2026-07-17 | 2026-07-23 | CS1058 | 634.88d | 0d |
| CS1088 |  | MPS Foundation / Structural Drawings - IFC | 10d | 2026-07-24 | 2026-08-06 | CS1068 | 634.88d | 37d |
|  | SLP | **Structural Steel Location Plans** |  | 2026-05-14 | 2026-07-02 |  |  |  |
| CS1098 |  | Structural Steel Location Plans - Structural - IFA | 20d | 2026-05-14 | 2026-06-11 | PR1266 FF, PI1006 FF, CS1178 FF | 659.88d | 0d |
| CS1108 |  | Structural Steel Location Plans - Client Review | 5d | 2026-06-12 | 2026-06-18 | CS1098 | 659.88d | 0d |
| CS1128 |  | Structural Steel Location Plans - IFC | 10d | 2026-06-19 | 2026-07-02 | CS1108 | 659.88d | 62d |
|  | FLP | **Foundation Location Plans** |  | 2025-12-19 | 2026-02-12 |  |  |  |
| CS1138 |  | Foundation Location Plans - Structural - IFA | 20d | 2025-12-19 | 2026-01-29 | PI1102 FF | -32d | 0d |
| CS1148 |  | Foundation Location Plans - Client Review | 5d | 2026-01-30 | 2026-02-05 | CS1138 | -32d | 0d |
| CS1168 |  | Foundation Location Plans - IFC | 5d | 2026-02-06 | 2026-02-12 | CS1148 | -32d | 9d |
|  | MTO | **MTO's** |  | 2025-11-26 | 2026-08-05 |  |  |  |
| CS2268 |  | MTO's - Structural - 30% | 5d | 2025-11-26 | 2025-12-04 | PI1004 | 787.88d | 125d |
| CS2278 |  | MTO's - Structural - 60% | 5d | 2026-06-16 | 2026-06-22 | CS2268, PI1008 | 662.88d | 27d |
| CS2288 |  | MTO's - Structural - 90% | 5d | 2026-07-30 | 2026-08-05 | CS2278, PI1012 | 635.88d | 38d |
|  | PI | **Piping** |  | 2025-11-10 | 2026-09-08 |  |  |  |
|  | 3DM | **3D Model** |  | 2025-11-10 | 2026-07-27 |  |  |  |
| PI1002 |  | 3D Model - Review & Update | 10d | 2025-11-10 | 2025-11-21 | PM-1110 | -111d | 0d |
| PI1006 |  | 3D Model - Stage 2 - Development | 50d | 2026-04-01 | 2026-06-11 | PI1004, PR1426 FF+5d, PM-1100 FF+10d, PR1166 FF, PR1176 FF+5d | 597.88d | 0d |
| PI1010 |  | 3D Model - Stage 3 - Development | 30d | 2026-06-16 | 2026-07-27 | PI1008, PR1176 FF, PM-1090 FF+10d | 597.88d | 0d |

| ID | WBS | Activity | Type | Duration | Start | Finish | Predecessors | Total float | Free float |
| --- | --- | --- | --- | --- | --- | --- | --- | --- | --- |
|  | ISBL | **ISBL** |  |  |  |  |  |  |  |
|  | OSBL | **OSBL** |  |  |  |  |  |  |  |
|  | PLL | **Piping Line List** |  |  | 2026-02-06 | 2026-06-18 |  |  |  |
| PI0100 |  | Piping Line List - IFA - Piping |  | 20d | 2026-02-06 | 2026-03-05 | PR1146, PR1226, PR1066, PR1106 | 213d | 0d |
| PI0102 |  | Piping Line List - Client Review |  | 5d | 2026-03-06 | 2026-03-12 | PI0100 | 213d | 48d |
| PI0104 |  | Piping Line List - IFD |  | 10d | 2026-05-21 | 2026-06-04 | PI0102, PR1176 FF | 165d | 0d |
| PI0106 |  | Piping Line List - IFC |  | 10d | 2026-06-05 | 2026-06-18 | PI0104 | 659.88d | 57d |
|  | PS | **Piping Specs** |  |  |  |  |  |  |  |
|  | SPLL | **SP Line List** |  |  |  |  |  |  |  |
|  | SPLL1 | **SP Item List** |  |  | 2026-02-13 | 2026-06-18 |  |  |  |
| PI1302 |  | SP Item List - IFA |  | 20d | 2026-02-13 | 2026-03-12 | PR1156, PR1086, PR1014, PR1066, PR1106 | 712.88d | 0d |
| PI1312 |  | SP Item List - Client Review |  | 5d | 2026-03-13 | 2026-03-19 | PI1302 | 712.88d | 53d |
| PI1332 |  | SP Item List - IFC |  | 10d | 2026-06-05 | 2026-06-18 | PI1312, PR1176 | 659.88d | 57d |
|  | PP | **Plot Plan** |  |  | 2025-11-10 | 2026-06-25 |  |  |  |
| PI2338 |  | Received Plot Plan - IFD | milestone | 0d | 2025-11-10 | 2025-11-10 | PM-1110 FF | -25d | 7d |
| PI1062 |  | Plot Plan - Update |  | 20d | 2025-11-19 | 2025-12-18 | PR1066 FF, PR1266 FF, PI1004 FF+5d, PI2338 | -32d | 0d |
| PI1072 |  | Plot Plan - Client Review |  | 5d | 2025-12-19 | 2026-01-08 | PI1062 | 707.88d | 108d |
| PI1082 |  | Plot Plan - IFC |  | 10d | 2026-06-12 | 2026-06-25 | PI1072, PI1062 FF, PI1006 | 599.88d | 0d |
|  | ELD | **Equipment Location Drawings** |  |  | 2025-12-19 | 2026-07-09 |  |  |  |
| PI1102 |  | Equipment Location Drawings - IFA |  | 20d | 2025-12-19 | 2026-01-29 | PR1066, PI1062 | -32d | 0d |
| PI1112 |  | Equipment Location Drawings - Client Review |  | 5d | 2026-01-30 | 2026-02-05 | PI1102 | 752.88d | 98d |
| PI1132 |  | Equipment Location Drawings - IFD |  | 10d | 2026-06-26 | 2026-07-09 | PI1112, PI1082 | 654.88d | 57d |
|  | ISO | **Isometrics** |  |  | 2026-06-16 | 2026-09-08 |  |  |  |
| PI1142 |  | Isometrics - IFC |  | 60d | 2026-06-16 | 2026-09-08 | PI1012 FF+20d, PI1332 FF, PI1212, PI2328 FF+10d, PI1222 FF+20d, PI1008 | 602.88d | 0d |

| ID | WBS | Activity | Duration | Start | Finish | Predecessors | Total float | Free float |
| --- | --- | --- | --- | --- | --- | --- | --- | --- |
|  | ISBL | **ISBL** |  |  |  |  |  |  |
|  | OSBL | **OSBL** |  |  |  |  |  |  |
|  | MTO1 | **MTO's** |  | 2025-11-26 | 2026-08-05 |  |  |  |
| PI2298 |  | MTO's - Piping - 30% | 5d | 2025-11-26 | 2025-12-04 | PI1004 | 787.88d | 125d |
| PI2308 |  | MTO's - Piping - 60% | 5d | 2026-06-16 | 2026-06-22 | PI2298, PI1008 | 662.88d | 27d |
| PI2318 |  | MTO's - Piping - 90% | 5d | 2026-07-30 | 2026-08-05 | PI2308, PI1012 | 635.88d | 38d |
|  | MTO | **Piping MTOs** |  |  |  |  |  |  |
|  | PE | **Piping Engineering** |  | 2025-12-10 | 2026-08-10 |  |  |  |
|  | Comp | **Vapor Distribution Header** |  | 2025-12-10 | 2026-04-22 |  |  |  |
| ME1001 |  | Develop MRQ Package - Vapor Distribution Header | 15d | 2025-12-10 | 2026-01-13 | PR2815 FF+5d | 148d | 0d |
| ME1007 |  | Technical Bid Evaluations - Vapor Distribution Header | 10d | 2026-02-25 | 2026-03-10 | PRO-12730 SS | 739.88d | 142d |
| ME1011 |  | Receive Vendor Data - Vapor Distribution Header | 20d | 2026-03-11 | 2026-04-08 | PRO-12740 | 190d | 0d |
| ME1013 |  | Review Vendor Data - Vapor Distribution Header | 10d | 2026-04-09 | 2026-04-22 | ME1011 | 709.88d | 112d |
|  | PS | **Piping Specifications** |  | 2026-02-06 | 2026-04-17 |  |  |  |
| PI1182 |  | Piping Specifications - IFA - Material Specs | 25d | 2026-02-06 | 2026-03-12 | PR1146 FF, PR1226 FF, PR1106, PR1066 FF, PR1106 FF | 642.88d | 0d |
| PI1192 |  | Piping Specifications - Client Review | 5d | 2026-03-13 | 2026-03-19 | PI1182 | 642.88d | 0d |
| PI1202 |  | Piping Specifications - IFD | 10d | 2026-03-20 | 2026-04-02 | PI1192 | 642.88d | 0d |
| PI1212 |  | Piping Specifications - IFC | 10d | 2026-04-06 | 2026-04-17 | PI1202 | 642.88d | 40d |
|  | STRESS | **Pipe Stress** |  | 2026-06-12 | 2026-08-10 |  |  |  |
| PI1222 |  | Preliminary Pipe Stress | 20d | 2026-06-12 | 2026-07-09 | PI1006 | 624.88d | 0d |
| PI2328 |  | Final Pipe Stress | 10d | 2026-07-28 | 2026-08-10 | PI1010 | 612.88d | 10d |
|  | EL | **Electrical** |  | 2025-09-15 | 2026-09-25 |  |  |  |
|  | BOD | **Basis of Design** |  | 2026-01-28 | 2026-03-17 |  |  |  |
| EL2298 |  | Basis of Design - Electrical - IFA | 20d | 2026-01-28 | 2026-02-24 | PR1002 | 734.88d | 0d |
| EL2308 |  | Basis of Design - Electrical - Client Review | 5d | 2026-02-25 | 2026-03-03 | EL2298 | 734.88d | 0d |
| EL2318 |  | Basis of Design - Electrical - IFI | 10d | 2026-03-04 | 2026-03-17 | EL2308 | 734.88d | 137d |

| ID | WBS | Activity | Duration | Start | Finish | Predecessors | Total float | Free float |
| --- | --- | --- | --- | --- | --- | --- | --- | --- |
|  | LOAD | **Electrical Load List** |  | 2025-12-12 | 2026-06-25 |  |  |  |
| EL1002 |  | Electrical Load List - IFA | 20d | 2025-12-12 | 2026-01-22 | PR1266 FF+7d, ME1000 FF+5d | 43d | 0d |
| EL1004 |  | Electrical Load List - Client Review | 5d | 2026-01-23 | 2026-01-29 | EL1002 | 98d | 0d |
| EL1008 |  | Electrical Load List - IFD | 20d | 2026-01-30 | 2026-02-26 | EL1004, ME1004 FF+5d | 98d | 0d |
| EL4395 |  | Electrical Load List - IFC | 20d | 2026-05-29 | 2026-06-25 | EL1008, ME1006 FF+5d | 664.88d | 67d |
|  | LOAD1 | **Power Studies** |  | 2026-01-09 | 2026-02-26 |  |  |  |
| EL4405 |  | Power Studies - IFA | 20d | 2026-01-09 | 2026-02-05 | ME1004 FF, PR3265 FF, EL4485 | 43d | 0d |
| EL4415 |  | Power Studies - Client Review | 5d | 2026-02-06 | 2026-02-12 | EL4405 | 747.88d | 0d |
| EL4425 |  | Power Studies - IFD | 10d | 2026-02-13 | 2026-02-26 | EL4415 | 747.88d | 150d |
|  | SLD | **Single Line Diagram** |  | 2026-01-23 | 2026-03-12 |  |  |  |
| EL3265 |  | Single Line Diagram - IFA | 20d | 2026-01-23 | 2026-02-19 | EL1002, EL4405 FF+5d | 113d | 0d |
| EL3275 |  | Single Line Diagram - Client Review | 5d | 2026-02-20 | 2026-02-26 | EL3265 | 737.88d | 0d |
| EL3295 |  | Single Line Diagram - IFC | 10d | 2026-02-27 | 2026-03-12 | EL3275 | 737.88d | 140d |
|  | ACP | **Area Classification Plans** |  | 2026-06-26 | 2026-08-13 |  |  |  |
| EL3305 |  | Area Classification Plan - IFA | 20d | 2026-06-26 | 2026-07-23 | PI1082, PR1046 | 599.88d | 0d |
| EL3315 |  | Area Classification Plan - Client Review | 5d | 2026-07-24 | 2026-07-30 | EL3305 | 629.88d | 0d |
| EL3335 |  | Area Classification Plan - IFC | 10d | 2026-07-31 | 2026-08-13 | EL3315 | 629.88d | 32d |
|  | GP | **Grounding Plans** |  | 2026-07-17 | 2026-09-03 |  |  |  |
| EL3345 |  | Grounding Plans - IFA | 20d | 2026-07-17 | 2026-08-13 | CS1018, EL3305 FF+15d, PI1004 | 599.88d | 0d |
| EL3355 |  | Grounding Plans - Client Review | 5d | 2026-08-14 | 2026-08-20 | EL3345 | 614.88d | 0d |
| EL3375 |  | Grounding Plans - IFC | 10d | 2026-08-21 | 2026-09-03 | EL3355 | 614.88d | 17d |
|  | ECS | **Electrical Cable Schedule** |  | 2026-08-14 | 2026-09-25 |  |  |  |
| EL3385 |  | Electrical Cable Schedule - IFA | 20d | 2026-08-14 | 2026-09-11 | EL3585 FF, EL3425 FF+5d | 599.88d | 0d |
| EL3395 |  | Electrical Cable Schedule - Client Review | 5d | 2026-09-14 | 2026-09-18 | EL3385 | 599.88d | 0d |
| EL3415 |  | Electrical Cable Schedule - IFC | 5d | 2026-09-21 | 2026-09-25 | EL3395 | 599.88d | 2d |

| ID | WBS | Activity | Duration | Start | Finish | Predecessors | Total float | Free float |
| --- | --- | --- | --- | --- | --- | --- | --- | --- |
|  | MS | **Motor Schematics** |  | 2026-08-07 | 2026-09-18 |  |  |  |
| EL3425 |  | Motor Schematics - IFA | 20d | 2026-08-07 | 2026-09-03 | EL1002, PM-1100, EL3505 FF+5d | 599.88d | 0d |
| EL3435 |  | Motor Schematics - Client Review | 5d | 2026-09-04 | 2026-09-11 | EL3425 | 604.88d | 0d |
| EL3455 |  | Motor Schematics - IFC | 5d | 2026-09-14 | 2026-09-18 | EL3435 | 604.88d | 7d |
|  | CTP | **Cable Tray Plans** |  | 2026-07-24 | 2026-09-11 |  |  |  |
| EL3465 |  | Cable Tray Plans - IFA | 20d | 2026-07-24 | 2026-08-20 | EL3345 FF+5d, PI1008 FF+10d | 599.88d | 0d |
| EL3475 |  | Cable Tray Plans - Client Review | 5d | 2026-08-21 | 2026-08-27 | EL3465 | 609.88d | 0d |
| EL3495 |  | Cable Tray Plans - IFC | 10d | 2026-08-28 | 2026-09-11 | EL3475 | 609.88d | 12d |
|  | PP | **Power Plans** |  | 2026-07-31 | 2026-09-18 |  |  |  |
| EL3505 |  | Power Plans - IFA | 20d | 2026-07-31 | 2026-08-27 | EL3465 FF+5d, PI1006 FF | 599.88d | 0d |
| EL3515 |  | Power Plans - Client Review | 5d | 2026-08-28 | 2026-09-03 | EL3505 | 604.88d | 0d |
| EL3535 |  | Power Plans - IFC | 10d | 2026-09-04 | 2026-09-18 | EL3515 | 604.88d | 7d |
|  | LP | **Lighting Plans** |  | 2026-08-07 | 2026-09-18 |  |  |  |
| EL3545 |  | Lighting Plans - IFA | 20d | 2026-08-07 | 2026-09-03 | EL3505 FF+5d, PI1006 FF+10d | 599.88d | 0d |
| EL3555 |  | Lighting Plans - Client Review | 5d | 2026-09-04 | 2026-09-11 | EL3545 | 604.88d | 0d |
| EL3575 |  | Lighting Plans - IFC | 5d | 2026-09-14 | 2026-09-18 | EL3555 | 604.88d | 7d |
|  | PBS | **Panel Board Schedule** |  | 2026-08-14 | 2026-09-25 |  |  |  |
| EL3585 |  | Panel Board Schedule - IFA | 20d | 2026-08-14 | 2026-09-11 | EL3545 FF+5d, PI1010 FF | 599.88d | 0d |
| EL3595 |  | Panel Board Schedule - Client Review | 5d | 2026-09-14 | 2026-09-18 | EL3585 | 599.88d | 0d |
| EL3615 |  | Panel Board Schedule - IFC | 5d | 2026-09-21 | 2026-09-25 | EL3595 | 599.88d | 2d |
|  | PBS1 | **Cathodic Protection** |  | 2026-06-16 | 2026-08-03 |  |  |  |
| EL4435 |  | Cathodic Protection - IFA | 20d | 2026-06-16 | 2026-07-13 | PI1008 | 637.88d | 0d |
| EL4445 |  | Cathodic Protection - Client Review | 5d | 2026-07-14 | 2026-07-20 | EL4435 | 637.88d | 0d |
| EL4455 |  | Cathodic Protection - IFC | 10d | 2026-07-21 | 2026-08-03 | EL4445 | 637.88d | 40d |

| ID | WBS | Activity | Duration | Start | Finish | Predecessors | Complete | Planned start | Planned finish | Total float | Free float |
| --- | --- | --- | --- | --- | --- | --- | --- | --- | --- | --- | --- |
|  | MVS | **Medium Volt Switchgear** |  |  |  |  |  |  |  |  |  |
|  | LVS | **Low Volt Switchgear** |  |  |  |  |  |  |  |  |  |
|  | TRANS | **HV Sub (Subcontract)** |  | 2026-02-06 | 2026-02-26 |  |  |  |  |  |  |
| EL4145 |  | Develop MRQ Package - HV Sub (Subcontract) | 15d | 2026-02-06 | 2026-02-26 | EL1002, EL3265 FF+5d, EL4405 |  |  |  | 113d | 0d |
|  | LVMCC | **Low Volt MCC** |  |  |  |  |  |  |  |  |  |
|  | MVLIS | **Medium Volt Load Interrupter Switchgear** |  |  |  |  |  |  |  |  |  |
|  | PDC | **Generator Step-up Transformer** |  |  |  |  |  |  |  |  |  |
|  | EG | **ISO Bus** |  | 2026-02-06 | 2026-02-26 |  |  |  |  |  |  |
| EL3985 |  | Develop MRQ Package - ISO Bus | 15d | 2026-02-06 | 2026-02-26 | PI1004, EL4405 |  |  |  | 113d | 0d |
|  | EG1 | **Generator Breaker (ISO Brk)** |  | 2026-02-06 | 2026-02-26 |  |  |  |  |  |  |
| EL4155 |  | Develop MRQ Package - Generator Breaker (ISO Brk) | 15d | 2026-02-06 | 2026-02-26 | PI1004, EL4405 |  |  |  | 113d | 0d |
|  | EG2 | **Unit Auxiliary Transformer** |  |  |  |  |  |  |  |  |  |
|  | EG3 | **Cable Bus** |  | 2026-02-27 | 2026-03-19 |  |  |  |  |  |  |
| EL4235 |  | Develop MRQ Package - Cable Bus | 15d | 2026-02-27 | 2026-03-19 | PI1004, EL1008, EL4405 |  |  |  | 98d | 0d |
|  | EG4 | **Auxiliary Transformers (SUS)** |  |  |  |  |  |  |  |  |  |
|  | EG5 | **PDC Building Package** |  | 2026-02-06 | 2026-02-26 |  |  |  |  |  |  |
| EL4315 |  | Develop MRQ Package - PDC Building Package | 15d | 2026-02-06 | 2026-02-26 | PI1004, EL4405 |  |  |  | 126d | 0d |
|  | EG41 | **Emergency Diesel Generator** |  | 2026-02-06 | 2026-02-26 |  |  |  |  |  |  |
| EL4355 |  | Develop MRQ Package - Emergency Diesel Generator | 15d | 2026-02-06 | 2026-02-26 | PI1004, EL4405 |  |  |  | 43d | 0d |
|  | EG411 | **Station Service Transformers** |  | 2025-09-15 | 2025-09-15 |  |  |  |  |  |  |
| EL4465 |  | Develop MRQ Package - Station Service Transformers | 15d | 2025-09-15 A | 2025-09-15 A | PI1004 | 100% | 2025-11-26 | 2025-12-18 |  |  |
|  | MTO1 | **MTO's** |  | 2025-11-26 | 2026-08-05 |  |  |  |  |  |  |
| EL2328 |  | MTO's - Electrical - 30% | 5d | 2025-11-26 | 2025-12-04 | PI1004 |  |  |  | 787.88d | 125d |
| EL2338 |  | MTO's - Electrical - 60% | 5d | 2026-06-16 | 2026-06-22 | EL2328, PI1008 |  |  |  | 662.88d | 27d |
| EL2348 |  | MTO's - Electrical - 90% | 5d | 2026-07-30 | 2026-08-05 | EL2338, PI1012 |  |  |  | 635.88d | 38d |

| ID | WBS | Activity | Duration | Start | Finish | Predecessors | Total float | Free float |
| --- | --- | --- | --- | --- | --- | --- | --- | --- |
|  | IN | **Instrumentation** |  | 2026-01-14 | 2026-09-29 |  |  |  |
|  | BOD | **Basis of Design** |  | 2026-01-14 | 2026-03-03 |  |  |  |
| IN47351 |  | Basis of Design - Instruments - IFA | 20d | 2026-01-14 | 2026-02-10 | PR1002 FF+10d | 744.88d | 0d |
| IN47452 |  | Basis of Design - Instruments - Client Review | 5d | 2026-02-11 | 2026-02-17 | IN47351 | 744.88d | 0d |
| IN47553 |  | Basis of Design - Instruments - IFB | 10d | 2026-02-18 | 2026-03-03 | IN47452 | 744.88d | 147d |
|  | SPEC | **Instrument Specifications** |  |  |  |  |  |  |
|  | II | **Instrument Index** |  | 2026-06-16 | 2026-08-31 |  |  |  |
| IN1018 |  | Instrument Index - IFA | 40d | 2026-06-16 | 2026-08-10 | PR1166 FF+10d, PR1206, PR1426 FS+10d, PR1156 FF, PR1086 FF, PR1014 FF, PR1086, PR1014, PR1066, PR1066 FF, PR1106, PR1106 FF, PR1176, PI1010 FF+10d | 617.88d | 0d |
| IN47693 |  | Instrument Index - Client Review | 5d | 2026-08-11 | 2026-08-17 | IN1018 | 617.88d | 0d |
| IN1048 |  | Instrument Index - IFC | 10d | 2026-08-18 | 2026-08-31 | IN47693 | 617.88d | 0d |
|  | IID | **Instrument Installation Details** |  | 2026-07-28 | 2026-09-15 |  |  |  |
| IN1058 |  | Instrument Installation Details - IFA | 20d | 2026-07-28 | 2026-08-24 | PI1010 | 607.88d | 0d |
| IN1068 |  | Instrument Installation Details - Client Review | 5d | 2026-08-25 | 2026-08-31 | IN1058 | 607.88d | 0d |
| IN1088 |  | Instrument Installation Details - IFC | 10d | 2026-09-01 | 2026-09-15 | IN1068 | 607.88d | 10d |
|  | IRP | **Instrument Requisition Packages** |  | 2026-02-13 | 2026-09-25 |  |  |  |
|  | IL | **In-Lines** |  | 2026-02-13 | 2026-09-22 |  |  |  |
| IN4075 |  | Develop In-Line Datasheets - IFA | 80d | 2026-02-13 | 2026-06-08 | PR1386, PR1156, PR1086, PR1014, PR1066, PR1106 | 602.88d | 0d |
| IN4095 |  | In-Line Instruments - Client Review | 5d | 2026-06-09 | 2026-06-15 | IN4075, IN4075 FF | 602.88d | 0d |
| IN4105 |  | In-Line Instruments - Implement IFA Comments | 5d | 2026-06-16 | 2026-06-22 | IN4095 | 602.88d | 0d |
| IN4085 |  | In-Line Instruments - Vendor Bid Time | 20d | 2026-06-23 | 2026-07-20 | IN4105 | 602.88d | 0d |
| IN47593 |  | In-Line Instruments - TBE | 20d | 2026-07-21 | 2026-08-17 | IN4085 | 602.88d | 0d |
| IN47603 |  | In-Line Instruments - Update & Issue PO | 10d | 2026-08-18 | 2026-08-31 | IN47593 | 602.88d | 0d |
| IN47613 |  | In-Line Instruments - VDR Review | 15d | 2026-09-01 | 2026-09-22 | IN47603 | 602.88d | 5d |
|  | OL | **Off-Lines** |  | 2026-03-11 | 2026-09-25 |  |  |  |
| IN47623 |  | Develop Off-Line Datasheets - IFA | 70d | 2026-03-11 | 2026-06-18 | PR3995 | 599.88d | 0d |
| IN47633 |  | Off-Line Instruments - Client Review | 5d | 2026-06-19 | 2026-06-25 | IN47623, IN47623 FF | 599.88d | 0d |
| IN47643 |  | Off-Line Instruments - Implement IFA Comments | 5d | 2026-06-26 | 2026-07-02 | IN47633 | 599.88d | 0d |
| IN47653 |  | Off-Line Instruments - Vendor Bid Time | 20d | 2026-07-03 | 2026-07-30 | IN47643 | 599.88d | 0d |
| IN47663 |  | Off-Line Instruments - TBE | 20d | 2026-07-31 | 2026-08-27 | IN47653 | 599.88d | 0d |
| IN47673 |  | Off-Line Instruments - Update & Issue PO | 10d | 2026-08-28 | 2026-09-11 | IN47663 | 599.88d | 0d |
| IN47683 |  | Off-Line Instruments - VDR Review | 10d | 2026-09-14 | 2026-09-25 | IN47673 | 599.88d | 2d |

| ID | WBS | Activity | Duration | Start | Finish | Predecessors | Total float | Free float |
| --- | --- | --- | --- | --- | --- | --- | --- | --- |
|  | ILP | **Instrument Design Package** |  | 2026-04-20 | 2026-09-29 |  |  |  |
| IN1138 |  | Instrument Design Package - IFA (Location Plan, Cable Schedule, Loops, Wiring Diagrams, I/O) | 90d | 2026-04-20 | 2026-08-24 | PI1062, PI1010 FF+20d | 597.88d | 0d |
| IN1148 |  | Instrument Design Package - Client Review | 15d | 2026-08-25 | 2026-09-15 | IN1138 | 597.88d | 0d |
| IN1168 |  | Instrument Design Package - IFC | 10d | 2026-09-16 | 2026-09-29 | IN1148 | 597.88d | 0d |
|  | ICS | **Instrument Cable Schedule** |  |  |  |  |  |  |
|  | WD | **PLC / JB Wiring Diagrams** |  |  |  |  |  |  |
|  | FPD | **Fiber Plan Drawings** |  |  |  |  |  |  |
|  | FOW | **Fiber Optic Wiring Diagrams** |  |  |  |  |  |  |
|  | MTO1 | **MTO's** |  |  |  |  |  |  |
|  | LOOPS | **Loop Sheets** |  |  |  |  |  |  |
|  | CA | **Controls & Automation** |  | 2026-06-05 | 2026-09-25 |  |  |  |
|  | DCN | **DCS Control Narrative** |  | 2026-06-19 | 2026-08-06 |  |  |  |
| CA1002 |  | DCS Control Narrative - IFA | 20d | 2026-06-19 | 2026-07-16 | PR1346, PR1366 | 599.88d | 0d |
| CA1004 |  | DCS Control Narrative - Client Review | 5d | 2026-07-17 | 2026-07-23 | CA1002 | 599.88d | 0d |
| CA1008 |  | DCS Control Narrative - IFC | 10d | 2026-07-24 | 2026-08-06 | CA1004 | 599.88d | 0d |
|  | SA | **DCS System Architechture** |  | 2026-08-07 | 2026-09-25 |  |  |  |
| CA1018 |  | DCS System Architechture - IFA | 20d | 2026-08-07 | 2026-09-03 | PR1176, CA1008, PR1176 FF | 599.88d | 0d |
| CA1028 |  | DCS System Architechture - Client Review | 5d | 2026-09-04 | 2026-09-11 | CA1018 | 599.88d | 0d |
| CA1048 |  | DCS System Architechture - IFC | 10d | 2026-09-14 | 2026-09-25 | CA1028 | 599.88d | 0d |
|  | NA | **DCS Network Architechture** |  | 2026-06-05 | 2026-09-25 |  |  |  |
| CA1058 |  | DCS Network Architechture - IFA | 20d | 2026-06-05 | 2026-07-02 | PR1176, PR1176 FF | 624.88d | 0d |
| CA1068 |  | DCS Network Architechture - Client Review | 5d | 2026-07-03 | 2026-07-09 | CA1058 | 644.88d | 45d |
| CA1088 |  | DCS Network Architechture - IFC | 10d | 2026-09-14 | 2026-09-25 | CA1048 FF, CA1068 | 599.88d | 0d |
|  | PS | **DCS Panel Sketches** |  | 2026-07-03 | 2026-09-25 |  |  |  |
| CA1098 |  | DCS Panel Sketches - IFA | 20d | 2026-07-03 | 2026-07-30 | CA1058 | 624.88d | 0d |
| CA1108 |  | DCS Panel Sketches - Client Review | 5d | 2026-07-31 | 2026-08-06 | CA1098 | 624.88d | 25d |
| CA1128 |  | DCS Panel Sketches - IFC | 10d | 2026-09-14 | 2026-09-25 | CA1088 FF, CA1108 | 599.88d | 2d |

| ID | WBS | Activity | Duration | Start | Finish | Predecessors | Complete | Remaining | Planned start | Planned finish | Total float | Free float | Expected finish |
| --- | --- | --- | --- | --- | --- | --- | --- | --- | --- | --- | --- | --- | --- |
|  | CEM | **DCS Cause & Effect Matrix** |  | 2026-07-14 | 2026-08-31 |  |  |  |  |  |  |  |  |
| CA1138 |  | DCS Cause & Effect Matrix - IFA | 20d | 2026-07-14 | 2026-08-10 | IN1018 FF |  |  |  |  | 617.88d | 0d |  |
| CA1148 |  | DCS Cause & Effect Matrix - Client Review | 5d | 2026-08-11 | 2026-08-17 | CA1138 |  |  |  |  | 617.88d | 0d |  |
| CA1168 |  | DCS Cause & Effect Matrix - IFC | 10d | 2026-08-18 | 2026-08-31 | CA1148, IN1048 FF |  |  |  |  | 617.88d | 20d |  |
|  | 3 | **Procurement** |  | 2025-04-18 | 2027-09-13 |  |  |  |  |  |  |  |  |
|  | 1 | **Generator Step-Up (GSU) Transformers** |  | 2025-07-15 | 2027-05-03 |  |  |  |  |  |  |  |  |
| PRO-1010 |  | Generator Step-Up (GSU) Transformers - RFP Package | 5d | 2025-07-15 A | 2025-07-15 A | PM-1110 | 100% |  | 2025-10-06 | 2025-10-10 |  |  |  |
| PRO-1020 |  | Generator Step-Up (GSU) Transformers - Issue RFP | 5d | 2025-07-15 A | 2025-07-15 A | PRO-1010 | 100% |  | 2025-10-13 | 2025-10-17 |  |  |  |
| PRO-1030 |  | Generator Step-Up (GSU) Transformers - Proposals Due | 20d | 2025-07-15 A | 2025-07-15 A | PRO-1020 | 100% |  | 2025-10-20 | 2025-11-14 |  |  |  |
| PRO-1040 |  | Generator Step-Up (GSU) Transformers - Commercial Evaluation | 5d | 2025-07-15 A | 2025-07-15 A | PRO-1030 | 100% |  | 2025-11-17 | 2025-11-21 |  |  |  |
| PRO-1050 |  | Generator Step-Up (GSU) Transformers - Technical Evaluation | 5d | 2025-07-15 A | 2025-07-15 A | PRO-1040 SS | 100% |  | 2025-11-17 | 2025-11-21 |  |  |  |
| PRO-1060 |  | Generator Step-Up (GSU) Transformers - Award | 5d | 2025-07-15 A | 2025-07-15 A | PRO-1050 | 100% |  | 2025-11-24 | 2025-12-02 |  |  |  |
| PRO-1090 |  | Generator Step-Up (GSU) Transformers - Lead Time | 100d | 2025-07-15 A | 2027-04-30 | PRO-1060 |  | 365d | 2026-01-02 | 2026-05-22 | -10d | 0d | 2027-04-30 |
| PRO-1070 |  | Generator Step-Up (GSU) Transformers - Approved Vendor Drawings | 20d | 2025-11-10 | 2025-12-09 | PRO-1060 |  |  |  |  | 275d | 0d |  |
| PRO-1080 |  | Generator Step-Up (GSU) Transformers - Fabrication Vendor Drawings | 60d | 2025-12-10 | 2026-03-17 | PRO-1070 |  |  |  |  | 679.88d | 80d |  |
| PRO-1100 |  | Generator Step-Up (GSU) Transformers - Receive at Site | 0d | 2027-05-03 | 2027-05-03 | PRO-1090 |  |  |  |  | -10d | 0d | 2027-04-30 |
|  | 10 | **Unit Auxiliary Transformers** |  | 2025-09-19 | 2027-09-13 |  |  |  |  |  |  |  |  |
| PRO-1910 |  | Unit Auxiliary Transformers - RFP Package | 5d | 2025-09-19 A | 2025-09-19 A | PM-1110 | 100% |  | 2025-10-06 | 2025-10-10 |  |  |  |
| PRO-1920 |  | Unit Auxiliary Transformers - Issue RFP | 5d | 2025-09-19 A | 2025-09-19 A | PRO-1910 | 100% |  | 2025-10-13 | 2025-10-17 |  |  |  |
| PRO-1930 |  | Unit Auxiliary Transformers - Proposals Due | 20d | 2025-09-19 A | 2025-09-19 A | PRO-1920 | 100% |  | 2025-10-20 | 2025-11-14 |  |  |  |
| PRO-1940 |  | Unit Auxiliary Transformers - Commercial Evaluation | 5d | 2025-09-19 A | 2025-09-19 A | PRO-1930 | 100% |  | 2025-11-17 | 2025-11-21 |  |  |  |
| PRO-1950 |  | Unit Auxiliary Transformers - Technical Evaluation | 5d | 2025-09-19 A | 2025-09-19 A | PRO-1940 SS | 100% |  | 2025-11-17 | 2025-11-21 |  |  |  |
| PRO-1960 |  | Unit Auxiliary Transformers - Award | 5d | 2025-09-19 A | 2025-09-19 A | PRO-1950 | 100% |  | 2025-11-10 | 2025-11-14 |  |  |  |
| PRO-1990 |  | Unit Auxiliary Transformers - Lead Time | 500d | 2025-09-19 A | 2027-09-03 | PRO-1960 | 9% | 454d | 2025-11-17 | 2027-11-16 | -79d | 0d | 2027-09-03 |
| PRO-1970 |  | Unit Auxiliary Transformers - Approved Vendor Drawings | 20d | 2025-11-10 | 2025-12-09 | PRO-1960 |  |  |  |  | 275d | 0d |  |
| PRO-1980 |  | Unit Auxiliary Transformers - Fabrication Vendor Drawings | 110d | 2025-12-10 | 2026-05-28 | PRO-1970 |  |  |  |  | 629.88d | 30d |  |
| PRO-2000 |  | Unit Auxiliary Transformers - Receive at Site | 5d | 2027-09-07 | 2027-09-13 | PRO-1990 |  |  |  |  | -79d | 0d |  |

| ID | WBS | Activity | Duration | Start | Finish | Predecessors | Complete | Remaining | Planned start | Planned finish | Total float | Free float | Expected finish |
| --- | --- | --- | --- | --- | --- | --- | --- | --- | --- | --- | --- | --- | --- |
|  | 18 | **ACC System** |  | 2025-06-27 | 2026-04-30 |  |  |  |  |  |  |  |  |
| PRO-2710 |  | ACC System - RFP Package | 5d | 2025-06-27 A | 2025-06-27 A | PM-1110 | 100% |  | 2025-10-06 | 2025-10-10 |  |  |  |
| PRO-2720 |  | ACC System - Issue RFP | 5d | 2025-06-27 A | 2025-06-27 A | PRO-2710 | 100% |  | 2025-10-13 | 2025-10-17 |  |  |  |
| PRO-2730 |  | ACC System - Proposals Due | 20d | 2025-06-27 A | 2025-06-27 A | PRO-2720 | 100% |  | 2025-10-20 | 2025-11-14 |  |  |  |
| PRO-2740 |  | ACC System - Commercial Evaluation | 5d | 2025-06-27 A | 2025-06-27 A | PRO-2730 | 100% |  | 2025-11-10 | 2025-11-14 |  |  |  |
| PRO-2750 |  | ACC System - Technical Evaluation | 5d | 2025-06-27 A | 2025-06-27 A | PRO-2740 SS | 100% |  | 2025-11-10 | 2025-11-14 |  |  |  |
| PRO-2760 |  | ACC System - Award | 5d | 2025-06-27 A | 2025-06-27 A | PRO-2750 | 100% |  | 2025-11-17 | 2025-11-21 |  |  |  |
| PRO-2790 |  | ACC System - Lead Time (Last Cooler Lead Time) | 300d | 2025-06-27 A | 2026-04-16 | PRO-2760 | 66% | 101d | 2025-11-24 | 2027-02-01 | -4d | 0d | 2026-04-16 |
| PRO-2770 |  | ACC System - Approved Vendor Drawings | 20d | 2025-11-10 | 2025-12-09 | PRO-2760 |  |  |  |  | 275d | 0d |  |
| PRO-2780 |  | ACC System - Fabrication Vendor Drawings | 60d | 2025-12-10 | 2026-03-17 | PRO-2770 |  |  |  |  | 679.88d | 80d |  |
| PRO-2800 |  | ACC System - Receive at Site (Last Cooler Delivery) | 10d | 2026-04-17 | 2026-04-30 | PRO-2790 |  |  |  |  | -4d | 46d |  |
|  | 66 | **Reactive Control Station Engineering** |  | 2025-04-18 | 2026-09-11 |  |  |  |  |  |  |  |  |
| PRO-7510 |  | Reactive Control Station Engineering - RFP Package | 5d | 2025-04-18 A | 2025-04-18 A | PM-1110 | 100% |  | 2025-10-06 | 2025-10-10 |  |  |  |
| PRO-7520 |  | Reactive Control Station Engineering - Issue RFP | 5d | 2025-04-18 A | 2025-04-18 A | PRO-7510 | 100% |  | 2025-10-13 | 2025-10-17 |  |  |  |
| PRO-7530 |  | Reactive Control Station Engineering - Proposals Due | 20d | 2025-04-18 A | 2025-04-18 A | PRO-7520 | 100% |  | 2025-10-20 | 2025-11-14 |  |  |  |
| PRO-7540 |  | Reactive Control Station Engineering - Commercial Evaluation | 5d | 2025-04-18 A | 2025-04-18 A | PRO-7530 | 100% |  | 2025-11-10 | 2025-11-14 |  |  |  |
| PRO-7550 |  | Reactive Control Station Engineering - Technical Evaluation | 5d | 2025-04-18 A | 2025-04-18 A | PRO-7540 SS | 100% |  | 2025-11-10 | 2025-11-14 |  |  |  |
| PRO-7560 |  | Reactive Control Station Engineering - Award | 5d | 2025-04-18 A | 2025-04-18 A | PRO-7550 | 100% |  | 2025-11-17 | 2025-11-21 |  |  |  |
| PRO-7570 |  | Reactive Control Station Engineering - Approved Vendor Drawings - ??? | 20d | 2025-11-10 | 2025-12-09 | PRO-7560 |  |  |  |  | 275d | 0d |  |
| PRO-7590 |  | Reactive Control Station Engineering - Lead Time - ??? | 200d | 2025-11-10 | 2026-09-03 | PRO-7560 |  |  |  |  | 220d | 0d |  |
| PRO-7580 |  | Reactive Control Station Engineering - Fabrication Vendor Drawings - ??? | 40d | 2025-12-10 | 2026-02-17 | PRO-7570 |  |  |  |  | 699.88d | 100d |  |
| PRO-7600 |  | Reactive Control Station Engineering - Receive at Site - ??? | 5d | 2026-09-04 | 2026-09-11 | PRO-7590 |  |  |  |  | 220d | 299d |  |
|  | 5 | **Geotechnical Exploration** |  | 2025-07-23 | 2025-12-16 |  |  |  |  |  |  |  |  |
| PRO-1410 |  | Geotechnical Exploration - RFP Package | 5d | 2025-07-23 A | 2025-07-23 A | PM-1110 | 100% |  | 2025-10-06 | 2025-10-10 |  |  |  |
| PRO-1420 |  | Geotechnical Exploration - Issue RFP | 5d | 2025-07-23 A | 2025-07-23 A | PRO-1410 | 100% |  | 2025-10-13 | 2025-10-17 |  |  |  |
| PRO-1430 |  | Geotechnical Exploration - Proposals Due | 20d | 2025-07-23 A | 2025-07-23 A | PRO-1420 | 100% |  | 2025-10-20 | 2025-11-14 |  |  |  |
| PRO-1440 |  | Geotechnical Exploration - Commercial Evaluation | 5d | 2025-10-01 A | 2025-10-01 A | PRO-1430 | 100% |  | 2025-10-06 | 2025-10-10 |  |  |  |
| PRO-1450 |  | Geotechnical Exploration - Technical Evaluation | 5d | 2025-10-01 A | 2025-10-01 A | PRO-1440 SS | 100% |  | 2025-10-06 | 2025-10-10 |  |  |  |
| PRO-1460 |  | Geotechnical Exploration - Award | 5d | 2025-10-01 A | 2025-10-01 A | PRO-1450 | 100% |  | 2025-10-13 | 2025-10-17 |  |  |  |
| PRO-1490 |  | Geotechnical Exploration - Lead Time | 20d | 2025-11-10 | 2025-12-09 | PRO-1460 |  |  |  |  | 400d | 0d |  |
| PRO-1500 |  | Geotechnical Exploration - Issue Report | 5d | 2025-12-10 | 2025-12-16 | PRO-1490 |  |  |  |  | 400d | 479d |  |

| ID | WBS | Activity | Type | Duration | Start | Finish | Predecessors | Complete | Planned start | Planned finish | Total float | Free float |
| --- | --- | --- | --- | --- | --- | --- | --- | --- | --- | --- | --- | --- |
|  | 11 | **Injection Pumps** |  |  | 2025-07-18 | 2026-12-30 |  |  |  |  |  |  |
| PRO-2110 |  | Injection Pumps - RFP Package |  | 5d | 2025-07-18 A | 2025-07-18 A | PM-1110 | 100% | 2025-10-06 | 2025-10-10 |  |  |
| PRO-2120 |  | Injection Pumps - Issue RFP |  | 5d | 2025-07-18 A | 2025-07-18 A | PRO-2110 | 100% | 2025-10-13 | 2025-10-17 |  |  |
| PRO-2130 |  | Injection Pumps - Proposals Due |  | 20d | 2025-07-18 A | 2025-07-18 A | PRO-2120 | 100% | 2025-10-20 | 2025-11-14 |  |  |
| PRO-2140 |  | Injection Pumps - Commercial Evaluation |  | 5d | 2025-07-18 A | 2025-07-18 A | PRO-2130 | 100% | 2025-11-17 | 2025-11-21 |  |  |
| PRO-2150 |  | Injection Pumps - Technical Evaluation |  | 5d | 2025-07-18 A | 2025-07-18 A | PRO-2140 SS | 100% | 2025-11-17 | 2025-11-21 |  |  |
| PRO-2160 |  | Injection Pumps - Award |  | 5d | 2025-11-10 | 2025-11-14 | PRO-2150 |  |  |  | 145d | 0d |
| PRO-2170 |  | Injection Pumps - Approved Vendor Drawings |  | 20d | 2025-11-17 | 2025-12-16 | PRO-2160 |  |  |  | 270d | 0d |
| PRO-2190 |  | Injection Pumps - Lead Time |  | 270d | 2025-11-17 | 2026-12-22 | PRO-2160 |  |  |  | 145d | 0d |
| PRO-2180 |  | Injection Pumps - Fabrication Vendor Drawings |  | 60d | 2025-12-17 | 2026-03-24 | PRO-2170 |  |  |  | 674.88d | 75d |
| PRO-2200 |  | Injection Pumps - Receive at Site |  | 5d | 2026-12-23 | 2026-12-30 | PRO-2190 |  |  |  | 145d | 224d |
|  | 19 | **PDC Building Package** |  |  | 2025-11-10 | 2026-07-27 |  |  |  |  |  |  |
| PRO-13390 |  | Received ABB Vendor Data | milestone | 0d | 2025-11-10 | 2025-11-10 | PM-1110 FF |  |  |  | 729.88d | 107d |
| PRO-2910 |  | PDC Building Package - RFP Package |  | 5d | 2026-02-27 | 2026-03-05 | EL4315 |  |  |  | 126d | 0d |
| PRO-2920 |  | PDC Building Package - Issue RFP |  | 5d | 2026-03-06 | 2026-03-12 | PRO-2910 |  |  |  | 126d | 0d |
| PRO-2930 |  | PDC Building Package - Proposals Due |  | 20d | 2026-03-13 | 2026-04-10 | PRO-2920 |  |  |  | 126d | 0d |
| PRO-2940 |  | PDC Building Package - Commercial Evaluation |  | 5d | 2026-04-13 | 2026-04-17 | PRO-2930 |  |  |  | 126d | 0d |
| PRO-2950 |  | PDC Building Package - Technical Evaluation |  | 5d | 2026-04-13 | 2026-04-17 | PRO-2940 SS |  |  |  | 126d | 0d |
| PRO-2960 |  | PDC Building Package - Award |  | 5d | 2026-04-20 | 2026-04-24 | PRO-2950 |  |  |  | 126d | 0d |
| PRO-2970 |  | PDC Building Package - Approved Vendor Drawings |  | 10d | 2026-04-27 | 2026-05-08 | PRO-2960, PRO-13390 |  |  |  | 622.88d | 0d |
| PRO-2990 |  | PDC Building Package - Lead Time |  | 60d | 2026-04-27 | 2026-07-20 | PRO-2960 |  |  |  | 126d | 0d |
| PRO-2980 |  | PDC Building Package - Fabrication Vendor Drawings |  | 20d | 2026-05-11 | 2026-06-08 | PRO-2970 |  |  |  | 622.88d | 23d |
| PRO-3000 |  | PDC Building Package - Receive at Site |  | 5d | 2026-07-21 | 2026-07-27 | PRO-2990 |  |  |  | 126d | 176d |
|  | 3 | **Expander Large Piping** |  |  | 2025-11-10 | 2026-05-20 |  |  |  |  |  |  |
| PRO-12610 |  | Expander Large Piping - RFP Package |  | 5d | 2025-11-10 | 2025-11-14 | PM-1110 |  |  |  | 597.88d | 0d |
| PRO-12620 |  | Expander Large Piping - Issue RFP |  | 5d | 2025-11-17 | 2025-11-21 | PRO-12610 |  |  |  | 597.88d | 0d |
| PRO-12630 |  | Expander Large Piping - Proposals Due |  | 20d | 2025-11-24 | 2026-01-06 | PRO-12620 |  |  |  | 597.88d | 0d |
| PRO-12640 |  | Expander Large Piping - Commercial Evaluation |  | 5d | 2026-01-07 | 2026-01-13 | PRO-12630 |  |  |  | 597.88d | 0d |
| PRO-12650 |  | Expander Large Piping - Technical Evaluation |  | 5d | 2026-01-07 | 2026-01-13 | PRO-12640 SS |  |  |  | 597.88d | 0d |
| PRO-12660 |  | Expander Large Piping - Award |  | 5d | 2026-01-14 | 2026-01-20 | PRO-12650 |  |  |  | 597.88d | 0d |
| PRO-12670 |  | Expander Large Piping - Lead Time |  | 80d | 2026-01-21 | 2026-05-13 | PRO-12660 |  |  |  | 597.88d | 0d |
| PRO-12680 |  | Expander Large Piping - Receive at Site |  | 5d | 2026-05-14 | 2026-05-20 | PRO-12670 |  |  |  | 597.88d | 232d |

| ID | WBS | Activity | Duration | Start | Finish | Predecessors | Complete | Remaining | Planned start | Planned finish | Total float | Free float | Expected finish |
| --- | --- | --- | --- | --- | --- | --- | --- | --- | --- | --- | --- | --- | --- |
|  | 67 | **General Service Pipe (>6")** |  | 2025-11-10 | 2026-05-20 |  |  |  |  |  |  |  |  |
| PRO-7710 |  | General Service Pipe (>6") - RFP Package | 5d | 2025-11-10 | 2025-11-14 | PM-1110 |  |  |  |  | 597.88d | 0d |  |
| PRO-7720 |  | General Service Pipe (>6") - Issue RFP | 5d | 2025-11-17 | 2025-11-21 | PRO-7710 |  |  |  |  | 597.88d | 0d |  |
| PRO-7730 |  | General Service Pipe (>6") - Proposals Due | 20d | 2025-11-24 | 2026-01-06 | PRO-7720 |  |  |  |  | 597.88d | 0d |  |
| PRO-7740 |  | General Service Pipe (>6") - Commercial Evaluation | 5d | 2026-01-07 | 2026-01-13 | PRO-7730 |  |  |  |  | 597.88d | 0d |  |
| PRO-7750 |  | General Service Pipe (>6") - Technical Evaluation | 5d | 2026-01-07 | 2026-01-13 | PRO-7740 SS |  |  |  |  | 597.88d | 0d |  |
| PRO-7760 |  | General Service Pipe (>6") - Award | 5d | 2026-01-14 | 2026-01-20 | PRO-7750 |  |  |  |  | 597.88d | 0d |  |
| PRO-7790 |  | General Service Pipe (>6") - Lead Time | 80d | 2026-01-21 | 2026-05-13 | PRO-7760 |  |  |  |  | 597.88d | 0d |  |
| PRO-7800 |  | General Service Pipe (>6") - Receive at Site | 5d | 2026-05-14 | 2026-05-20 | PRO-7790 |  |  |  |  | 597.88d | 260d |  |
|  | 12 | **Instruments** |  | 2025-11-10 | 2026-07-23 |  |  |  |  |  |  |  |  |
| PRO-2310 |  | Instruments - RFP Package | 5d | 2025-11-10 | 2025-11-14 | PM-1110 |  |  |  |  | 217d | 0d |  |
| PRO-2320 |  | Instruments - Issue RFP | 5d | 2025-11-17 | 2025-11-21 | PRO-2310 |  |  |  |  | 217d | 0d |  |
| PRO-2330 |  | Instruments - Proposals Due | 20d | 2025-11-24 | 2026-01-06 | PRO-2320 |  |  |  |  | 217d | 0d |  |
| PRO-2340 |  | Instruments - Commercial Evaluation | 5d | 2026-01-07 | 2026-01-13 | PRO-2330 |  |  |  |  | 217d | 0d |  |
| PRO-2350 |  | Instruments - Technical Evaluation | 5d | 2026-01-07 | 2026-01-13 | PRO-2340 SS |  |  |  |  | 217d | 0d |  |
| PRO-2360 |  | Instruments - Award | 5d | 2026-01-14 | 2026-01-20 | PRO-2350 |  |  |  |  | 217d | 0d |  |
| PRO-2370 |  | Instruments - Approved Vendor Drawings | 20d | 2026-01-21 | 2026-02-17 | PRO-2360 |  |  |  |  | 235d | 0d |  |
| PRO-2390 |  | Instruments - Lead Time | 125d | 2026-01-21 | 2026-07-16 | PRO-2360 |  |  |  |  | 217d | 0d |  |
| PRO-2380 |  | Instruments - Fabrication Vendor Drawings | 20d | 2026-02-18 | 2026-03-17 | PRO-2370 |  |  |  |  | 679.88d | 80d |  |
| PRO-2400 |  | Instruments - Receive at Site | 5d | 2026-07-17 | 2026-07-23 | PRO-2390 |  |  |  |  | 217d | 296d |  |
|  | 13 | **Recuperator Heat Exchangers** |  | 2025-09-12 | 2026-05-13 |  |  |  |  |  |  |  |  |
| PRO-2210 |  | Recuperator Heat Exchangers - RFP Package | 5d | 2025-09-12 A | 2025-09-12 A | PM-1110 | 100% |  | 2025-10-06 | 2025-10-10 |  |  |  |
| PRO-2220 |  | Recuperator Heat Exchangers - Issue RFP | 5d | 2025-09-12 A | 2025-09-12 A | PRO-2210 | 100% |  | 2025-10-13 | 2025-10-17 |  |  |  |
| PRO-2230 |  | Recuperator Heat Exchangers - Proposals Due | 20d | 2025-10-15 A | 2025-10-15 A | PRO-2220 | 100% |  | 2025-10-06 | 2025-10-31 |  |  |  |
| PRO-2240 |  | Recuperator Heat Exchangers - Commercial Evaluation | 5d | 2025-10-15 A | 2025-10-15 A | PRO-2230 | 100% |  | 2025-11-03 | 2025-11-07 |  |  |  |
| PRO-2250 |  | Recuperator Heat Exchangers - Technical Evaluation | 5d | 2025-10-15 A | 2025-10-15 A | PRO-2240 SS | 100% |  | 2025-11-03 | 2025-11-07 |  |  |  |
| PRO-2260 |  | Recuperator Heat Exchangers - Award | 5d | 2025-10-15 A | 2025-10-15 A | PRO-2250 | 100% |  | 2025-11-10 | 2025-11-14 |  |  |  |
| PRO-2270 |  | Recuperator Heat Exchangers - Approved Vendor Drawings | 20d | 2025-10-15 A | 2025-11-10 | PRO-2260 | 100% | 0d | 2025-11-17 | 2025-12-16 | 295d | 0d | 2025-11-07 |
| PRO-2290 |  | Recuperator Heat Exchangers - Lead Time | 200d | 2025-10-15 A | 2026-05-06 | PRO-2260 | 43% | 115d | 2025-10-06 | 2026-07-20 | -8d | 0d | 2026-05-06 |
| PRO-2280 |  | Recuperator Heat Exchangers - Fabrication Vendor Drawings | 40d | 2025-11-10 | 2026-01-20 | PRO-2270 |  |  |  |  | 719.88d | 120d |  |
| PRO-2300 |  | Recuperator Heat Exchangers - Receive at Site | 5d | 2026-05-07 | 2026-05-13 | PRO-2290 |  |  |  |  | -8d | 42d |  |

| ID | WBS | Activity | Duration | Start | Finish | Predecessors | Total float | Free float |
| --- | --- | --- | --- | --- | --- | --- | --- | --- |
|  | 14 | **Field Manual Valves (>2")** |  | 2025-11-10 | 2026-07-16 |  |  |  |
| PRO-2510 |  | Field Manual Valves (>2") - RFP Package | 5d | 2025-11-10 | 2025-11-14 | PM-1110 | 210d | 0d |
| PRO-2520 |  | Field Manual Valves (>2") - Issue RFP | 5d | 2025-11-17 | 2025-11-21 | PRO-2510 | 210d | 0d |
| PRO-2530 |  | Field Manual Valves (>2") - Proposals Due | 20d | 2025-11-24 | 2026-01-06 | PRO-2520 | 210d | 0d |
| PRO-2540 |  | Field Manual Valves (>2") - Commercial Evaluation | 5d | 2026-01-07 | 2026-01-13 | PRO-2530 | 210d | 0d |
| PRO-2550 |  | Field Manual Valves (>2") - Technical Evaluation | 5d | 2026-01-07 | 2026-01-13 | PRO-2540 SS | 210d | 0d |
| PRO-2560 |  | Field Manual Valves (>2") - Award | 5d | 2026-01-14 | 2026-01-20 | PRO-2550 | 210d | 0d |
| PRO-2570 |  | Field Manual Valves (>2") - Approved Vendor Drawings | 20d | 2026-01-21 | 2026-02-17 | PRO-2560 | 235d | 0d |
| PRO-2590 |  | Field Manual Valves (>2") - Lead Time | 120d | 2026-01-21 | 2026-07-09 | PRO-2560 | 210d | 0d |
| PRO-2580 |  | Field Manual Valves (>2") - Fabrication Vendor Drawings | 40d | 2026-02-18 | 2026-04-15 | PRO-2570 | 659.88d | 60d |
| PRO-2600 |  | Field Manual Valves (>2") - Receive at Site | 5d | 2026-07-10 | 2026-07-16 | PRO-2590 | 210d | 1d |
|  | 20 | **Non-Turbine ORC Control System** |  | 2025-11-10 | 2027-01-21 |  |  |  |
| PRO-3110 |  | Non-Turbine ORC Control System - RFP Package | 5d | 2025-11-10 | 2025-11-14 | PM-1110 | 110d | 0d |
| PRO-3120 |  | Non-Turbine ORC Control System - Issue RFP | 5d | 2025-11-17 | 2025-11-21 | PRO-3110 | 110d | 0d |
| PRO-3130 |  | Non-Turbine ORC Control System - Proposals Due | 20d | 2025-11-24 | 2026-01-06 | PRO-3120 | 110d | 0d |
| PRO-3140 |  | Non-Turbine ORC Control System - Commercial Evaluation | 5d | 2026-01-07 | 2026-01-13 | PRO-3130 | 110d | 0d |
| PRO-3150 |  | Non-Turbine ORC Control System - Technical Evaluation | 5d | 2026-01-07 | 2026-01-13 | PRO-3140 SS | 110d | 0d |
| PRO-3160 |  | Non-Turbine ORC Control System - Award | 5d | 2026-01-14 | 2026-01-20 | PRO-3150 | 110d | 0d |
| PRO-3170 |  | Non-Turbine ORC Control System - Approved Vendor Drawings | 20d | 2026-01-21 | 2026-02-17 | PRO-3160 | 235d | 0d |
| PRO-3190 |  | Non-Turbine ORC Control System - Lead Time | 250d | 2026-01-21 | 2027-01-14 | PRO-3160 | 110d | 0d |
| PRO-3180 |  | Non-Turbine ORC Control System - Fabrication Vendor Drawings | 50d | 2026-02-18 | 2026-04-29 | PRO-3170 | 649.88d | 50d |
| PRO-3200 |  | Non-Turbine ORC Control System - Receive at Site | 5d | 2027-01-15 | 2027-01-21 | PRO-3190 | 110d | 189d |
|  | 21 | **Control Valves (Non-Turbine)** |  | 2025-11-10 | 2026-08-27 |  |  |  |
| PRO-3510 |  | Control Valves (Non-Turbine) - RFP Package | 5d | 2025-11-10 | 2025-11-14 | PM-1110 | 235d | 0d |
| PRO-3520 |  | Control Valves (Non-Turbine) - Issue RFP | 5d | 2025-11-17 | 2025-11-21 | PRO-3510 | 235d | 0d |
| PRO-3530 |  | Control Valves (Non-Turbine) - Proposals Due | 20d | 2025-11-24 | 2026-01-06 | PRO-3520 | 235d | 0d |
| PRO-3540 |  | Control Valves (Non-Turbine) - Commercial Evaluation | 5d | 2026-01-07 | 2026-01-13 | PRO-3530 | 235d | 0d |
| PRO-3550 |  | Control Valves (Non-Turbine) - Technical Evaluation | 5d | 2026-01-07 | 2026-01-13 | PRO-3540 SS | 235d | 0d |
| PRO-3560 |  | Control Valves (Non-Turbine) - Award | 5d | 2026-01-14 | 2026-01-20 | PRO-3550 | 235d | 0d |
| PRO-3570 |  | Control Valves (Non-Turbine) - Approved Vendor Drawings | 20d | 2026-01-21 | 2026-02-17 | PRO-3560 | 235d | 0d |
| PRO-3590 |  | Control Valves (Non-Turbine) - Lead Time | 150d | 2026-01-21 | 2026-08-20 | PRO-3560 | 563.88d | 0d |
| PRO-3580 |  | Control Valves (Non-Turbine) - Fabrication Vendor Drawings | 40d | 2026-02-18 | 2026-04-15 | PRO-3570 | 659.88d | 60d |
| PRO-3600 |  | Control Valves (Non-Turbine) - Receive at Site | 5d | 2026-08-21 | 2026-08-27 | PRO-3590 | 563.88d | 224d |

| ID | WBS | Activity | Duration | Start | Finish | Predecessors | Complete | Planned start | Planned finish | Total float | Free float |
| --- | --- | --- | --- | --- | --- | --- | --- | --- | --- | --- | --- |
|  | 22 | **Non-Condensable Gas (NCG) Vent System** |  | 2025-11-10 | 2026-11-06 |  |  |  |  |  |  |
| PRO-3010 |  | Non-Condensable Gas (NCG) Vent System - RFP Package | 5d | 2025-11-10 | 2025-11-14 | PM-1110 |  |  |  | 235d | 0d |
| PRO-3020 |  | Non-Condensable Gas (NCG) Vent System - Issue RFP | 5d | 2025-11-17 | 2025-11-21 | PRO-3010 |  |  |  | 235d | 0d |
| PRO-3030 |  | Non-Condensable Gas (NCG) Vent System - Proposals Due | 20d | 2025-11-24 | 2026-01-06 | PRO-3020 |  |  |  | 235d | 0d |
| PRO-3040 |  | Non-Condensable Gas (NCG) Vent System - Commercial Evaluation | 5d | 2026-01-07 | 2026-01-13 | PRO-3030 |  |  |  | 235d | 0d |
| PRO-3050 |  | Non-Condensable Gas (NCG) Vent System - Technical Evaluation | 5d | 2026-01-07 | 2026-01-13 | PRO-3040 SS |  |  |  | 235d | 0d |
| PRO-3060 |  | Non-Condensable Gas (NCG) Vent System - Award | 5d | 2026-01-14 | 2026-01-20 | PRO-3050 |  |  |  | 235d | 0d |
| PRO-3070 |  | Non-Condensable Gas (NCG) Vent System - Approved Vendor Drawings | 20d | 2026-01-21 | 2026-02-17 | PRO-3060 |  |  |  | 235d | 0d |
| PRO-3090 |  | Non-Condensable Gas (NCG) Vent System - Lead Time | 200d | 2026-01-21 | 2026-10-30 | PRO-3060 |  |  |  | 513.88d | 0d |
| PRO-3080 |  | Non-Condensable Gas (NCG) Vent System - Fabrication Vendor Drawings | 40d | 2026-02-18 | 2026-04-15 | PRO-3070 |  |  |  | 659.88d | 60d |
| PRO-3100 |  | Non-Condensable Gas (NCG) Vent System - Receive at Site | 5d | 2026-11-02 | 2026-11-06 | PRO-3090 |  |  |  | 513.88d | 174d |
|  | 34 | **Vapor Distribution Header** |  | 2026-01-14 | 2026-07-09 |  |  |  |  |  |  |
| PRO-12690 |  | Vapor Distribution Header - RFP Package | 5d | 2026-01-14 | 2026-01-20 | ME1001 |  |  |  | 148d | 0d |
| PRO-12700 |  | Vapor Distribution Header - Issue RFP | 5d | 2026-01-21 | 2026-01-27 | PRO-12690 |  |  |  | 148d | 0d |
| PRO-12710 |  | Vapor Distribution Header - Proposals Due | 20d | 2026-01-28 | 2026-02-24 | PRO-12700 |  |  |  | 148d | 0d |
| PRO-12720 |  | Vapor Distribution Header - Commercial Evaluation | 5d | 2026-02-25 | 2026-03-03 | PRO-12710 |  |  |  | 148d | 0d |
| PRO-12730 |  | Vapor Distribution Header - Technical Evaluation | 5d | 2026-02-25 | 2026-03-03 | PRO-12720 SS |  |  |  | 148d | 0d |
| PRO-12740 |  | Vapor Distribution Header - Award | 5d | 2026-03-04 | 2026-03-10 | PRO-12730 |  |  |  | 148d | 0d |
| PRO-12750 |  | Vapor Distribution Header - Lead Time | 80d | 2026-03-11 | 2026-07-02 | PRO-12740 |  |  |  | 148d | 0d |
| PRO-12760 |  | Vapor Distribution Header - Receive at Site | 5d | 2026-07-03 | 2026-07-09 | PRO-12750 |  |  |  | 148d | 22d |
|  | 68 | **Evaporators** |  | 2025-09-12 | 2026-10-23 |  |  |  |  |  |  |
| PRO-7910 |  | Evaporators - RFP Package | 5d | 2025-09-12 A | 2025-09-12 A | PM-1110 | 100% | 2025-10-06 | 2025-10-10 |  |  |
| PRO-7920 |  | Evaporators - Issue RFP | 5d | 2025-09-12 A | 2025-09-12 A | PRO-7910 | 100% | 2025-10-13 | 2025-10-17 |  |  |
| PRO-7930 |  | Evaporators - Proposals Due | 20d | 2025-11-10 | 2025-12-09 | PRO-7920 |  |  |  | 190d | 0d |
| PRO-7940 |  | Evaporators - Commercial Evaluation | 5d | 2025-12-10 | 2025-12-16 | PRO-7930 |  |  |  | 190d | 0d |
| PRO-7950 |  | Evaporators - Technical Evaluation | 5d | 2025-12-10 | 2025-12-16 | PRO-7940 SS |  |  |  | 190d | 0d |
| PRO-7960 |  | Evaporators - Award | 5d | 2025-12-17 | 2026-01-06 | PRO-7950 |  |  |  | 190d | 0d |
| PRO-7970 |  | Evaporators - Approved Vendor Drawings | 20d | 2026-01-07 | 2026-02-03 | PRO-7960 |  |  |  | 245d | 0d |
| PRO-7990 |  | Evaporators - Lead Time | 200d | 2026-01-07 | 2026-10-16 | PRO-7960 |  |  |  | 190d | 0d |
| PRO-7980 |  | Evaporators - Fabrication Vendor Drawings | 40d | 2026-02-04 | 2026-03-31 | PRO-7970 |  |  |  | 669.88d | 70d |
| PRO-8000 |  | Evaporators - Receive at Site | 5d | 2026-10-19 | 2026-10-23 | PRO-7990 |  |  |  | 190d | 269d |

| ID | WBS | Activity | Duration | Start | Finish | Predecessors | Complete | Remaining | Planned start | Planned finish | Total float | Free float | Expected finish |
| --- | --- | --- | --- | --- | --- | --- | --- | --- | --- | --- | --- | --- | --- |
|  | 69 | **Drain Pumps** |  | 2026-01-28 | 2026-10-30 |  |  |  |  |  |  |  |  |
| PRO-8310 |  | Drain Pumps - RFP Package | 5d | 2026-01-28 | 2026-02-03 | ME1285 |  |  |  |  | 125d | 0d |  |
| PRO-8320 |  | Drain Pumps - Issue RFP | 5d | 2026-02-04 | 2026-02-10 | PRO-8310 |  |  |  |  | 125d | 0d |  |
| PRO-8330 |  | Drain Pumps - Proposals Due | 20d | 2026-02-11 | 2026-03-10 | PRO-8320 |  |  |  |  | 125d | 0d |  |
| PRO-8340 |  | Drain Pumps - Commercial Evaluation | 5d | 2026-03-11 | 2026-03-17 | PRO-8330 |  |  |  |  | 125d | 0d |  |
| PRO-8350 |  | Drain Pumps - Technical Evaluation | 5d | 2026-03-11 | 2026-03-17 | PRO-8340 SS |  |  |  |  | 125d | 0d |  |
| PRO-8360 |  | Drain Pumps - Award | 5d | 2026-03-18 | 2026-03-24 | PRO-8350 |  |  |  |  | 125d | 0d |  |
| PRO-8370 |  | Drain Pumps - Approved Vendor Drawings | 20d | 2026-03-25 | 2026-04-22 | PRO-8360 |  |  |  |  | 624.88d | 0d |  |
| PRO-8390 |  | Drain Pumps - Lead Time | 150d | 2026-03-25 | 2026-10-23 | PRO-8360 |  |  |  |  | 125d | 0d |  |
| PRO-8380 |  | Drain Pumps - Fabrication Vendor Drawings | 30d | 2026-04-23 | 2026-06-04 | PRO-8370 |  |  |  |  | 624.88d | 25d |  |
| PRO-8400 |  | Drain Pumps - Receive at Site | 5d | 2026-10-26 | 2026-10-30 | PRO-8390 |  |  |  |  | 125d | 121d |  |
|  | 70 | **Station Service Transformers** |  | 2025-09-15 | 2027-09-13 |  |  |  |  |  |  |  |  |
| PRO-9110 |  | Station Service Transformers - RFP Package | 5d | 2025-09-15 A | 2025-09-15 A | PM-1110 | 100% |  | 2025-12-19 | 2026-01-08 |  |  |  |
| PRO-9120 |  | Station Service Transformers - Issue RFP | 5d | 2025-09-15 A | 2025-09-15 A | PRO-9110 | 100% |  | 2026-01-09 | 2026-01-15 |  |  |  |
| PRO-9130 |  | Station Service Transformers - Proposals Due | 20d | 2025-09-15 A | 2025-09-15 A | PRO-9120 | 100% |  | 2026-01-16 | 2026-02-12 |  |  |  |
| PRO-9140 |  | Station Service Transformers - Commercial Evaluation | 5d | 2025-09-15 A | 2025-09-15 A | PRO-9130 | 100% |  | 2026-02-13 | 2026-02-19 |  |  |  |
| PRO-9150 |  | Station Service Transformers - Technical Evaluation | 5d | 2025-09-15 A | 2025-09-15 A | PRO-9140 SS | 100% |  | 2026-02-13 | 2026-02-19 |  |  |  |
| PRO-9160 |  | Station Service Transformers - Award | 5d | 2025-09-15 A | 2025-09-15 A | PRO-9150 | 100% |  | 2026-02-20 | 2026-02-26 |  |  |  |
| PRO-9190 |  | Station Service Transformers - Lead Time | 525d | 2025-09-15 A | 2027-09-03 | PRO-9160 | 14% | 454d | 2026-02-27 | 2028-03-20 | -79d | 0d | 2027-09-03 |
| PRO-9170 |  | Station Service Transformers - Approved Vendor Drawings | 20d | 2025-11-10 | 2025-12-09 | PRO-9160 |  |  |  |  | 275d | 0d |  |
| PRO-9180 |  | Station Service Transformers - Fabrication Vendor Drawings | 80d | 2025-12-10 | 2026-04-15 | PRO-9170 |  |  |  |  | 659.88d | 60d |  |
| PRO-9200 |  | Station Service Transformers - Receive at Site | 5d | 2027-09-07 | 2027-09-13 | PRO-9190 |  |  |  |  | -79d | 0d |  |
|  | 8 | **Emergency Diesel Generator** |  | 2026-02-27 | 2027-02-15 |  |  |  |  |  |  |  |  |
| PRO-1810 |  | Emergency Diesel Generator - RFP Package | 5d | 2026-02-27 | 2026-03-05 | EL4355 |  |  |  |  | 43d | 0d |  |
| PRO-1820 |  | Emergency Diesel Generator - Issue RFP | 5d | 2026-03-06 | 2026-03-12 | PRO-1810 |  |  |  |  | 43d | 0d |  |
| PRO-1830 |  | Emergency Diesel Generator - Proposals Due | 20d | 2026-03-13 | 2026-04-10 | PRO-1820 |  |  |  |  | 43d | 0d |  |
| PRO-1840 |  | Emergency Diesel Generator - Commercial Evaluation | 5d | 2026-04-13 | 2026-04-17 | PRO-1830 |  |  |  |  | 43d | 0d |  |
| PRO-1850 |  | Emergency Diesel Generator - Technical Evaluation | 5d | 2026-04-13 | 2026-04-17 | PRO-1840 SS |  |  |  |  | 43d | 0d |  |
| PRO-1860 |  | Emergency Diesel Generator - Award | 5d | 2026-04-20 | 2026-04-24 | PRO-1850 |  |  |  |  | 43d | 0d |  |
| PRO-1870 |  | Emergency Diesel Generator - Approved Vendor Drawings | 20d | 2026-04-27 | 2026-05-22 | PRO-1860 |  |  |  |  | 602.88d | 0d |  |
| PRO-1890 |  | Emergency Diesel Generator - Lead Time | 200d | 2026-04-27 | 2027-02-08 | PRO-1860 |  |  |  |  | 43d | 0d |  |
| PRO-1880 |  | Emergency Diesel Generator - Fabrication Vendor Drawings | 30d | 2026-05-26 | 2026-07-06 | PRO-1870 |  |  |  |  | 602.88d | 3d |  |
| PRO-1900 |  | Emergency Diesel Generator - Receive at Site | 5d | 2027-02-09 | 2027-02-15 | PRO-1890 |  |  |  |  | 43d | 39d |  |

| ID | WBS | Activity | Duration | Start | Finish | Predecessors | Complete | Planned start | Planned finish | Total float | Free float |
| --- | --- | --- | --- | --- | --- | --- | --- | --- | --- | --- | --- |
|  | 9 | **Pre-Heater Heat Exchangers** |  | 2025-09-12 | 2026-10-23 |  |  |  |  |  |  |
| PRO-1610 |  | Pre-Heater Heat Exchangers - RFP Package | 5d | 2025-09-12 A | 2025-09-12 A | PM-1110 | 100% | 2025-10-06 | 2025-10-10 |  |  |
| PRO-1620 |  | Pre-Heater Heat Exchangers - Issue RFP | 5d | 2025-09-12 A | 2025-09-12 A | PRO-1610 | 100% | 2025-10-13 | 2025-10-17 |  |  |
| PRO-1630 |  | Pre-Heater Heat Exchangers - Proposals Due | 20d | 2025-11-10 | 2025-12-09 | PRO-1620 |  |  |  | 125d | 0d |
| PRO-1640 |  | Pre-Heater Heat Exchangers - Commercial Evaluation | 5d | 2025-12-10 | 2025-12-16 | PRO-1630 |  |  |  | 125d | 0d |
| PRO-1650 |  | Pre-Heater Heat Exchangers - Technical Evaluation | 5d | 2025-12-10 | 2025-12-16 | PRO-1640 SS |  |  |  | 125d | 0d |
| PRO-1660 |  | Pre-Heater Heat Exchangers - Award | 5d | 2025-12-17 | 2026-01-06 | PRO-1650 |  |  |  | 125d | 0d |
| PRO-1670 |  | Pre-Heater Heat Exchangers - Approved Vendor Drawings | 20d | 2026-01-07 | 2026-02-03 | PRO-1660 |  |  |  | 245d | 0d |
| PRO-1690 |  | Pre-Heater Heat Exchangers - Lead Time | 200d | 2026-01-07 | 2026-10-16 | PRO-1660 |  |  |  | 125d | 0d |
| PRO-1680 |  | Pre-Heater Heat Exchangers - Fabrication Vendor Drawings | 40d | 2026-02-04 | 2026-03-31 | PRO-1670 |  |  |  | 669.88d | 70d |
| PRO-1700 |  | Pre-Heater Heat Exchangers - Receive at Site | 5d | 2026-10-19 | 2026-10-23 | PRO-1690 |  |  |  | 125d | 17d |
|  | 17 | **Drain Tanks** |  | 2025-11-10 | 2026-08-27 |  |  |  |  |  |  |
| PRO-2010 |  | Drain Tanks - RFP Package | 5d | 2025-11-10 | 2025-11-14 | PM-1110 |  |  |  | 205d | 0d |
| PRO-2020 |  | Drain Tanks - Issue RFP | 5d | 2025-11-17 | 2025-11-21 | PRO-2010 |  |  |  | 205d | 0d |
| PRO-2030 |  | Drain Tanks - Proposals Due | 20d | 2025-11-24 | 2026-01-06 | PRO-2020 |  |  |  | 205d | 0d |
| PRO-2040 |  | Drain Tanks - Commercial Evaluation | 5d | 2026-01-07 | 2026-01-13 | PRO-2030 |  |  |  | 205d | 0d |
| PRO-2050 |  | Drain Tanks - Technical Evaluation | 5d | 2026-01-07 | 2026-01-13 | PRO-2040 SS |  |  |  | 205d | 0d |
| PRO-2060 |  | Drain Tanks - Award | 5d | 2026-01-14 | 2026-01-20 | PRO-2050 |  |  |  | 205d | 0d |
| PRO-2070 |  | Drain Tanks - Approved Vendor Drawings | 20d | 2026-01-21 | 2026-02-17 | PRO-2060 |  |  |  | 235d | 0d |
| PRO-2090 |  | Drain Tanks - Lead Time | 150d | 2026-01-21 | 2026-08-20 | PRO-2060 |  |  |  | 205d | 0d |
| PRO-2080 |  | Drain Tanks - Fabrication Vendor Drawings | 30d | 2026-02-18 | 2026-03-31 | PRO-2070 |  |  |  | 669.88d | 70d |
| PRO-2100 |  | Drain Tanks - Receive at Site | 5d | 2026-08-21 | 2026-08-27 | PRO-2090 |  |  |  | 205d | 153d |
|  | 24 | **ORC FEED Pumps** |  | 2025-09-25 | 2026-09-11 |  |  |  |  |  |  |
| PRO-3710 |  | ORC FEED Pumps - RFP Package | 5d | 2025-09-25 A | 2025-09-25 A | PM-1110 | 100% | 2025-10-06 | 2025-10-10 |  |  |
| PRO-3720 |  | ORC FEED Pumps - Issue RFP | 5d | 2025-09-25 A | 2025-09-25 A | PRO-3710 | 100% | 2025-10-13 | 2025-10-17 |  |  |
| PRO-3730 |  | ORC FEED Pumps - Proposals Due | 20d | 2025-11-10 | 2025-12-09 | PRO-3720 |  |  |  | 160d | 0d |
| PRO-3740 |  | ORC FEED Pumps - Commercial Evaluation | 5d | 2025-12-10 | 2025-12-16 | PRO-3730 |  |  |  | 160d | 0d |
| PRO-3750 |  | ORC FEED Pumps - Technical Evaluation | 5d | 2025-12-10 | 2025-12-16 | PRO-3740 SS |  |  |  | 160d | 0d |
| PRO-3760 |  | ORC FEED Pumps - Award | 5d | 2025-12-17 | 2026-01-06 | PRO-3750 |  |  |  | 160d | 0d |
| PRO-3770 |  | ORC FEED Pumps - Approved Vendor Drawings | 20d | 2026-01-07 | 2026-02-03 | PRO-3760 |  |  |  | 245d | 0d |
| PRO-3790 |  | ORC FEED Pumps - Lead Time | 170d | 2026-01-07 | 2026-09-03 | PRO-3760 |  |  |  | 160d | 0d |
| PRO-3780 |  | ORC FEED Pumps - Fabrication Vendor Drawings | 30d | 2026-02-04 | 2026-03-17 | PRO-3770 |  |  |  | 679.88d | 80d |
| PRO-3800 |  | ORC FEED Pumps - Receive at Site | 5d | 2026-09-04 | 2026-09-11 | PRO-3790 |  |  |  | 160d | 47d |

| ID | WBS | Activity | Duration | Start | Finish | Predecessors | Total float | Free float |
| --- | --- | --- | --- | --- | --- | --- | --- | --- |
|  | 72 | **Generator Cooling System** |  | 2025-11-10 | 2026-08-27 |  |  |  |
| PRO-8110 |  | Generator Cooling System - RFP Package | 5d | 2025-11-10 | 2025-11-14 | PM-1110 | 170d | 0d |
| PRO-8120 |  | Generator Cooling System - Issue RFP | 5d | 2025-11-17 | 2025-11-21 | PRO-8110 | 170d | 0d |
| PRO-8130 |  | Generator Cooling System - Proposals Due | 20d | 2025-11-24 | 2026-01-06 | PRO-8120 | 170d | 0d |
| PRO-8140 |  | Generator Cooling System - Commercial Evaluation | 5d | 2026-01-07 | 2026-01-13 | PRO-8130 | 170d | 0d |
| PRO-8150 |  | Generator Cooling System - Technical Evaluation | 5d | 2026-01-07 | 2026-01-13 | PRO-8140 SS | 170d | 0d |
| PRO-8160 |  | Generator Cooling System - Award | 5d | 2026-01-14 | 2026-01-20 | PRO-8150 | 170d | 0d |
| PRO-8170 |  | Generator Cooling System - Approved Vendor Drawings | 20d | 2026-01-21 | 2026-02-17 | PRO-8160 | 235d | 0d |
| PRO-8190 |  | Generator Cooling System - Lead Time | 150d | 2026-01-21 | 2026-08-20 | PRO-8160 | 170d | 0d |
| PRO-8180 |  | Generator Cooling System - Fabrication Vendor Drawings | 30d | 2026-02-18 | 2026-03-31 | PRO-8170 | 669.88d | 70d |
| PRO-8200 |  | Generator Cooling System - Receive at Site | 5d | 2026-08-21 | 2026-08-27 | PRO-8190 | 170d | 166d |
|  | 25 | **Fire Water/Protection Tank** |  | 2026-01-14 | 2026-10-16 |  |  |  |
| PRO-3410 |  | Fire Water/Protection Tank - RFP Package | 5d | 2026-01-14 | 2026-01-20 | ME2855 | 135d | 0d |
| PRO-3420 |  | Fire Water/Protection Tank - Issue RFP | 5d | 2026-01-21 | 2026-01-27 | PRO-3410 | 135d | 0d |
| PRO-3430 |  | Fire Water/Protection Tank - Proposals Due | 20d | 2026-01-28 | 2026-02-24 | PRO-3420 | 135d | 0d |
| PRO-3440 |  | Fire Water/Protection Tank - Commercial Evaluation | 5d | 2026-02-25 | 2026-03-03 | PRO-3430 | 135d | 0d |
| PRO-3450 |  | Fire Water/Protection Tank - Technical Evaluation | 5d | 2026-02-25 | 2026-03-03 | PRO-3440 SS | 135d | 0d |
| PRO-3460 |  | Fire Water/Protection Tank - Award | 5d | 2026-03-04 | 2026-03-10 | PRO-3450 | 135d | 0d |
| PRO-3470 |  | Fire Water/Protection Tank - Approved Vendor Drawings | 20d | 2026-03-11 | 2026-04-08 | PRO-3460 | 200d | 0d |
| PRO-3490 |  | Fire Water/Protection Tank - Lead Time | 150d | 2026-03-11 | 2026-10-09 | PRO-3460 | 135d | 0d |
| PRO-3480 |  | Fire Water/Protection Tank - Fabrication Vendor Drawings | 30d | 2026-04-09 | 2026-05-20 | PRO-3470 | 634.88d | 35d |
| PRO-3500 |  | Fire Water/Protection Tank - Receive at Site | 5d | 2026-10-12 | 2026-10-16 | PRO-3490 | 135d | 131d |
|  | 29 | **Control Valves - ORC** |  | 2025-11-10 | 2026-08-27 |  |  |  |
| PRO-4110 |  | Control Valves - ORC - RFP Package | 5d | 2025-11-10 | 2025-11-14 | PM-1110 | 235d | 0d |
| PRO-4120 |  | Control Valves - ORC - Issue RFP | 5d | 2025-11-17 | 2025-11-21 | PRO-4110 | 235d | 0d |
| PRO-4130 |  | Control Valves - ORC - Proposals Due | 20d | 2025-11-24 | 2026-01-06 | PRO-4120 | 235d | 0d |
| PRO-4140 |  | Control Valves - ORC - Commercial Evaluation | 5d | 2026-01-07 | 2026-01-13 | PRO-4130 | 235d | 0d |
| PRO-4150 |  | Control Valves - ORC - Technical Evaluation | 5d | 2026-01-07 | 2026-01-13 | PRO-4140 SS | 235d | 0d |
| PRO-4160 |  | Control Valves - ORC - Award | 5d | 2026-01-14 | 2026-01-20 | PRO-4150 | 235d | 0d |
| PRO-4170 |  | Control Valves - ORC - Approved Vendor Drawings | 20d | 2026-01-21 | 2026-02-17 | PRO-4160 | 235d | 0d |
| PRO-4190 |  | Control Valves - ORC - Lead Time | 150d | 2026-01-21 | 2026-08-20 | PRO-4160 | 527.88d | 0d |
| PRO-4180 |  | Control Valves - ORC - Fabrication Vendor Drawings | 40d | 2026-02-18 | 2026-04-15 | PRO-4170 | 659.88d | 60d |
| PRO-4200 |  | Control Valves - ORC - Receive at Site | 5d | 2026-08-21 | 2026-08-27 | PRO-4190 | 527.88d | 190d |

| ID | WBS | Activity | Duration | Start | Finish | Predecessors | Total float | Free float |
| --- | --- | --- | --- | --- | --- | --- | --- | --- |
|  | 76 | **Control Valves (Off Plot)** |  | 2025-11-10 | 2026-08-27 |  |  |  |
| PRO-8710 |  | Control Valves (Off Plot) - RFP Package | 5d | 2025-11-10 | 2025-11-14 | PM-1110 | 230d | 0d |
| PRO-8720 |  | Control Valves (Off Plot) - Issue RFP | 5d | 2025-11-17 | 2025-11-21 | PRO-8710 | 230d | 0d |
| PRO-8730 |  | Control Valves (Off Plot) - Proposals Due | 20d | 2025-11-24 | 2026-01-06 | PRO-8720 | 230d | 0d |
| PRO-8740 |  | Control Valves (Off Plot) - Commercial Evaluation | 5d | 2026-01-07 | 2026-01-13 | PRO-8730 | 230d | 0d |
| PRO-8750 |  | Control Valves (Off Plot) - Technical Evaluation | 5d | 2026-01-07 | 2026-01-13 | PRO-8740 SS | 230d | 0d |
| PRO-8760 |  | Control Valves (Off Plot) - Award | 5d | 2026-01-14 | 2026-01-20 | PRO-8750 | 230d | 0d |
| PRO-8770 |  | Control Valves (Off Plot) - Approved Vendor Drawings | 20d | 2026-01-21 | 2026-02-17 | PRO-8760 | 235d | 0d |
| PRO-8790 |  | Control Valves (Off Plot) - Lead Time | 150d | 2026-01-21 | 2026-08-20 | PRO-8760 | 230d | 0d |
| PRO-8780 |  | Control Valves (Off Plot) - Fabrication Vendor Drawings | 30d | 2026-02-18 | 2026-03-31 | PRO-8770 | 669.88d | 70d |
| PRO-8800 |  | Control Valves (Off Plot) - Receive at Site | 5d | 2026-08-21 | 2026-08-27 | PRO-8790 | 230d | 309d |
|  | 30 | **Fire Protection Pump** |  | 2026-02-04 | 2026-11-06 |  |  |  |
| PRO-4210 |  | Fire Protection Pump - RFP Package | 5d | 2026-02-04 | 2026-02-10 | ME1025 | 120d | 0d |
| PRO-4220 |  | Fire Protection Pump - Issue RFP | 5d | 2026-02-11 | 2026-02-17 | PRO-4210 | 120d | 0d |
| PRO-4230 |  | Fire Protection Pump - Proposals Due | 20d | 2026-02-18 | 2026-03-17 | PRO-4220 | 120d | 0d |
| PRO-4240 |  | Fire Protection Pump - Commercial Evaluation | 5d | 2026-03-18 | 2026-03-24 | PRO-4230 | 120d | 0d |
| PRO-4250 |  | Fire Protection Pump - Technical Evaluation | 5d | 2026-03-18 | 2026-03-24 | PRO-4240 SS | 120d | 0d |
| PRO-4260 |  | Fire Protection Pump - Award | 5d | 2026-03-25 | 2026-03-31 | PRO-4250 | 120d | 0d |
| PRO-4270 |  | Fire Protection Pump - Approved Vendor Drawings | 20d | 2026-04-01 | 2026-04-29 | PRO-4260 | 619.88d | 0d |
| PRO-4290 |  | Fire Protection Pump - Lead Time | 150d | 2026-04-01 | 2026-10-30 | PRO-4260 | 120d | 0d |
| PRO-4280 |  | Fire Protection Pump - Fabrication Vendor Drawings | 30d | 2026-04-30 | 2026-06-11 | PRO-4270 | 619.88d | 20d |
| PRO-4300 |  | Fire Protection Pump - Receive at Site | 5d | 2026-11-02 | 2026-11-06 | PRO-4290 | 120d | 116d |
|  | 77 | **Compressed Air Systems** |  | 2026-01-15 | 2027-04-26 |  |  |  |
| PRO-9510 |  | Compressed Air Systems - RFP Package (Duplicated Instrument Air??? ) | 5d | 2026-01-15 | 2026-01-21 | ME1105 | 4d | 0d |
| PRO-9520 |  | Compressed Air Systems - Issue RFP | 5d | 2026-01-22 | 2026-01-28 | PRO-9510 | 4d | 0d |
| PRO-9530 |  | Compressed Air Systems - Proposals Due | 20d | 2026-01-29 | 2026-02-25 | PRO-9520 | 4d | 0d |
| PRO-9540 |  | Compressed Air Systems - Commercial Evaluation | 5d | 2026-02-26 | 2026-03-04 | PRO-9530 | 4d | 0d |
| PRO-9550 |  | Compressed Air Systems - Technical Evaluation | 5d | 2026-02-26 | 2026-03-04 | PRO-9540 SS | 4d | 0d |
| PRO-9560 |  | Compressed Air Systems - Award | 5d | 2026-03-05 | 2026-03-11 | PRO-9550 | 4d | 0d |
| PRO-9570 |  | Compressed Air Systems - Approved Vendor Drawings | 20d | 2026-03-12 | 2026-04-09 | PRO-9560 | 199d | 0d |
| PRO-9590 |  | Compressed Air Systems - Lead Time | 280d | 2026-03-12 | 2027-04-19 | PRO-9560 | 4d | 0d |
| PRO-9580 |  | Compressed Air Systems - Fabrication Vendor Drawings | 60d | 2026-04-10 | 2026-07-03 | PRO-9570 | 603.88d | 4d |
| PRO-9600 |  | Compressed Air Systems - Receive at Site | 5d | 2027-04-20 | 2027-04-26 | PRO-9590 | 4d | 0d |

| ID | WBS | Activity | Duration | Start | Finish | Predecessors | Total float | Free float |
| --- | --- | --- | --- | --- | --- | --- | --- | --- |
|  | 31 | **Strainers** |  | 2025-11-10 | 2026-06-04 |  |  |  |
| PRO-4010 |  | Strainers - RFP Package | 5d | 2025-11-10 | 2025-11-14 | PM-1110 | 235d | 0d |
| PRO-4020 |  | Strainers - Issue RFP | 5d | 2025-11-17 | 2025-11-21 | PRO-4010 | 235d | 0d |
| PRO-4030 |  | Strainers - Proposals Due | 20d | 2025-11-24 | 2026-01-06 | PRO-4020 | 235d | 0d |
| PRO-4040 |  | Strainers - Commercial Evaluation | 5d | 2026-01-07 | 2026-01-13 | PRO-4030 | 235d | 0d |
| PRO-4050 |  | Strainers - Technical Evaluation | 5d | 2026-01-07 | 2026-01-13 | PRO-4040 SS | 235d | 0d |
| PRO-4060 |  | Strainers - Award | 5d | 2026-01-14 | 2026-01-20 | PRO-4050 | 235d | 0d |
| PRO-4070 |  | Strainers - Approved Vendor Drawings | 20d | 2026-01-21 | 2026-02-17 | PRO-4060 | 235d | 0d |
| PRO-4090 |  | Strainers - Lead Time | 90d | 2026-01-21 | 2026-05-28 | PRO-4060 | 587.88d | 0d |
| PRO-4080 |  | Strainers - Fabrication Vendor Drawings | 20d | 2026-02-18 | 2026-03-17 | PRO-4070 | 679.88d | 80d |
| PRO-4100 |  | Strainers - Receive at Site | 5d | 2026-05-29 | 2026-06-04 | PRO-4090 | 587.88d | 250d |
|  | 78 | **Instrument Air Skid** |  | 2026-01-15 | 2027-04-26 |  |  |  |
| PRO-8010 |  | Instrument Air Skid - RFP Package (Duplicated Compressed Air Systems??? ) | 5d | 2026-01-15 | 2026-01-21 | ME1105 | 4d | 0d |
| PRO-8020 |  | Instrument Air Skid - Issue RFP | 5d | 2026-01-22 | 2026-01-28 | PRO-8010 | 4d | 0d |
| PRO-8030 |  | Instrument Air Skid - Proposals Due | 20d | 2026-01-29 | 2026-02-25 | PRO-8020 | 4d | 0d |
| PRO-8040 |  | Instrument Air Skid - Commercial Evaluation | 5d | 2026-02-26 | 2026-03-04 | PRO-8030 | 4d | 0d |
| PRO-8050 |  | Instrument Air Skid - Technical Evaluation | 5d | 2026-02-26 | 2026-03-04 | PRO-8040 SS | 4d | 0d |
| PRO-8060 |  | Instrument Air Skid - Award | 5d | 2026-03-05 | 2026-03-11 | PRO-8050 | 4d | 0d |
| PRO-8070 |  | Instrument Air Skid - Approved Vendor Drawings | 20d | 2026-03-12 | 2026-04-09 | PRO-8060 | 174d | 0d |
| PRO-8090 |  | Instrument Air Skid - Lead Time | 280d | 2026-03-12 | 2027-04-19 | PRO-8060 | 4d | 0d |
| PRO-8080 |  | Instrument Air Skid - Fabrication Vendor Drawings | 60d | 2026-04-10 | 2026-07-03 | PRO-8070 | 603.88d | 4d |
| PRO-8100 |  | Instrument Air Skid - Receive at Site | 5d | 2027-04-20 | 2027-04-26 | PRO-8090 | 4d | 0d |
|  | 32 | **PSVs / PSEs** |  | 2025-11-10 | 2026-07-23 |  |  |  |
| PRO-3610 |  | PSVs / PSEs - RFP Package | 5d | 2025-11-10 | 2025-11-14 | PM-1110 | 235d | 0d |
| PRO-3620 |  | PSVs / PSEs - Issue RFP | 5d | 2025-11-17 | 2025-11-21 | PRO-3610 | 235d | 0d |
| PRO-3630 |  | PSVs / PSEs - Proposals Due | 20d | 2025-11-24 | 2026-01-06 | PRO-3620 | 235d | 0d |
| PRO-3640 |  | PSVs / PSEs - Commercial Evaluation | 5d | 2026-01-07 | 2026-01-13 | PRO-3630 | 235d | 0d |
| PRO-3650 |  | PSVs / PSEs - Technical Evaluation | 5d | 2026-01-07 | 2026-01-13 | PRO-3640 SS | 235d | 0d |
| PRO-3660 |  | PSVs / PSEs - Award | 5d | 2026-01-14 | 2026-01-20 | PRO-3650 | 235d | 0d |
| PRO-3670 |  | PSVs / PSEs - Approved Vendor Drawings | 20d | 2026-01-21 | 2026-02-17 | PRO-3660 | 235d | 0d |
| PRO-3690 |  | PSVs / PSEs - Lead Time | 125d | 2026-01-21 | 2026-07-16 | PRO-3660 | 552.88d | 0d |
| PRO-3680 |  | PSVs / PSEs - Fabrication Vendor Drawings | 20d | 2026-02-18 | 2026-03-17 | PRO-3670 | 679.88d | 80d |
| PRO-3700 |  | PSVs / PSEs - Receive at Site | 5d | 2026-07-17 | 2026-07-23 | PRO-3690 | 552.88d | 215d |

| ID | WBS | Activity | Duration | Start | Finish | Predecessors | Total float | Free float |
| --- | --- | --- | --- | --- | --- | --- | --- | --- |
|  | 79 | **Chemical Injection Skids** |  | 2025-11-10 | 2026-11-06 |  |  |  |
| PRO-8610 |  | Chemical Injection Skids - RFP Package | 5d | 2025-11-10 | 2025-11-14 | PM-1110 | 120d | 0d |
| PRO-8620 |  | Chemical Injection Skids - Issue RFP | 5d | 2025-11-17 | 2025-11-21 | PRO-8610 | 120d | 0d |
| PRO-8630 |  | Chemical Injection Skids - Proposals Due | 20d | 2025-11-24 | 2026-01-06 | PRO-8620 | 120d | 0d |
| PRO-8640 |  | Chemical Injection Skids - Commercial Evaluation | 5d | 2026-01-07 | 2026-01-13 | PRO-8630 | 120d | 0d |
| PRO-8650 |  | Chemical Injection Skids - Technical Evaluation | 5d | 2026-01-07 | 2026-01-13 | PRO-8640 SS | 120d | 0d |
| PRO-8660 |  | Chemical Injection Skids - Award | 5d | 2026-01-14 | 2026-01-20 | PRO-8650 | 120d | 0d |
| PRO-8670 |  | Chemical Injection Skids - Approved Vendor Drawings | 20d | 2026-01-21 | 2026-02-17 | PRO-8660 | 235d | 0d |
| PRO-8690 |  | Chemical Injection Skids - Lead Time | 200d | 2026-01-21 | 2026-10-30 | PRO-8660 | 120d | 0d |
| PRO-8680 |  | Chemical Injection Skids - Fabrication Vendor Drawings | 40d | 2026-02-18 | 2026-04-15 | PRO-8670 | 659.88d | 60d |
| PRO-8700 |  | Chemical Injection Skids - Receive at Site | 5d | 2026-11-02 | 2026-11-06 | PRO-8690 | 120d | 116d |
|  | 80 | **Instrumentation & Flow Meters** |  | 2025-11-10 | 2026-08-13 |  |  |  |
| PRO-9910 |  | Instrumentation & Flow Meters - RFP Package | 5d | 2025-11-10 | 2025-11-14 | PM-1110 | 210d | 0d |
| PRO-9920 |  | Instrumentation & Flow Meters - Issue RFP | 5d | 2025-11-17 | 2025-11-21 | PRO-9910 | 210d | 0d |
| PRO-9930 |  | Instrumentation & Flow Meters - Proposals Due | 20d | 2025-11-24 | 2026-01-06 | PRO-9920 | 210d | 0d |
| PRO-9940 |  | Instrumentation & Flow Meters - Commercial Evaluation | 5d | 2026-01-07 | 2026-01-13 | PRO-9930 | 210d | 0d |
| PRO-9950 |  | Instrumentation & Flow Meters - Technical Evaluation | 5d | 2026-01-07 | 2026-01-13 | PRO-9940 SS | 210d | 0d |
| PRO-9960 |  | Instrumentation & Flow Meters - Award | 5d | 2026-01-14 | 2026-01-20 | PRO-9950 | 210d | 0d |
| PRO-9970 |  | Instrumentation & Flow Meters - Approved Vendor Drawings | 20d | 2026-01-21 | 2026-02-17 | PRO-9960 | 235d | 0d |
| PRO-9990 |  | Instrumentation & Flow Meters - Lead Time | 140d | 2026-01-21 | 2026-08-06 | PRO-9960 | 210d | 0d |
| PRO-9980 |  | Instrumentation & Flow Meters - Fabrication Vendor Drawings | 20d | 2026-02-18 | 2026-03-17 | PRO-9970 | 679.88d | 80d |
| PRO-10000 |  | Instrumentation & Flow Meters - Receive at Site | 5d | 2026-08-07 | 2026-08-13 | PRO-9990 | 210d | 206d |
|  | 81 | **Manual Valves (Off Plot)** |  | 2025-11-10 | 2026-06-04 |  |  |  |
| PRO-8910 |  | Manual Valves (Off Plot) - RFP Package | 5d | 2025-11-10 | 2025-11-14 | PM-1110 | 235d | 0d |
| PRO-8920 |  | Manual Valves (Off Plot) - Issue RFP | 5d | 2025-11-17 | 2025-11-21 | PRO-8910 | 235d | 0d |
| PRO-8930 |  | Manual Valves (Off Plot) - Proposals Due | 20d | 2025-11-24 | 2026-01-06 | PRO-8920 | 235d | 0d |
| PRO-8940 |  | Manual Valves (Off Plot) - Commercial Evaluation | 5d | 2026-01-07 | 2026-01-13 | PRO-8930 | 235d | 0d |
| PRO-8950 |  | Manual Valves (Off Plot) - Technical Evaluation | 5d | 2026-01-07 | 2026-01-13 | PRO-8940 SS | 235d | 0d |
| PRO-8960 |  | Manual Valves (Off Plot) - Award | 5d | 2026-01-14 | 2026-01-20 | PRO-8950 | 235d | 0d |
| PRO-8970 |  | Manual Valves (Off Plot) - Approved Vendor Drawings | 20d | 2026-01-21 | 2026-02-17 | PRO-8960 | 235d | 0d |
| PRO-8990 |  | Manual Valves (Off Plot) - Lead Time | 90d | 2026-01-21 | 2026-05-28 | PRO-8960 | 290d | 0d |
| PRO-8980 |  | Manual Valves (Off Plot) - Fabrication Vendor Drawings | 20d | 2026-02-18 | 2026-03-17 | PRO-8970 | 679.88d | 80d |
| PRO-9000 |  | Manual Valves (Off Plot) - Receive at Site | 5d | 2026-05-29 | 2026-06-04 | PRO-8990 | 290d | 369d |

| ID | WBS | Activity | Duration | Start | Finish | Predecessors | Total float | Free float |
| --- | --- | --- | --- | --- | --- | --- | --- | --- |
|  | 82 | **Choke Valves (Off Plot)** |  | 2025-11-10 | 2026-04-22 |  |  |  |
| PRO-9410 |  | Choke Valves (Off Plot) - RFP Package | 5d | 2025-11-10 | 2025-11-14 | PM-1110 | 235d | 0d |
| PRO-9420 |  | Choke Valves (Off Plot) - Issue RFP | 5d | 2025-11-17 | 2025-11-21 | PRO-9410 | 235d | 0d |
| PRO-9430 |  | Choke Valves (Off Plot) - Proposals Due | 20d | 2025-11-24 | 2026-01-06 | PRO-9420 | 235d | 0d |
| PRO-9440 |  | Choke Valves (Off Plot) - Commercial Evaluation | 5d | 2026-01-07 | 2026-01-13 | PRO-9430 | 235d | 0d |
| PRO-9450 |  | Choke Valves (Off Plot) - Technical Evaluation | 5d | 2026-01-07 | 2026-01-13 | PRO-9440 SS | 235d | 0d |
| PRO-9460 |  | Choke Valves (Off Plot) - Award | 5d | 2026-01-14 | 2026-01-20 | PRO-9450 | 235d | 0d |
| PRO-9470 |  | Choke Valves (Off Plot) - Approved Vendor Drawings | 20d | 2026-01-21 | 2026-02-17 | PRO-9460 | 235d | 0d |
| PRO-9490 |  | Choke Valves (Off Plot) - Lead Time | 60d | 2026-01-21 | 2026-04-15 | PRO-9460 | 320d | 0d |
| PRO-9480 |  | Choke Valves (Off Plot) - Fabrication Vendor Drawings | 20d | 2026-02-18 | 2026-03-17 | PRO-9470 | 679.88d | 80d |
| PRO-9500 |  | Choke Valves (Off Plot) - Receive at Site | 5d | 2026-04-16 | 2026-04-22 | PRO-9490 | 320d | 399d |
|  | 83 | **Shut Down Valves on ORC** |  | 2025-11-10 | 2026-08-27 |  |  |  |
| PRO-9010 |  | Shut Down Valves on ORC - RFP Package | 5d | 2025-11-10 | 2025-11-14 | PM-1110 | 235d | 0d |
| PRO-9020 |  | Shut Down Valves on ORC - Issue RFP | 5d | 2025-11-17 | 2025-11-21 | PRO-9010 | 235d | 0d |
| PRO-9030 |  | Shut Down Valves on ORC - Proposals Due | 20d | 2025-11-24 | 2026-01-06 | PRO-9020 | 235d | 0d |
| PRO-9040 |  | Shut Down Valves on ORC - Commercial Evaluation | 5d | 2026-01-07 | 2026-01-13 | PRO-9030 | 235d | 0d |
| PRO-9050 |  | Shut Down Valves on ORC - Technical Evaluation | 5d | 2026-01-07 | 2026-01-13 | PRO-9040 SS | 235d | 0d |
| PRO-9060 |  | Shut Down Valves on ORC - Award | 5d | 2026-01-14 | 2026-01-20 | PRO-9050 | 235d | 0d |
| PRO-9070 |  | Shut Down Valves on ORC - Approved Vendor Drawings | 20d | 2026-01-21 | 2026-02-17 | PRO-9060 | 235d | 0d |
| PRO-9090 |  | Shut Down Valves on ORC - Lead Time | 150d | 2026-01-21 | 2026-08-20 | PRO-9060 | 527.88d | 0d |
| PRO-9080 |  | Shut Down Valves on ORC - Fabrication Vendor Drawings | 30d | 2026-02-18 | 2026-03-31 | PRO-9070 | 669.88d | 70d |
| PRO-9100 |  | Shut Down Valves on ORC - Receive at Site | 5d | 2026-08-21 | 2026-08-27 | PRO-9090 | 527.88d | 190d |
|  | 84 | **BOP Control System (DCS)** |  | 2025-11-10 | 2027-02-04 |  |  |  |
| PRO-9710 |  | BOP Control System (DCS) - RFP Package | 5d | 2025-11-10 | 2025-11-14 | PM-1110 | 82d | 0d |
| PRO-9720 |  | BOP Control System (DCS) - Issue RFP | 5d | 2025-11-17 | 2025-11-21 | PRO-9710 | 82d | 0d |
| PRO-9730 |  | BOP Control System (DCS) - Proposals Due | 20d | 2025-11-24 | 2026-01-06 | PRO-9720 | 82d | 0d |
| PRO-9740 |  | BOP Control System (DCS) - Commercial Evaluation | 5d | 2026-01-07 | 2026-01-13 | PRO-9730 | 82d | 0d |
| PRO-9750 |  | BOP Control System (DCS) - Technical Evaluation | 5d | 2026-01-07 | 2026-01-13 | PRO-9740 SS | 82d | 0d |
| PRO-9760 |  | BOP Control System (DCS) - Award | 5d | 2026-01-14 | 2026-01-20 | PRO-9750 | 82d | 0d |
| PRO-9770 |  | BOP Control System (DCS) - Approved Vendor Drawings | 20d | 2026-01-21 | 2026-02-17 | PRO-9760 | 235d | 0d |
| PRO-9790 |  | BOP Control System (DCS) - Lead Time | 260d | 2026-01-21 | 2027-01-28 | PRO-9760 | 82d | 0d |
| PRO-9780 |  | BOP Control System (DCS) - Fabrication Vendor Drawings | 50d | 2026-02-18 | 2026-04-29 | PRO-9770 | 649.88d | 50d |
| PRO-9800 |  | BOP Control System (DCS) - Receive at Site | 5d | 2027-01-29 | 2027-02-04 | PRO-9790 | 82d | 161d |

| ID | WBS | Activity | Duration | Start | Finish | Predecessors | Total float | Free float |
| --- | --- | --- | --- | --- | --- | --- | --- | --- |
|  | 85 | **Clearing and Grubbing** |  |  |  |  |  |  |
|  | 35 | **ACC Structural Steel** |  | 2025-11-10 | 2026-05-20 |  |  |  |
| PRO-12770 |  | ACC Structural Steel - RFP Package | 5d | 2025-11-10 | 2025-11-14 | PM-1110 | -37d | 0d |
| PRO-12780 |  | ACC Structural Steel - Issue RFP | 5d | 2025-11-17 | 2025-11-21 | PRO-12770 | -37d | 0d |
| PRO-12790 |  | ACC Structural Steel - Proposals Due | 20d | 2025-11-24 | 2026-01-06 | PRO-12780 | -37d | 0d |
| PRO-12800 |  | ACC Structural Steel - Commercial Evaluation | 5d | 2026-01-07 | 2026-01-13 | PRO-12790 | -37d | 0d |
| PRO-12810 |  | ACC Structural Steel - Technical Evaluation | 5d | 2026-01-07 | 2026-01-13 | PRO-12800 SS | -37d | 0d |
| PRO-12820 |  | ACC Structural Steel - Award | 5d | 2026-01-14 | 2026-01-20 | PRO-12810 | -37d | 0d |
| PRO-12830 |  | ACC Structural Steel - Lead Time | 80d | 2026-01-21 | 2026-05-13 | PRO-12820 | -37d | 0d |
| PRO-12840 |  | ACC Structural Steel - Receive at Site | 5d | 2026-05-14 | 2026-05-20 | PRO-12830 | -37d | 0d |
|  | 88 | **Air Coolers (lube oil unit for ORC)** |  | 2026-01-21 | 2027-03-18 |  |  |  |
| PRO-9810 |  | Air Coolers (lube oil unit for ORC) - RFP Package | 5d | 2026-01-21 | 2026-01-27 | ME1195 | 30d | 0d |
| PRO-9820 |  | Air Coolers (lube oil unit for ORC) - Issue RFP | 5d | 2026-01-28 | 2026-02-03 | PRO-9810 | 30d | 0d |
| PRO-9830 |  | Air Coolers (lube oil unit for ORC) - Proposals Due | 20d | 2026-02-04 | 2026-03-03 | PRO-9820 | 30d | 0d |
| PRO-9840 |  | Air Coolers (lube oil unit for ORC) - Commercial Evaluation | 5d | 2026-03-04 | 2026-03-10 | PRO-9830 | 30d | 0d |
| PRO-9850 |  | Air Coolers (lube oil unit for ORC) - Technical Evaluation | 5d | 2026-03-04 | 2026-03-10 | PRO-9840 SS | 30d | 0d |
| PRO-9860 |  | Air Coolers (lube oil unit for ORC) - Award | 5d | 2026-03-11 | 2026-03-17 | PRO-9850 | 30d | 0d |
| PRO-9870 |  | Air Coolers (lube oil unit for ORC) - Approved Vendor Drawings | 20d | 2026-03-18 | 2026-04-15 | PRO-9860 | 170d | 0d |
| PRO-9890 |  | Air Coolers (lube oil unit for ORC) - Lead Time | 250d | 2026-03-18 | 2027-03-11 | PRO-9860 | 30d | 0d |
| PRO-9880 |  | Air Coolers (lube oil unit for ORC) - Fabrication Vendor Drawings | 60d | 2026-04-16 | 2026-07-09 | PRO-9870 | 599.88d | 0d |
| PRO-9900 |  | Air Coolers (lube oil unit for ORC) - Receive at Site | 5d | 2027-03-12 | 2027-03-18 | PRO-9890 | 30d | 26d |
|  | 89 | **Auxiliaries Skids & Turbine Valves** |  | 2025-11-10 | 2026-11-06 |  |  |  |
| PRO-10310 |  | Auxiliaries Skids & Turbine Valves - RFP Package | 5d | 2025-11-10 | 2025-11-14 | PM-1110 | 114d | 0d |
| PRO-10320 |  | Auxiliaries Skids & Turbine Valves - Issue RFP | 5d | 2025-11-17 | 2025-11-21 | PRO-10310 | 114d | 0d |
| PRO-10330 |  | Auxiliaries Skids & Turbine Valves - Proposals Due | 20d | 2025-11-24 | 2026-01-06 | PRO-10320 | 114d | 0d |
| PRO-10340 |  | Auxiliaries Skids & Turbine Valves - Commercial Evaluation | 5d | 2026-01-07 | 2026-01-13 | PRO-10330 | 114d | 0d |
| PRO-10350 |  | Auxiliaries Skids & Turbine Valves - Technical Evaluation | 5d | 2026-01-07 | 2026-01-13 | PRO-10340 SS | 114d | 0d |
| PRO-10360 |  | Auxiliaries Skids & Turbine Valves - Award | 5d | 2026-01-14 | 2026-01-20 | PRO-10350 | 114d | 0d |
| PRO-10370 |  | Auxiliaries Skids & Turbine Valves - Approved Vendor Drawings | 20d | 2026-01-21 | 2026-02-17 | PRO-10360 | 235d | 0d |
| PRO-10390 |  | Auxiliaries Skids & Turbine Valves - Lead Time | 200d | 2026-01-21 | 2026-10-30 | PRO-10360 | 114d | 0d |
| PRO-10380 |  | Auxiliaries Skids & Turbine Valves - Fabrication Vendor Drawings | 40d | 2026-02-18 | 2026-04-15 | PRO-10370 | 659.88d | 60d |
| PRO-10400 |  | Auxiliaries Skids & Turbine Valves - Receive at Site | 5d | 2026-11-02 | 2026-11-06 | PRO-10390 | 114d | 95d |

| ID | WBS | Activity | Duration | Start | Finish | Predecessors | Total float | Free float |
| --- | --- | --- | --- | --- | --- | --- | --- | --- |
|  | 90 | **Bypass Damper - Silencer** |  | 2025-11-10 | 2026-04-22 |  |  |  |
| PRO-9610 |  | Bypass Damper - Silencer - RFP Package | 5d | 2025-11-10 | 2025-11-14 | PM-1110 | 245d | 0d |
| PRO-9620 |  | Bypass Damper - Silencer - Issue RFP | 5d | 2025-11-17 | 2025-11-21 | PRO-9610 | 245d | 0d |
| PRO-9630 |  | Bypass Damper - Silencer - Proposals Due | 20d | 2025-11-24 | 2026-01-06 | PRO-9620 | 245d | 0d |
| PRO-9640 |  | Bypass Damper - Silencer - Commercial Evaluation | 5d | 2026-01-07 | 2026-01-13 | PRO-9630 | 245d | 0d |
| PRO-9650 |  | Bypass Damper - Silencer - Technical Evaluation | 5d | 2026-01-07 | 2026-01-13 | PRO-9640 SS | 245d | 0d |
| PRO-9660 |  | Bypass Damper - Silencer - Award | 5d | 2026-01-14 | 2026-01-20 | PRO-9650 | 245d | 0d |
| PRO-9670 |  | Bypass Damper - Silencer - Approved Vendor Drawings | 10d | 2026-01-21 | 2026-02-03 | PRO-9660 | 245d | 0d |
| PRO-9690 |  | Bypass Damper - Silencer - Lead Time | 60d | 2026-01-21 | 2026-04-15 | PRO-9660 | 260d | 0d |
| PRO-9680 |  | Bypass Damper - Silencer - Fabrication Vendor Drawings | 20d | 2026-02-04 | 2026-03-03 | PRO-9670 | 689.88d | 90d |
| PRO-9700 |  | Bypass Damper - Silencer - Receive at Site | 5d | 2026-04-16 | 2026-04-22 | PRO-9690 | 260d | 256d |
|  | 91 | **Cooling Water Expansion Tank** |  | 2025-11-10 | 2026-09-11 |  |  |  |
| PRO-10210 |  | Cooling Water Expansion Tank - RFP Package | 5d | 2025-11-10 | 2025-11-14 | PM-1110 | 160d | 0d |
| PRO-10220 |  | Cooling Water Expansion Tank - Issue RFP | 5d | 2025-11-17 | 2025-11-21 | PRO-10210 | 160d | 0d |
| PRO-10230 |  | Cooling Water Expansion Tank - Proposals Due | 20d | 2025-11-24 | 2026-01-06 | PRO-10220 | 160d | 0d |
| PRO-10240 |  | Cooling Water Expansion Tank - Commercial Evaluation | 5d | 2026-01-07 | 2026-01-13 | PRO-10230 | 160d | 0d |
| PRO-10250 |  | Cooling Water Expansion Tank - Technical Evaluation | 5d | 2026-01-07 | 2026-01-13 | PRO-10240 SS | 160d | 0d |
| PRO-10260 |  | Cooling Water Expansion Tank - Award | 5d | 2026-01-14 | 2026-01-20 | PRO-10250 | 160d | 0d |
| PRO-10270 |  | Cooling Water Expansion Tank - Approved Vendor Drawings | 20d | 2026-01-21 | 2026-02-17 | PRO-10260 | 235d | 0d |
| PRO-10290 |  | Cooling Water Expansion Tank - Lead Time | 160d | 2026-01-21 | 2026-09-03 | PRO-10260 | 160d | 0d |
| PRO-10280 |  | Cooling Water Expansion Tank - Fabrication Vendor Drawings | 30d | 2026-02-18 | 2026-03-31 | PRO-10270 | 669.88d | 70d |
| PRO-10300 |  | Cooling Water Expansion Tank - Receive at Site | 5d | 2026-09-04 | 2026-09-11 | PRO-10290 | 160d | 156d |
|  | 92 | **Cooling Water Pumps** |  | 2025-11-10 | 2026-09-11 |  |  |  |
| PRO-10510 |  | Cooling Water Pumps - RFP Package | 5d | 2025-11-10 | 2025-11-14 | PM-1110 | 160d | 0d |
| PRO-10520 |  | Cooling Water Pumps - Issue RFP | 5d | 2025-11-17 | 2025-11-21 | PRO-10510 | 160d | 0d |
| PRO-10530 |  | Cooling Water Pumps - Proposals Due | 20d | 2025-11-24 | 2026-01-06 | PRO-10520 | 160d | 0d |
| PRO-10540 |  | Cooling Water Pumps - Commercial Evaluation | 5d | 2026-01-07 | 2026-01-13 | PRO-10530 | 160d | 0d |
| PRO-10550 |  | Cooling Water Pumps - Technical Evaluation | 5d | 2026-01-07 | 2026-01-13 | PRO-10540 SS | 160d | 0d |
| PRO-10560 |  | Cooling Water Pumps - Award | 5d | 2026-01-14 | 2026-01-20 | PRO-10550 | 160d | 0d |
| PRO-10570 |  | Cooling Water Pumps - Approved Vendor Drawings | 20d | 2026-01-21 | 2026-02-17 | PRO-10560 | 235d | 0d |
| PRO-10590 |  | Cooling Water Pumps - Lead Time | 160d | 2026-01-21 | 2026-09-03 | PRO-10560 | 160d | 0d |
| PRO-10580 |  | Cooling Water Pumps - Fabrication Vendor Drawings | 30d | 2026-02-18 | 2026-03-31 | PRO-10570 | 669.88d | 70d |
| PRO-10600 |  | Cooling Water Pumps - Receive at Site | 5d | 2026-09-04 | 2026-09-11 | PRO-10590 | 160d | 156d |

| ID | WBS | Activity | Duration | Start | Finish | Predecessors | Complete | Remaining | Planned start | Planned finish | Total float | Free float | Expected finish |
| --- | --- | --- | --- | --- | --- | --- | --- | --- | --- | --- | --- | --- | --- |
|  | 93 | **DC Battery System** |  | 2025-11-10 | 2026-08-27 |  |  |  |  |  |  |  |  |
| PRO-10610 |  | DC Battery System - RFP Package | 5d | 2025-11-10 | 2025-11-14 | PM-1110 |  |  |  |  | 160.12d | 0d |  |
| PRO-10620 |  | DC Battery System - Issue RFP | 5d | 2025-11-17 | 2025-11-21 | PRO-10610 |  |  |  |  | 160.12d | 0d |  |
| PRO-10630 |  | DC Battery System - Proposals Due | 20d | 2025-11-24 | 2026-01-06 | PRO-10620 |  |  |  |  | 160.12d | 0d |  |
| PRO-10640 |  | DC Battery System - Commercial Evaluation | 5d | 2026-01-07 | 2026-01-13 | PRO-10630 |  |  |  |  | 160.12d | 0d |  |
| PRO-10650 |  | DC Battery System - Technical Evaluation | 5d | 2026-01-07 | 2026-01-13 | PRO-10640 SS |  |  |  |  | 160.12d | 0d |  |
| PRO-10660 |  | DC Battery System - Award | 5d | 2026-01-14 | 2026-01-20 | PRO-10650 |  |  |  |  | 160.12d | 0d |  |
| PRO-10670 |  | DC Battery System - Approved Vendor Drawings | 20d | 2026-01-21 | 2026-02-17 | PRO-10660 |  |  |  |  | 235d | 0d |  |
| PRO-10690 |  | DC Battery System - Lead Time | 150d | 2026-01-21 | 2026-08-20 | PRO-10660 |  |  |  |  | 160.12d | 0d |  |
| PRO-10680 |  | DC Battery System - Fabrication Vendor Drawings | 30d | 2026-02-18 | 2026-03-31 | PRO-10670 |  |  |  |  | 669.88d | 70d |  |
| PRO-10700 |  | DC Battery System - Receive at Site | 5d | 2026-08-21 | 2026-08-27 | PRO-10690 |  |  |  |  | 160.12d | 239d |  |
|  | 94 | **DC Switchboard** |  | 2025-11-10 | 2026-11-06 |  |  |  |  |  |  |  |  |
| PRO-10410 |  | DC Switchboard - RFP Package | 5d | 2025-11-10 | 2025-11-14 | PM-1110 |  |  |  |  | 110.12d | 0d |  |
| PRO-10420 |  | DC Switchboard - Issue RFP | 5d | 2025-11-17 | 2025-11-21 | PRO-10410 |  |  |  |  | 110.12d | 0d |  |
| PRO-10430 |  | DC Switchboard - Proposals Due | 20d | 2025-11-24 | 2026-01-06 | PRO-10420 |  |  |  |  | 110.12d | 0d |  |
| PRO-10440 |  | DC Switchboard - Commercial Evaluation | 5d | 2026-01-07 | 2026-01-13 | PRO-10430 |  |  |  |  | 110.12d | 0d |  |
| PRO-10450 |  | DC Switchboard - Technical Evaluation | 5d | 2026-01-07 | 2026-01-13 | PRO-10440 SS |  |  |  |  | 110.12d | 0d |  |
| PRO-10460 |  | DC Switchboard - Award | 5d | 2026-01-14 | 2026-01-20 | PRO-10450 |  |  |  |  | 110.12d | 0d |  |
| PRO-10470 |  | DC Switchboard - Approved Vendor Drawings | 20d | 2026-01-21 | 2026-02-17 | PRO-10460 |  |  |  |  | 235d | 0d |  |
| PRO-10490 |  | DC Switchboard - Lead Time | 200d | 2026-01-21 | 2026-10-30 | PRO-10460 |  |  |  |  | 110.12d | 0d |  |
| PRO-10480 |  | DC Switchboard - Fabrication Vendor Drawings | 40d | 2026-02-18 | 2026-04-15 | PRO-10470 |  |  |  |  | 659.88d | 60d |  |
| PRO-10500 |  | DC Switchboard - Receive at Site | 5d | 2026-11-02 | 2026-11-06 | PRO-10490 |  |  |  |  | 110.12d | 189d |  |
|  | 95 | **Electric Generators** |  | 2025-06-23 | 2027-04-01 |  |  |  |  |  |  |  |  |
| PRO-10010 |  | Electric Generators - RFP Package | 5d | 2025-06-23 A | 2025-06-23 A | PM-1110 | 100% |  | 2025-11-10 | 2025-11-14 |  |  |  |
| PRO-10020 |  | Electric Generators - Issue RFP | 5d | 2025-06-23 A | 2025-06-23 A | PRO-10010 | 100% |  | 2025-11-17 | 2025-11-21 |  |  |  |
| PRO-10030 |  | Electric Generators - Proposals Due | 20d | 2025-06-23 A | 2025-06-23 A | PRO-10020 | 100% |  | 2025-11-24 | 2025-12-23 |  |  |  |
| PRO-10040 |  | Electric Generators - Commercial Evaluation | 5d | 2025-06-23 A | 2025-06-23 A | PRO-10030 | 100% |  | 2025-12-24 | 2025-12-31 |  |  |  |
| PRO-10050 |  | Electric Generators - Technical Evaluation | 5d | 2025-06-23 A | 2025-06-23 A | PRO-10040 SS | 100% |  | 2025-12-24 | 2025-12-31 |  |  |  |
| PRO-10060 |  | Electric Generators - Award | 5d | 2025-06-23 A | 2025-06-23 A | PRO-10050 | 100% |  | 2026-01-02 | 2026-01-08 |  |  |  |
| PRO-10090 |  | Electric Generators - Lead Time - Baker Hughes (Gen A) | 510d | 2025-06-23 A | 2027-02-08 | PRO-10060 | 40% | 307d | 2025-11-10 | 2027-11-11 | 19d | 0d | 2027-02-08 |
| PRO-12870 |  | Electric Generators - Lead Time - Baker Hughes (Gen B) | 510d | 2025-06-23 A | 2027-02-15 | PRO-10060 | 39% | 312d | 2025-11-10 | 2027-11-11 | 23d | 0d | 2027-02-15 |
| PRO-10070 |  | Electric Generators - Approved Vendor Drawings | 20d | 2025-11-10 | 2025-12-09 | PRO-10060 |  |  |  |  | 275d | 0d |  |
| PRO-10080 |  | Electric Generators - Fabrication Vendor Drawings | 60d | 2025-12-10 | 2026-03-17 | PRO-10070 |  |  |  |  | 679.88d | 80d |  |
| PRO-10100 |  | Electric Generators - Receive at Site - Baker Hughes (Gen A) | 33d | 2027-02-09 | 2027-03-25 | PRO-10090 |  |  |  |  | 19d | 0d | 2027-03-25 |
| PRO-12880 |  | Electric Generators - Receive at Site - Baker Hughes (Gen B) | 32d | 2027-02-16 | 2027-04-01 | PRO-12870 |  |  |  |  | 23d | 0d | 2027-04-01 |

| ID | WBS | Activity | Duration | Start | Finish | Predecessors | Total float | Free float |
| --- | --- | --- | --- | --- | --- | --- | --- | --- |
|  | 96 | **Fire Protection Pumps** |  | 2025-11-10 | 2026-09-11 |  |  |  |
| PRO-9210 |  | Fire Protection Pumps - RFP Package | 5d | 2025-11-10 | 2025-11-14 | PM-1110 | 160d | 0d |
| PRO-9220 |  | Fire Protection Pumps - Issue RFP | 5d | 2025-11-17 | 2025-11-21 | PRO-9210 | 160d | 0d |
| PRO-9230 |  | Fire Protection Pumps - Proposals Due | 20d | 2025-11-24 | 2026-01-06 | PRO-9220 | 160d | 0d |
| PRO-9240 |  | Fire Protection Pumps - Commercial Evaluation | 5d | 2026-01-07 | 2026-01-13 | PRO-9230 | 160d | 0d |
| PRO-9250 |  | Fire Protection Pumps - Technical Evaluation | 5d | 2026-01-07 | 2026-01-13 | PRO-9240 SS | 160d | 0d |
| PRO-9260 |  | Fire Protection Pumps - Award | 5d | 2026-01-14 | 2026-01-20 | PRO-9250 | 160d | 0d |
| PRO-9270 |  | Fire Protection Pumps - Approved Vendor Drawings | 20d | 2026-01-21 | 2026-02-17 | PRO-9260 | 235d | 0d |
| PRO-9290 |  | Fire Protection Pumps - Lead Time | 160d | 2026-01-21 | 2026-09-03 | PRO-9260 | 160d | 0d |
| PRO-9280 |  | Fire Protection Pumps - Fabrication Vendor Drawings | 30d | 2026-02-18 | 2026-03-31 | PRO-9270 | 669.88d | 70d |
| PRO-9300 |  | Fire Protection Pumps - Receive at Site | 5d | 2026-09-04 | 2026-09-11 | PRO-9290 | 160d | 156d |
|  | 97 | **Generator Dry Air Cooler** |  | 2025-11-10 | 2027-01-21 |  |  |  |
| PRO-7610 |  | Generator Dry Air Cooler - RFP Package | 5d | 2025-11-10 | 2025-11-14 | PM-1110 | 70d | 0d |
| PRO-7620 |  | Generator Dry Air Cooler - Issue RFP | 5d | 2025-11-17 | 2025-11-21 | PRO-7610 | 70d | 0d |
| PRO-7630 |  | Generator Dry Air Cooler - Proposals Due | 20d | 2025-11-24 | 2026-01-06 | PRO-7620 | 70d | 0d |
| PRO-7640 |  | Generator Dry Air Cooler - Commercial Evaluation | 5d | 2026-01-07 | 2026-01-13 | PRO-7630 | 70d | 0d |
| PRO-7650 |  | Generator Dry Air Cooler - Technical Evaluation | 5d | 2026-01-07 | 2026-01-13 | PRO-7640 SS | 70d | 0d |
| PRO-7660 |  | Generator Dry Air Cooler - Award | 5d | 2026-01-14 | 2026-01-20 | PRO-7650 | 70d | 0d |
| PRO-7670 |  | Generator Dry Air Cooler - Approved Vendor Drawings | 20d | 2026-01-21 | 2026-02-17 | PRO-7660 | 235d | 0d |
| PRO-7690 |  | Generator Dry Air Cooler - Lead Time | 250d | 2026-01-21 | 2027-01-14 | PRO-7660 | 70d | 0d |
| PRO-7680 |  | Generator Dry Air Cooler - Fabrication Vendor Drawings | 50d | 2026-02-18 | 2026-04-29 | PRO-7670 | 649.88d | 50d |
| PRO-7700 |  | Generator Dry Air Cooler - Receive at Site | 5d | 2027-01-15 | 2027-01-21 | PRO-7690 | 70d | 66d |
|  | 99 | **Oil Water Separator and Pump** |  | 2026-01-16 | 2027-03-01 |  |  |  |
| PRO-11510 |  | Oil Water Separator and Pump - RFP Package | 5d | 2026-01-16 | 2026-01-22 | ME1465 | 43d | 0d |
| PRO-11520 |  | Oil Water Separator and Pump - Issue RFP | 5d | 2026-01-23 | 2026-01-29 | PRO-11510 | 43d | 0d |
| PRO-11530 |  | Oil Water Separator and Pump - Proposals Due | 20d | 2026-01-30 | 2026-02-26 | PRO-11520 | 43d | 0d |
| PRO-11540 |  | Oil Water Separator and Pump - Commercial Evaluation | 5d | 2026-02-27 | 2026-03-05 | PRO-11530 | 43d | 0d |
| PRO-11550 |  | Oil Water Separator and Pump - Technical Evaluation | 5d | 2026-02-27 | 2026-03-05 | PRO-11540 SS | 43d | 0d |
| PRO-11560 |  | Oil Water Separator and Pump - Award | 5d | 2026-03-06 | 2026-03-12 | PRO-11550 | 43d | 0d |
| PRO-11570 |  | Oil Water Separator and Pump - Approved Vendor Drawings | 20d | 2026-03-13 | 2026-04-10 | PRO-11560 | 173d | 0d |
| PRO-11590 |  | Oil Water Separator and Pump - Lead Time | 240d | 2026-03-13 | 2027-02-22 | PRO-11560 | 43d | 0d |
| PRO-11580 |  | Oil Water Separator and Pump - Fabrication Vendor Drawings | 50d | 2026-04-13 | 2026-06-22 | PRO-11570 | 612.88d | 13d |
| PRO-11600 |  | Oil Water Separator and Pump - Receive at Site | 5d | 2027-02-23 | 2027-03-01 | PRO-11590 | 43d | 39d |

| ID | WBS | Activity | Duration | Start | Finish | Predecessors | Complete | Remaining | Planned start | Planned finish | Total float | Free float | Expected finish |
| --- | --- | --- | --- | --- | --- | --- | --- | --- | --- | --- | --- | --- | --- |
|  | 100 | **ORC Control System** |  | 2025-11-10 | 2026-11-06 |  |  |  |  |  |  |  |  |
| PRO-12310 |  | ORC Control System - RFP Package | 5d | 2025-11-10 | 2025-11-14 | PM-1110 |  |  |  |  | 150d | 0d |  |
| PRO-12320 |  | ORC Control System - Issue RFP | 5d | 2025-11-17 | 2025-11-21 | PRO-12310 |  |  |  |  | 150d | 0d |  |
| PRO-12330 |  | ORC Control System - Proposals Due | 20d | 2025-11-24 | 2026-01-06 | PRO-12320 |  |  |  |  | 150d | 0d |  |
| PRO-12340 |  | ORC Control System - Commercial Evaluation | 5d | 2026-01-07 | 2026-01-13 | PRO-12330 |  |  |  |  | 150d | 0d |  |
| PRO-12350 |  | ORC Control System - Technical Evaluation | 5d | 2026-01-07 | 2026-01-13 | PRO-12340 SS |  |  |  |  | 150d | 0d |  |
| PRO-12360 |  | ORC Control System - Award | 5d | 2026-01-14 | 2026-01-20 | PRO-12350 |  |  |  |  | 150d | 0d |  |
| PRO-12370 |  | ORC Control System - Approved Vendor Drawings | 20d | 2026-01-21 | 2026-02-17 | PRO-12360 |  |  |  |  | 235d | 0d |  |
| PRO-12390 |  | ORC Control System - Lead Time | 200d | 2026-01-21 | 2026-10-30 | PRO-12360 |  |  |  |  | 150d | 0d |  |
| PRO-12380 |  | ORC Control System - Fabrication Vendor Drawings | 40d | 2026-02-18 | 2026-04-15 | PRO-12370 |  |  |  |  | 659.88d | 60d |  |
| PRO-12400 |  | ORC Control System - Receive at Site | 5d | 2026-11-02 | 2026-11-06 | PRO-12390 |  |  |  |  | 150d | 124d |  |
|  | 101 | **ORC Turbines** |  | 2025-09-23 | 2027-07-23 |  |  |  |  |  |  |  |  |
| PRO-11010 |  | ORC Turbines - RFP Package | 5d | 2025-09-23 A | 2025-09-23 A | PM-1110 | 100% |  | 2025-10-06 | 2025-10-10 |  |  |  |
| PRO-11020 |  | ORC Turbines - Issue RFP | 5d | 2025-09-23 A | 2025-09-23 A | PRO-11010 | 100% |  | 2025-10-13 | 2025-10-17 |  |  |  |
| PRO-11030 |  | ORC Turbines - Proposals Due | 20d | 2025-09-23 A | 2025-09-23 A | PRO-11020 | 100% |  | 2025-10-20 | 2025-11-14 |  |  |  |
| PRO-11040 |  | ORC Turbines - Commercial Evaluation | 5d | 2025-09-23 A | 2025-09-23 A | PRO-11030 | 100% |  | 2025-11-17 | 2025-11-21 |  |  |  |
| PRO-11050 |  | ORC Turbines - Technical Evaluation | 5d | 2025-09-23 A | 2025-09-23 A | PRO-11040 SS | 100% |  | 2025-11-17 | 2025-11-21 |  |  |  |
| PRO-11060 |  | ORC Turbines - Award | 5d | 2025-09-23 A | 2025-09-23 A | PRO-11050 | 100% |  | 2025-11-24 | 2025-12-02 |  |  |  |
| PRO-11090 |  | ORC Turbines - Lead Time - 4A (Turboden) | 500d | 2025-09-23 A | 2027-04-02 | PRO-11060 | 31% | 345d | 2025-12-03 | 2027-11-18 | 30d | 0d | 2027-04-02 |
| PRO-12850 |  | ORC Turbines - Lead Time - 4B (Baker Hughes) | 500d | 2025-09-23 A | 2027-07-22 | PRO-11060 | 15% | 423d | 2025-12-03 | 2027-11-18 | -48d | 0d | 2027-07-22 |
| PRO-11070 |  | ORC Turbines - Approved Vendor Drawings | 20d | 2025-11-10 | 2025-12-09 | PRO-11060 |  |  |  |  | 275d | 0d |  |
| PRO-11080 |  | ORC Turbines - Fabrication Vendor Drawings | 60d | 2025-12-10 | 2026-03-17 | PRO-11070 |  |  |  |  | 679.88d | 80d |  |
| PRO-11100 |  | ORC Turbines - Receive at Site - 4A | 0d | 2027-04-05 | 2027-04-05 | PRO-11090 |  |  |  |  | 30d | 0d | 2027-03-25 |
| PRO-12860 |  | ORC Turbines - Receive at Site - 4B | 0d | 2027-07-23 | 2027-07-23 | PRO-12850 |  |  |  |  | -48d | 0d | 2027-04-01 |

| ID | WBS | Activity | Duration | Start | Finish | Predecessors | Total float | Free float |
| --- | --- | --- | --- | --- | --- | --- | --- | --- |
|  | 102 | **Panel Boards** |  | 2025-11-10 | 2026-08-27 |  |  |  |
| PRO-11310 |  | Panel Boards - RFP Package | 5d | 2025-11-10 | 2025-11-14 | PM-1110 | 160.12d | 0d |
| PRO-11320 |  | Panel Boards - Issue RFP | 5d | 2025-11-17 | 2025-11-21 | PRO-11310 | 160.12d | 0d |
| PRO-11330 |  | Panel Boards - Proposals Due | 20d | 2025-11-24 | 2026-01-06 | PRO-11320 | 160.12d | 0d |
| PRO-11340 |  | Panel Boards - Commercial Evaluation | 5d | 2026-01-07 | 2026-01-13 | PRO-11330 | 160.12d | 0d |
| PRO-11350 |  | Panel Boards - Technical Evaluation | 5d | 2026-01-07 | 2026-01-13 | PRO-11340 SS | 160.12d | 0d |
| PRO-11360 |  | Panel Boards - Award | 5d | 2026-01-14 | 2026-01-20 | PRO-11350 | 160.12d | 0d |
| PRO-11370 |  | Panel Boards - Approved Vendor Drawings | 20d | 2026-01-21 | 2026-02-17 | PRO-11360 | 235d | 0d |
| PRO-11390 |  | Panel Boards - Lead Time | 150d | 2026-01-21 | 2026-08-20 | PRO-11360 | 160.12d | 0d |
| PRO-11380 |  | Panel Boards - Fabrication Vendor Drawings | 30d | 2026-02-18 | 2026-03-31 | PRO-11370 | 669.88d | 70d |
| PRO-11400 |  | Panel Boards - Receive at Site | 5d | 2026-08-21 | 2026-08-27 | PRO-11390 | 160.12d | 239d |
|  | 103 | **Turbine Control System** |  | 2025-11-10 | 2026-11-06 |  |  |  |
| PRO-11710 |  | Turbine Control System - RFP Package | 5d | 2025-11-10 | 2025-11-14 | PM-1110 | 150d | 0d |
| PRO-11720 |  | Turbine Control System - Issue RFP | 5d | 2025-11-17 | 2025-11-21 | PRO-11710 | 150d | 0d |
| PRO-11730 |  | Turbine Control System - Proposals Due | 20d | 2025-11-24 | 2026-01-06 | PRO-11720 | 150d | 0d |
| PRO-11740 |  | Turbine Control System - Commercial Evaluation | 5d | 2026-01-07 | 2026-01-13 | PRO-11730 | 150d | 0d |
| PRO-11750 |  | Turbine Control System - Technical Evaluation | 5d | 2026-01-07 | 2026-01-13 | PRO-11740 SS | 150d | 0d |
| PRO-11760 |  | Turbine Control System - Award | 5d | 2026-01-14 | 2026-01-20 | PRO-11750 | 150d | 0d |
| PRO-11770 |  | Turbine Control System - Approved Vendor Drawings | 20d | 2026-01-21 | 2026-02-17 | PRO-11760 | 235d | 0d |
| PRO-11790 |  | Turbine Control System - Lead Time | 200d | 2026-01-21 | 2026-10-30 | PRO-11760 | 150d | 0d |
| PRO-11780 |  | Turbine Control System - Fabrication Vendor Drawings | 40d | 2026-02-18 | 2026-04-15 | PRO-11770 | 659.88d | 60d |
| PRO-11800 |  | Turbine Control System - Receive at Site | 5d | 2026-11-02 | 2026-11-06 | PRO-11790 | 150d | 124d |
|  | 104 | **UPS** |  | 2025-11-10 | 2026-11-06 |  |  |  |
| PRO-12510 |  | UPS - RFP Package | 5d | 2025-11-10 | 2025-11-14 | PM-1110 | 110.12d | 0d |
| PRO-12520 |  | UPS - Issue RFP | 5d | 2025-11-17 | 2025-11-21 | PRO-12510 | 110.12d | 0d |
| PRO-12530 |  | UPS - Proposals Due | 20d | 2025-11-24 | 2026-01-06 | PRO-12520 | 110.12d | 0d |
| PRO-12540 |  | UPS - Commercial Evaluation | 5d | 2026-01-07 | 2026-01-13 | PRO-12530 | 110.12d | 0d |
| PRO-12550 |  | UPS - Technical Evaluation | 5d | 2026-01-07 | 2026-01-13 | PRO-12540 SS | 110.12d | 0d |
| PRO-12560 |  | UPS - Award | 5d | 2026-01-14 | 2026-01-20 | PRO-12550 | 110.12d | 0d |
| PRO-12570 |  | UPS - Approved Vendor Drawings | 20d | 2026-01-21 | 2026-02-17 | PRO-12560 | 235d | 0d |
| PRO-12590 |  | UPS - Lead Time | 200d | 2026-01-21 | 2026-10-30 | PRO-12560 | 110.12d | 0d |
| PRO-12580 |  | UPS - Fabrication Vendor Drawings | 40d | 2026-02-18 | 2026-04-15 | PRO-12570 | 659.88d | 60d |
| PRO-12600 |  | UPS - Receive at Site | 5d | 2026-11-02 | 2026-11-06 | PRO-12590 | 110.12d | 189d |

| ID | WBS | Activity | Duration | Start | Finish | Predecessors | Total float | Free float |
| --- | --- | --- | --- | --- | --- | --- | --- | --- |
|  | 105 | **Vapor Recovery System** |  | 2026-01-28 | 2026-12-30 |  |  |  |
| PRO-11410 |  | Vapor Recovery System - RFP Package | 5d | 2026-01-28 | 2026-02-03 | ME2865 | 85d | 0d |
| PRO-11420 |  | Vapor Recovery System - Issue RFP | 5d | 2026-02-04 | 2026-02-10 | PRO-11410 | 85d | 0d |
| PRO-11430 |  | Vapor Recovery System - Proposals Due | 20d | 2026-02-11 | 2026-03-10 | PRO-11420 | 85d | 0d |
| PRO-11440 |  | Vapor Recovery System - Commercial Evaluation | 5d | 2026-03-11 | 2026-03-17 | PRO-11430 | 85d | 0d |
| PRO-11450 |  | Vapor Recovery System - Technical Evaluation | 5d | 2026-03-11 | 2026-03-17 | PRO-11440 SS | 85d | 0d |
| PRO-11460 |  | Vapor Recovery System - Award | 5d | 2026-03-18 | 2026-03-24 | PRO-11450 | 85d | 0d |
| PRO-11470 |  | Vapor Recovery System - Approved Vendor Drawings | 20d | 2026-03-25 | 2026-04-22 | PRO-11460 | 165d | 0d |
| PRO-11490 |  | Vapor Recovery System - Lead Time | 190d | 2026-03-25 | 2026-12-22 | PRO-11460 | 85d | 0d |
| PRO-11480 |  | Vapor Recovery System - Fabrication Vendor Drawings | 40d | 2026-04-23 | 2026-06-18 | PRO-11470 | 614.88d | 15d |
| PRO-11500 |  | Vapor Recovery System - Receive at Site | 5d | 2026-12-23 | 2026-12-30 | PRO-11490 | 85d | 81d |
|  | 36 | **Electrical - HV Sub (Subcontract)** |  | 2026-02-27 | 2027-02-15 |  |  |  |
| PRO-12890 |  | HV Sub (Subcontract) - RFP Package | 5d | 2026-02-27 | 2026-03-05 | EL4145 | 113d | 0d |
| PRO-12900 |  | HV Sub (Subcontract) - Issue RFP | 5d | 2026-03-06 | 2026-03-12 | PRO-12890 | 113d | 0d |
| PRO-12910 |  | HV Sub (Subcontract) - Proposals Due | 20d | 2026-03-13 | 2026-04-10 | PRO-12900 | 113d | 0d |
| PRO-12920 |  | HV Sub (Subcontract) - Commercial Evaluation | 5d | 2026-04-13 | 2026-04-17 | PRO-12910 | 113d | 0d |
| PRO-12930 |  | HV Sub (Subcontract) - Technical Evaluation | 5d | 2026-04-13 | 2026-04-17 | PRO-12920 SS | 113d | 0d |
| PRO-12940 |  | HV Sub (Subcontract) - Award | 5d | 2026-04-20 | 2026-04-24 | PRO-12930 | 113d | 0d |
| PRO-12950 |  | HV Sub (Subcontract) - Approved Vendor Drawings | 20d | 2026-04-27 | 2026-05-22 | PRO-12940 | 258d | 0d |
| PRO-12970 |  | HV Sub (Subcontract) - Lead Time | 200d | 2026-04-27 | 2027-02-08 | PRO-12940 | 113d | 0d |
| PRO-12960 |  | HV Sub (Subcontract) - Fabrication Vendor Drawings | 40d | 2026-05-26 | 2026-07-20 | PRO-12950 | 258d | 337d |
| PRO-12980 |  | HV Sub (Subcontract) - Receive at Site | 5d | 2027-02-09 | 2027-02-15 | PRO-12970 | 113d | 192d |
|  | 37 | **ISO Bus** |  | 2026-02-27 | 2027-02-15 |  |  |  |
| PRO-12990 |  | ISO Bus - RFP Package | 5d | 2026-02-27 | 2026-03-05 | EL3985 | 113d | 0d |
| PRO-13000 |  | ISO Bus - Issue RFP | 5d | 2026-03-06 | 2026-03-12 | PRO-12990 | 113d | 0d |
| PRO-13010 |  | ISO Bus - Proposals Due | 20d | 2026-03-13 | 2026-04-10 | PRO-13000 | 113d | 0d |
| PRO-13020 |  | ISO Bus - Commercial Evaluation | 5d | 2026-04-13 | 2026-04-17 | PRO-13010 | 113d | 0d |
| PRO-13030 |  | ISO Bus - Technical Evaluation | 5d | 2026-04-13 | 2026-04-17 | PRO-13020 SS | 113d | 0d |
| PRO-13040 |  | ISO Bus - Award | 5d | 2026-04-20 | 2026-04-24 | PRO-13030 | 113d | 0d |
| PRO-13050 |  | ISO Bus - Approved Vendor Drawings | 20d | 2026-04-27 | 2026-05-22 | PRO-13040 | 258d | 0d |
| PRO-13070 |  | ISO Bus - Lead Time | 200d | 2026-04-27 | 2027-02-08 | PRO-13040 | 113d | 0d |
| PRO-13060 |  | ISO Bus - Fabrication Vendor Drawings | 40d | 2026-05-26 | 2026-07-20 | PRO-13050 | 258d | 337d |
| PRO-13080 |  | ISO Bus - Receive at Site | 5d | 2027-02-09 | 2027-02-15 | PRO-13070 | 113d | 192d |

| ID | WBS | Activity | Duration | Start | Finish | Predecessors | Total float | Free float |
| --- | --- | --- | --- | --- | --- | --- | --- | --- |
|  | 38 | **Generator Breaker (ISO Brk)** |  | 2026-02-27 | 2027-02-15 |  |  |  |
| PRO-13090 |  | Generator Breaker (ISO Brk) - RFP Package | 5d | 2026-02-27 | 2026-03-05 | EL4155 | 113d | 0d |
| PRO-13100 |  | Generator Breaker (ISO Brk) - Issue RFP | 5d | 2026-03-06 | 2026-03-12 | PRO-13090 | 113d | 0d |
| PRO-13110 |  | Generator Breaker (ISO Brk) - Proposals Due | 20d | 2026-03-13 | 2026-04-10 | PRO-13100 | 113d | 0d |
| PRO-13120 |  | Generator Breaker (ISO Brk) - Commercial Evaluation | 5d | 2026-04-13 | 2026-04-17 | PRO-13110 | 113d | 0d |
| PRO-13130 |  | Generator Breaker (ISO Brk) - Technical Evaluation | 5d | 2026-04-13 | 2026-04-17 | PRO-13120 SS | 113d | 0d |
| PRO-13140 |  | Generator Breaker (ISO Brk) - Award | 5d | 2026-04-20 | 2026-04-24 | PRO-13130 | 113d | 0d |
| PRO-13150 |  | Generator Breaker (ISO Brk) - Approved Vendor Drawings | 20d | 2026-04-27 | 2026-05-22 | PRO-13140 | 258d | 0d |
| PRO-13170 |  | Generator Breaker (ISO Brk) - Lead Time | 200d | 2026-04-27 | 2027-02-08 | PRO-13140 | 113d | 0d |
| PRO-13160 |  | Generator Breaker (ISO Brk) - Fabrication Vendor Drawings | 40d | 2026-05-26 | 2026-07-20 | PRO-13150 | 258d | 337d |
| PRO-13180 |  | Generator Breaker (ISO Brk) - Receive at Site | 5d | 2027-02-09 | 2027-02-15 | PRO-13170 | 113d | 192d |
|  | 39 | **Cable Bus** |  | 2026-03-20 | 2027-03-08 |  |  |  |
| PRO-13190 |  | Cable Bus - RFP Package | 5d | 2026-03-20 | 2026-03-26 | EL4235 | 98d | 0d |
| PRO-13200 |  | Cable Bus - Issue RFP | 5d | 2026-03-27 | 2026-04-02 | PRO-13190 | 98d | 0d |
| PRO-13210 |  | Cable Bus - Proposals Due | 20d | 2026-04-06 | 2026-05-01 | PRO-13200 | 98d | 0d |
| PRO-13220 |  | Cable Bus - Commercial Evaluation | 5d | 2026-05-04 | 2026-05-08 | PRO-13210 | 98d | 0d |
| PRO-13230 |  | Cable Bus - Technical Evaluation | 5d | 2026-05-04 | 2026-05-08 | PRO-13220 SS | 98d | 0d |
| PRO-13240 |  | Cable Bus - Award | 5d | 2026-05-11 | 2026-05-15 | PRO-13230 | 98d | 0d |
| PRO-13250 |  | Cable Bus - Approved Vendor Drawings | 20d | 2026-05-18 | 2026-06-15 | PRO-13240 | 243d | 0d |
| PRO-13270 |  | Cable Bus - Lead Time | 200d | 2026-05-18 | 2027-03-01 | PRO-13240 | 98d | 0d |
| PRO-13260 |  | Cable Bus - Fabrication Vendor Drawings | 40d | 2026-06-16 | 2026-08-10 | PRO-13250 | 243d | 322d |
| PRO-13280 |  | Cable Bus - Receive at Site | 5d | 2027-03-02 | 2027-03-08 | PRO-13270 | 98d | 177d |
|  | 40 | **Electrical Heat Trace** |  | 2026-06-05 | 2026-12-01 |  |  |  |
| PRO-13290 |  | Electrical Heat Trace - RFP Package | 5d | 2026-06-05 | 2026-06-11 | PI0104 | 165d | 0d |
| PRO-13300 |  | Electrical Heat Trace - Issue RFP | 5d | 2026-06-12 | 2026-06-18 | PRO-13290 | 165d | 0d |
| PRO-13310 |  | Electrical Heat Trace - Proposals Due | 20d | 2026-06-19 | 2026-07-16 | PRO-13300 | 165d | 0d |
| PRO-13320 |  | Electrical Heat Trace - Commercial Evaluation | 5d | 2026-07-17 | 2026-07-23 | PRO-13310 | 165d | 0d |
| PRO-13330 |  | Electrical Heat Trace - Technical Evaluation | 5d | 2026-07-17 | 2026-07-23 | PRO-13320 SS | 165d | 0d |
| PRO-13340 |  | Electrical Heat Trace - Award | 5d | 2026-07-24 | 2026-07-30 | PRO-13330 | 165d | 0d |
| PRO-13350 |  | Electrical Heat Trace - Approved Vendor Drawings | 10d | 2026-07-31 | 2026-08-13 | PRO-13340 | 220d | 0d |
| PRO-13370 |  | Electrical Heat Trace - Lead Time | 80d | 2026-07-31 | 2026-11-20 | PRO-13340 | 165d | 0d |
| PRO-13360 |  | Electrical Heat Trace - Fabrication Vendor Drawings | 20d | 2026-08-14 | 2026-09-11 | PRO-13350 | 220d | 299d |
| PRO-13380 |  | Electrical Heat Trace - Receive at Site | 5d | 2026-11-23 | 2026-12-01 | PRO-13370 | 165d | 244d |

| ID | WBS | Activity | Duration | Start | Finish | Predecessors | Total float | Free float | Constraint | Calendar | Resources | x-Uncertainty | Text 1 | Text 2 |
| --- | --- | --- | --- | --- | --- | --- | --- | --- | --- | --- | --- | --- | --- | --- |
|  | 4 | **Construction** |  | 2025-11-10 | 2027-11-15 |  |  |  |  |  |  |  |  |  |
|  | 1 | **General** |  | 2025-11-10 | 2025-12-17 |  |  |  |  |  |  |  |  |  |
| CONST3890 |  | Site Prep | 30d | 2025-11-10 | 2025-12-17 | PM-1110 | -130d | 0d | start on or after 2025-11-03 | Fervo-6D-10H-Holidays | CONST- Civil Contractor [21 h] | H |  |  |
| CONST4440 |  | Underground Fire Water Loop Install (Cooler Front Area) | 18d | 2025-11-17 | 2025-12-10 | CONST3890 SS+6d | 488d | 0d |  | Fervo-6D-10H-Holidays | CONST- Civil Contractor [127 h] | H |  |  |
| CONST4450 |  | Establish Construction Roads, Laydowns, & Parking (Cooler Front Area) | 18d | 2025-11-24 | 2025-12-17 | CONST4440 SS+6d | 488d | 582.9d |  | Fervo-6D-10H-Holidays | CONST- Civil Contractor [85 h] | H |  |  |
|  | 2 | **Front Cooler Area** |  | 2026-01-10 | 2027-01-28 |  |  |  |  |  |  |  |  |  |
|  | 6 | **Civil Site Work** |  | 2026-01-10 | 2026-04-02 |  |  |  |  |  |  |  |  |  |
| CONST4680 |  | Piles Installation (Cooler Front Area) | 40d | 2026-01-10 | 2026-02-26 | PMC1010, CS1208 | -144d | 0d |  | Fervo-6D-10H-Holidays | CONST- Civil Contractor [85 h] | H |  |  |
| CONST4660 |  | Firewater Underground installation (Cooler Front Area) | 30d | 2026-02-26 | 2026-04-02 | CONST4680 | 399d | 493.9d |  | Fervo-6D-10H-Holidays | CONST- Foundation Contractor [63 h] | H |  |  |
|  | 1 | **Piling Installation** |  |  |  |  |  |  |  |  |  |  |  |  |
|  | 2 | **Foundation Installation** |  | 2026-02-26 | 2026-04-25 |  |  |  |  |  |  |  |  |  |
| CONST4300 |  | Foundation Install - North Area ACC | 48d | 2026-02-26 | 2026-04-25 | CONST4680, CS1168, CS1048 | -59d | 0d |  | Fervo-6D-10H-Holidays | CONST- Foundation Contractor [1540 h] | H |  |  |
| CONST4550 |  | Foundation Install - South Area ACC | 48d | 2026-02-26 | 2026-04-25 | CONST4300 SS | -59d | 0d |  | Fervo-6D-10H-Holidays | CONST- Foundation Contractor [513 h] | H |  |  |
|  | 3 | **Structural Steel Installation** |  | 2026-04-25 | 2026-07-17 |  |  |  |  |  |  |  |  |  |
| CONST4330 |  | Structural Steel Install - South Area ACC | 48d | 2026-04-25 | 2026-06-22 | CONST4550 | -59d | 0d |  | Fervo-6D-10H-Holidays | CONST- Steel Contractor [504 h] | H | Steel |  |
| CONST4310 |  | Structural Steel Install - North Area ACC | 48d | 2026-05-21 | 2026-07-17 | CONST4300, PRO-12840 | -42.9d | 14.1d |  | Fervo-6D-10H-Holidays | CONST- Steel Contractor [756 h] | H | Steel |  |
| CONST4320 |  | Structural Steel Install - Vapor Header Support | 6d | 2026-06-22 | 2026-06-29 | CONST4300, CONST4310 SS+10d, CONST4330, CONST4550 | -59d | 0d |  | Fervo-6D-10H-Holidays | CONST- Steel Contractor [756 h] | H | Steel |  |
|  | 7 | **Equipment Installation** |  | 2026-06-29 | 2026-11-13 |  |  |  |  |  |  |  |  |  |
| CONST4520 |  | Equipment Install- ACC Modules | 30d | 2026-06-29 | 2026-08-04 | CONST4300, CONST4320, PRO-2800 FF+20d | -59d | 0d |  | Fervo-6D-10H-Holidays | CONST -Mechanical Contractor(s) [111 h] | H |  |  |
| CONST4510 |  | Equipment Install- Recuperator | 6d | 2026-08-04 | 2026-08-11 | CONST4300, CONST4320, CONST4520, PRO-2300 FF+20d | -59d | 0d |  | Fervo-6D-10H-Holidays | CONST -Mechanical Contractor(s) [111 h] | H |  |  |
| CONST4690 |  | Equipment Install- Others | 20d | 2026-10-21 | 2026-11-13 | CONST4550 FF, CONST4330 FF, CONST4320, CONST4540 | 151d | 0d |  | Fervo-6D-10H-Holidays | CONST -Mechanical Contractor(s) [221 h] | H |  |  |
|  | 1 | **Process Building (Main Structure)** |  |  |  |  |  |  |  |  |  |  |  |  |
|  | 3 | **Process Building (Main Structure)-1st Floor** |  |  |  |  |  |  |  |  |  |  |  |  |
|  | 2 | **Process Building (Main Structure)-2nd Floor** |  |  |  |  |  |  |  |  |  |  |  |  |
|  | 4 | **Process Building (Main Structure)-3rd Floor** |  |  |  |  |  |  |  |  |  |  |  |  |
|  | 1 | **Process Building (Main Structure)-4th Floor** |  |  |  |  |  |  |  |  |  |  |  |  |
|  | 5 | **Process Building (Main Structure)-5th Floor** |  |  |  |  |  |  |  |  |  |  |  |  |
|  | 2 | **Compressor Area** |  |  |  |  |  |  |  |  |  |  |  |  |
|  | 3 | **DMDS Tank Area** |  |  |  |  |  |  |  |  |  |  |  |  |
|  | 4 | **Slop Oil Tank Area** |  |  |  |  |  |  |  |  |  |  |  |  |
|  | 5 | **Electrical Equipment Install** |  |  |  |  |  |  |  |  |  |  |  |  |
|  | 4 | **Piping Installation** |  | 2026-08-04 | 2026-12-28 |  |  |  |  |  |  |  |  |  |
| CONST4350 |  | Piping Install - North Area ACC | 10d | 2026-08-04 | 2026-08-15 | CONST4310, CONST4300, CONST4520, PRO-2600 FF+20d | 251d | 100d |  | Fervo-6D-10H-Holidays | CONST-Piping Contractor [264 h] | H | Piping |  |
| CONST4360 |  | Piping Install - South Area ACC | 12d | 2026-08-11 | 2026-08-25 | CONST4330, CONST4550, CONST4510 | 237d | 0d |  | Fervo-6D-10H-Holidays | CONST-Piping Contractor [1056 h] | H | Piping |  |
| CONST4530 |  | Piping Install- Lower Vapor Tail Piping | 24d | 2026-08-11 | 2026-09-09 | CONST4300, CONST4320, CONST4510, PRO-12760 | 151d | 0d |  | Fervo-6D-10H-Holidays | CONST -Mechanical Contractor(s) [111 h] | H |  |  |
| CONST4540 |  | Piping Install- Tie in Upper Vapor Distribution Header | 36d | 2026-09-09 | 2026-10-21 | CONST4300, CONST4320, CONST4530 | 151d | 0d |  | Fervo-6D-10H-Holidays | CONST -Mechanical Contractor(s) [111 h] | H |  |  |
| CONST5530 |  | Piping Install- Install ACC Module Connection | 90d | 2026-09-09 | 2026-12-28 | CONST4530 | 159d | 0d |  | Fervo-6D-10H-Holidays | CONST -Mechanical Contractor(s) [111 h] | H |  |  |
| CONST5500 |  | Piping Install - Others | 24d | 2026-11-13 | 2026-12-14 | CONST4690, CONST4690 FF | 151d | 0d |  | Fervo-6D-10H-Holidays | CONST-Piping Contractor [1584 h] | H | Piping | Purge Gas Comp |

| ID | WBS | Activity | Duration | Start | Finish | Predecessors | Total float | Free float | Calendar | Resources | x-Uncertainty |
| --- | --- | --- | --- | --- | --- | --- | --- | --- | --- | --- | --- |
|  | 8 | **Equipment FPR** |  |  |  |  |  |  |  |  |  |
|  | 1 | **Process Building (Main Structure)** |  |  |  |  |  |  |  |  |  |
|  | 2 | **Compressor Area** |  |  |  |  |  |  |  |  |  |
|  | 3 | **DMDS Tank Area** |  |  |  |  |  |  |  |  |  |
|  | 4 | **Slop Oil Tank Area** |  |  |  |  |  |  |  |  |  |
|  | 11 | **Paint** |  | 2026-12-18 | 2027-01-05 |  |  |  |  |  |  |
| CONST4480 |  | Paint - Cooler Front Area | 12d | 2026-12-18 | 2027-01-05 | CONST4300 FF, CONST4310 FF, CONST4320 FF, CONST5500, CONST5530 FF+6d | 623.8d | 0d | Fervo-6D-10H-Holidays | CONST- Paint Contractor [18 h] | H |
|  | 9 | **Insulation** |  | 2027-01-05 | 2027-01-19 |  |  |  |  |  |  |
| CONST4630 |  | Insulation - Cooler Front Area | 12d | 2027-01-05 | 2027-01-19 | CONST4320 SF, CONST4300 FF, CONST4310 FF, CONST4320 FF, CONST4480 | 623.8d | 8d | Fervo-6D-10H-Holidays | CONST -Mechanical Contractor(s) [20 h] | H |
|  | 1 | **Process Building (Main Structure)** |  |  |  |  |  |  |  |  |  |
|  | 2 | **Compressor Area** |  |  |  |  |  |  |  |  |  |
|  | 3 | **DMDS Tank Area** |  |  |  |  |  |  |  |  |  |
|  | 4 | **Slop Oil Tank Area** |  |  |  |  |  |  |  |  |  |
|  | 12 | **Steel FPR** |  |  |  |  |  |  |  |  |  |
|  | 5 | **Electrical** |  | 2026-09-01 | 2027-01-14 |  |  |  |  |  |  |
| CONST4390 |  | Electrical - South Area ACC | 24d | 2026-09-01 | 2026-09-30 | CONST4360 FF+30d, CONST4550 FF, CONST4330 FF, CONST4360 | 237d | 0d | Fervo-6D-10H-Holidays | CONST- E&I Contractor [531 h] | H |
| CONST4380 |  | Electrical - North Area ACC | 24d | 2026-12-14 | 2027-01-14 | CONST4350, CONST4300 FF, CONST4310 FF, CONST4320 FF, CONST4300 SS, CONST4680, CONST4350 FF, CONST5500, CONST5530 FF+6d | 151d | 0d | Fervo-6D-10H-Holidays | CONST- E&I Contractor [531 h] | H |
|  | 10 | **Instrumentation** |  | 2026-09-16 | 2027-01-28 |  |  |  |  |  |  |
| CONST5560 |  | Instrumentation - South Area ACC | 24d | 2026-09-16 | 2026-10-14 | CONST4390 SS+12d | 237d | 86d | Fervo-6D-10H-Holidays | CONST- E&I Contractor [531 h] | H |
| CONST5570 |  | Instrumentation - North Area ACC | 24d | 2026-12-30 | 2027-01-28 | CONST4380 SS+12d | 151d | 0d | Fervo-6D-10H-Holidays | CONST- E&I Contractor [531 h] | H |
|  | 5 | **Front Main Area** |  | 2026-08-04 | 2027-10-06 |  |  |  |  |  |  |
|  | 6 | **Civil Site Work** |  | 2026-08-04 | 2026-10-07 |  |  |  |  |  |  |
| CONST3840 |  | Piles Installation (Main Front Area) | 30d | 2026-08-04 | 2026-09-09 | CONST4520, CS1208 | 129d | 0d | Fervo-6D-10H-Holidays | CONST- Civil Contractor [85 h] | H |
| CONST3778 |  | Firewater and monitor installation (Main Front Area) | 24d | 2026-09-09 | 2026-10-07 | PMC1010, CONST3840 | 243d | 337.9d | Fervo-6D-10H-Holidays | CONST- Foundation Contractor [63 h] | H |

| ID | WBS | Activity | Duration | Start | Finish | Predecessors | Total float | Free float | Calendar | Resources | x-Uncertainty | Text 1 |
| --- | --- | --- | --- | --- | --- | --- | --- | --- | --- | --- | --- | --- |
|  | 1 | **Piling Installation** |  |  |  |  |  |  |  |  |  |  |
|  | 2 | **Foundation Installation** |  | 2026-09-09 | 2026-11-04 |  |  |  |  |  |  |  |
| CONST3600 |  | Foundation Install - Generator A | 36d | 2026-09-09 | 2026-10-21 | CONST3840, CS2318 | 139d | 0d | Fervo-6D-10H-Holidays | CONST- Foundation Contractor [513 h] | H |  |
| CONST3610 |  | Foundation Install - Generator B | 36d | 2026-09-09 | 2026-10-21 | CONST3840 | 129d | 0d | Fervo-6D-10H-Holidays | CONST- Foundation Contractor [513 h] | H |  |
| CONST3620 |  | Foundation Install - GSU Transformer | 36d | 2026-09-09 | 2026-10-21 | CONST3840 | 149d | 0d | Fervo-6D-10H-Holidays | CONST- Foundation Contractor [1540 h] | H |  |
| CONST5510 |  | Foundation Install - Others | 36d | 2026-09-23 | 2026-11-04 | CONST3610 SS+12d, CONST3840 | 129d | 0d | Fervo-6D-10H-Holidays | CONST- Foundation Contractor [513 h] | H |  |
|  | 3 | **Structural Steel Installation** |  | 2026-10-21 | 2026-11-18 |  |  |  |  |  |  |  |
| CONST1310 |  | Structural Steel Install - GSU Transformer | 12d | 2026-10-21 | 2026-11-04 | CONST3620 | 149d | 159.9d | Fervo-6D-10H-Holidays | CONST- Steel Contractor [756 h] | H | Steel |
| CONST1330 |  | Structural Steel Install - Generator A | 12d | 2026-10-21 | 2026-11-04 | CONST3600 | 139d | 116.9d | Fervo-6D-10H-Holidays | CONST- Steel Contractor [504 h] | H | Steel |
| CONST1340 |  | Structural Steel Install - Generator B | 12d | 2026-10-21 | 2026-11-04 | CONST3610 | 149d | 126.9d | Fervo-6D-10H-Holidays | CONST- Steel Contractor [756 h] | H | Steel |
| CONST5520 |  | Structural Steel Install - Others | 12d | 2026-11-04 | 2026-11-18 | CONST5510 | 129d | 0d | Fervo-6D-10H-Holidays | CONST- Steel Contractor [756 h] | H | Steel |
|  | 7 | **Equipment Installation** |  | 2026-11-18 | 2027-05-28 |  |  |  |  |  |  |  |
| CONST3880 |  | Equipment Install- Heat Exchangers | 18d | 2026-11-18 | 2026-12-11 | CONST5520, PRO-1700 | 129d | 123.9d | Fervo-6D-10H-Holidays | CONST -Mechanical Contractor(s) [221 h] | H |  |
| CONST5540 |  | Equipment Install- Pumps | 12d | 2026-11-18 | 2026-12-04 | CONST5520, PRO-3800 | 135d | 129.9d | Fervo-6D-10H-Holidays | CONST -Mechanical Contractor(s) [221 h] | H |  |
| CONST2000 |  | Equipment Install- Generator A | 10d | 2027-03-29 | 2027-04-08 | CONST1330, CONST3600, PRO-10400, PRO-10100 | 22.1d | 0d | Fervo-6D-10H-Holidays | CONST -Mechanical Contractor(s) [111 h] | H |  |
| CONST3230 |  | Equipment Install- Generator B | 10d | 2027-04-09 | 2027-04-20 | CONST1340, CONST2000, PRO-10400, PRO-12880 | 22.1d | 0d | Fervo-6D-10H-Holidays | CONST -Mechanical Contractor(s) [111 h] | H |  |
| CONST5550 |  | Equipment Install- Others | 12d | 2027-04-27 | 2027-05-10 | CONST5520, PRO-1900 FF+20d, PRO-8400, PRO-8200, PRO-3500, PRO-9600, PRO-4300, PRO-8100, PRO-8700, PRO-9700, PRO-10300, PRO-10600, PRO-9300, PRO-7700, PRO-11600, PRO-11500, PRO-9900 | 5.1d | 0d | Fervo-6D-10H-Holidays | CONST -Mechanical Contractor(s) [221 h] | H |  |
| CONST3630 |  | Equipment Install- GSU Transformer | 10d | 2027-05-18 | 2027-05-28 | CONST1310, PRO-1100 FF+20d | -10.9d | 0d | Fervo-6D-10H-Holidays | CONST -Mechanical Contractor(s) [111 h] | H |  |
|  | 1 | **Process Building (Main Structure)** |  |  |  |  |  |  |  |  |  |  |
|  | 3 | **Process Building (Main Structure)-1st Floor** |  |  |  |  |  |  |  |  |  |  |
|  | 2 | **Process Building (Main Structure)-2nd Floor** |  |  |  |  |  |  |  |  |  |  |
|  | 4 | **Process Building (Main Structure)-3rd Floor** |  |  |  |  |  |  |  |  |  |  |
|  | 1 | **Process Building (Main Structure)-4th Floor** |  |  |  |  |  |  |  |  |  |  |
|  | 5 | **Process Building (Main Structure)-5th Floor** |  |  |  |  |  |  |  |  |  |  |
|  | 2 | **Compressor Area** |  |  |  |  |  |  |  |  |  |  |
|  | 3 | **DMDS Tank Area** |  |  |  |  |  |  |  |  |  |  |
|  | 4 | **Slop Oil Tank Area** |  |  |  |  |  |  |  |  |  |  |
|  | 5 | **Electrical Equipment Install** |  |  |  |  |  |  |  |  |  |  |
|  | 4 | **Piping Installation** |  | 2027-04-21 | 2027-08-14 |  |  |  |  |  |  |  |
| CONST1380 |  | Piping Install - Expander Piping | 66d | 2027-04-21 | 2027-07-07 | CONST2000, CONST3230, PRO-12680 | 436.9d | 33d | Fervo-6D-10H-Holidays | CONST-Piping Contractor [264 h] | H | Piping |
| CONST3760 |  | Piping Install - Interconnecting Piping | 66d | 2027-05-29 | 2027-08-14 | CONST1310, CONST3630, CONST3630 FF, CONST5540, CONST5550, CONST3880, PRO-7800, PRO-3600 FF+20d, PRO-3100 FF+20d, PRO-4200, PRO-4100, PRO-3700, PRO-9100 | 403.9d | 0d | Fervo-6D-10H-Holidays | CONST-Piping Contractor [2112 h] | H | Piping |

| ID | WBS | Activity | Duration | Start | Finish | Predecessors | Total float | Free float | Calendar | Resources | x-Uncertainty | Text 2 |
| --- | --- | --- | --- | --- | --- | --- | --- | --- | --- | --- | --- | --- |
|  | 8 | **Equipment FPR** |  |  |  |  |  |  |  |  |  |  |
|  | 1 | **Process Building (Main Structure)** |  |  |  |  |  |  |  |  |  |  |
|  | 2 | **Compressor Area** |  |  |  |  |  |  |  |  |  |  |
|  | 3 | **DMDS Tank Area** |  |  |  |  |  |  |  |  |  |  |
|  | 4 | **Slop Oil Tank Area** |  |  |  |  |  |  |  |  |  |  |
|  | 11 | **Paint** |  | 2027-08-16 | 2027-09-13 |  |  |  |  |  |  |  |
| CONST1760 |  | Paint - Main Front Area | 24d | 2027-08-16 | 2027-09-13 | CONST1380, CONST3760 | 403.9d | 0d | Fervo-6D-10H-Holidays | CONST- Paint Contractor [21 h] | H |  |
|  | 9 | **Insulation** |  | 2027-09-14 | 2027-10-06 |  |  |  |  |  |  |  |
| CONST3720 |  | Insulation - Main Front Area | 20d | 2027-09-14 | 2027-10-06 | CONST1760 | 403.9d | 0d | Fervo-6D-10H-Holidays | CONST -Mechanical Contractor(s) [20 h] | H |  |
|  | 1 | **Process Building (Main Structure)** |  |  |  |  |  |  |  |  |  |  |
|  | 2 | **Compressor Area** |  |  |  |  |  |  |  |  |  |  |
|  | 3 | **DMDS Tank Area** |  |  |  |  |  |  |  |  |  |  |
|  | 4 | **Slop Oil Tank Area** |  |  |  |  |  |  |  |  |  |  |
|  | 12 | **Steel FPR** |  |  |  |  |  |  |  |  |  |  |
|  | 5 | **Electrical** |  | 2027-04-09 | 2027-09-18 |  |  |  |  |  |  |  |
| CONST1410 |  | Electrical - Generator A | 48d | 2027-04-09 | 2027-06-04 | CONST2000, PRO-11100 | 32.1d | 0d | Fervo-6D-10H-Holidays | CONST- E&I Contractor [531 h] | H |  |
| CONST5620 |  | Electrical - Others | 48d | 2027-05-11 | 2027-07-06 | CONST3880, CONST5540, CONST5550, PRO-9400 FF+20d | 5.1d | 0d | Fervo-6D-10H-Holidays | CONST- E&I Contractor [531 h] | H |  |
| CONST1470 |  | Electrical - GSU Transformer | 48d | 2027-05-29 | 2027-07-24 | CONST3630 | -10.9d | 0d | Fervo-6D-10H-Holidays | CONST- E&I Contractor [354 h] | H | Purge Gas Comp |
| CONST5610 |  | Electrical - Generator B | 48d | 2027-07-23 | 2027-09-18 | CONST3230, PRO-12860 | -57d | 0d | Fervo-6D-10H-Holidays | CONST- E&I Contractor [531 h] | H |  |
|  | 10 | **Instrumentation** |  | 2027-05-07 | 2027-10-02 |  |  |  |  |  |  |  |
| CONST5580 |  | Instrumentation - Generator A | 36d | 2027-05-07 | 2027-06-18 | CONST1410 FF+12d, PRO-12400, PRO-11800 | 32.1d | 93d | Fervo-6D-10H-Holidays | CONST- E&I Contractor [531 h] | H |  |
| CONST5640 |  | Instrumentation - Others | 36d | 2027-06-09 | 2027-07-20 | CONST5620 FF+12d, PRO-3300 FF+20d, PRO-10000 | 5.1d | 66d | Fervo-6D-10H-Holidays | CONST- E&I Contractor [354 h] | H | Purge Gas Comp |
| CONST5600 |  | Instrumentation - GSU Transformer | 36d | 2027-06-28 | 2027-08-07 | CONST1470 FF+12d | -10.9d | 50d | Fervo-6D-10H-Holidays | CONST- E&I Contractor [531 h] | H |  |
| CONST5590 |  | Instrumentation - Generator B | 36d | 2027-08-20 | 2027-10-02 | CONST5610 FF+12d, PRO-12400, PRO-11800 | -57d | 3.9d | Fervo-6D-10H-Holidays | CONST- E&I Contractor [354 h] | H | Purge Gas Comp |

| ID | WBS | Activity | Duration | Start | Finish | Predecessors | Total float | Free float | Calendar | Resources | x-Uncertainty | Text 1 | Text 2 |
| --- | --- | --- | --- | --- | --- | --- | --- | --- | --- | --- | --- | --- | --- |
|  | 4 | **Back Cooler Area** |  | 2026-08-11 | 2027-06-25 |  |  |  |  |  |  |  |  |
|  | 6 | **Civil Site Work** |  | 2026-08-11 | 2026-11-02 |  |  |  |  |  |  |  |  |
| CONST5820 |  | Piles Installation (Cooler Back Area) | 40d | 2026-08-11 | 2026-09-28 | CONST4510, CS1208 | -59d | 0d | Fervo-6D-10H-Holidays | CONST- Civil Contractor [85 h] | H |  |  |
| CONST5810 |  | Firewater Underground installation (Cooler Back Area) | 30d | 2026-09-28 | 2026-11-02 | CONST5820 | 221d | 315.9d | Fervo-6D-10H-Holidays | CONST- Foundation Contractor [63 h] | H |  |  |
|  | 1 | **Piling Installation** |  |  |  |  |  |  |  |  |  |  |  |
|  | 2 | **Foundation Installation** |  | 2026-09-28 | 2026-12-16 |  |  |  |  |  |  |  |  |
| CONST5650 |  | Foundation Install - North Area ACC | 54d | 2026-09-28 | 2026-12-02 | CONST5820, CS2318 | -59d | 0d | Fervo-6D-10H-Holidays | CONST- Foundation Contractor [1540 h] | H |  |  |
| CONST5780 |  | Foundation Install - South Area ACC | 54d | 2026-10-12 | 2026-12-16 | CONST5650 SS+12d | 77d | 0d | Fervo-6D-10H-Holidays | CONST- Foundation Contractor [513 h] | H |  |  |
|  | 3 | **Structural Steel Installation** |  | 2026-12-02 | 2027-02-13 |  |  |  |  |  |  |  |  |
| CONST5660 |  | Structural Steel Install - North Area ACC | 48d | 2026-12-02 | 2027-01-30 | CONST5650 | 103d | 0d | Fervo-6D-10H-Holidays | CONST- Steel Contractor [756 h] | H | Steel |  |
| CONST5680 |  | Structural Steel Install - South Area ACC | 48d | 2026-12-16 | 2027-02-13 | CONST5780 | 77d | 0d | Fervo-6D-10H-Holidays | CONST- Steel Contractor [504 h] | H | Steel |  |
|  | 7 | **Equipment Installation** |  | 2026-12-02 | 2027-04-15 |  |  |  |  |  |  |  |  |
| CONST5750 |  | Equipment Install- ACC Modules | 30d | 2026-12-02 | 2027-01-09 | CONST5650, PRO-2800 FF+20d | -59d | 0d | Fervo-6D-10H-Holidays | CONST -Mechanical Contractor(s) [111 h] | H |  |  |
| CONST5830 |  | Equipment Install- Others | 20d | 2027-03-20 | 2027-04-15 | CONST5780 FF, CONST5680 FF, CONST5770 | 27d | 0d | Fervo-6D-10H-Holidays | CONST -Mechanical Contractor(s) [221 h] | H |  |  |
|  | 1 | **Process Building (Main Structure)** |  |  |  |  |  |  |  |  |  |  |  |
|  | 3 | **Process Building (Main Structure)-1st Floor** |  |  |  |  |  |  |  |  |  |  |  |
|  | 2 | **Process Building (Main Structure)-2nd Floor** |  |  |  |  |  |  |  |  |  |  |  |
|  | 4 | **Process Building (Main Structure)-3rd Floor** |  |  |  |  |  |  |  |  |  |  |  |
|  | 1 | **Process Building (Main Structure)-4th Floor** |  |  |  |  |  |  |  |  |  |  |  |
|  | 5 | **Process Building (Main Structure)-5th Floor** |  |  |  |  |  |  |  |  |  |  |  |
|  | 2 | **Compressor Area** |  |  |  |  |  |  |  |  |  |  |  |
|  | 3 | **DMDS Tank Area** |  |  |  |  |  |  |  |  |  |  |  |
|  | 4 | **Slop Oil Tank Area** |  |  |  |  |  |  |  |  |  |  |  |
|  | 5 | **Electrical Equipment Install** |  |  |  |  |  |  |  |  |  |  |  |
|  | 4 | **Piping Installation** |  | 2027-01-09 | 2027-05-25 |  |  |  |  |  |  |  |  |
| CONST5760 |  | Piping Install- Lower Vent Piping | 24d | 2027-01-09 | 2027-02-06 | CONST5650, CONST5750 | 27d | 0d | Fervo-6D-10H-Holidays | CONST -Mechanical Contractor(s) [111 h] | H |  |  |
| CONST5690 |  | Piping Install - North Area ACC | 10d | 2027-01-30 | 2027-02-11 | CONST5660, CONST5650, CONST5750 | 103d | 76d | Fervo-6D-10H-Holidays | CONST-Piping Contractor [264 h] | H | Piping |  |
| CONST5770 |  | Piping Install- Tie in Upper Vapor Header | 36d | 2027-02-06 | 2027-03-20 | CONST5650, CONST5760 | 27d | 0d | Fervo-6D-10H-Holidays | CONST -Mechanical Contractor(s) [111 h] | H |  |  |
| CONST5850 |  | Piping Install- Install ACC Module Connection | 90d | 2027-02-06 | 2027-05-25 | CONST5760 | 35d | 0d | Fervo-6D-10H-Holidays | CONST -Mechanical Contractor(s) [111 h] | H |  |  |
| CONST5700 |  | Piping Install - South Area ACC | 12d | 2027-02-13 | 2027-02-27 | CONST5680, CONST5780, CONST5650, CONST5750 | 83d | 0d | Fervo-6D-10H-Holidays | CONST-Piping Contractor [1056 h] | H | Piping |  |
| CONST5840 |  | Piping Install - Others | 24d | 2027-04-15 | 2027-05-13 | CONST5830, CONST5830 FF | 27d | 0d | Fervo-6D-10H-Holidays | CONST-Piping Contractor [1584 h] | H | Piping | Purge Gas Comp |

| ID | WBS | Activity | Duration | Start | Finish | Predecessors | Total float | Free float | Calendar | Resources | x-Uncertainty |
| --- | --- | --- | --- | --- | --- | --- | --- | --- | --- | --- | --- |
|  | 8 | **Equipment FPR** |  |  |  |  |  |  |  |  |  |
|  | 1 | **Process Building (Main Structure)** |  |  |  |  |  |  |  |  |  |
|  | 2 | **Compressor Area** |  |  |  |  |  |  |  |  |  |
|  | 3 | **DMDS Tank Area** |  |  |  |  |  |  |  |  |  |
|  | 4 | **Slop Oil Tank Area** |  |  |  |  |  |  |  |  |  |
|  | 11 | **Paint** |  | 2027-05-18 | 2027-06-02 |  |  |  |  |  |  |
| CONST5730 |  | Paint - Cooler Front Area | 12d | 2027-05-18 | 2027-06-02 | CONST5650 FF, CONST5660 FF, CONST5840, CONST5850 FF+6d | 499.8d | 0d | Fervo-6D-10H-Holidays | CONST- Paint Contractor [18 h] | H |
|  | 9 | **Insulation** |  | 2027-06-02 | 2027-06-16 |  |  |  |  |  |  |
| CONST5800 |  | Insulation - Cooler Front Area | 12d | 2027-06-02 | 2027-06-16 | CONST5650 FF, CONST5660 FF, CONST5730 | 499.8d | 8d | Fervo-6D-10H-Holidays | CONST -Mechanical Contractor(s) [20 h] | H |
|  | 1 | **Process Building (Main Structure)** |  |  |  |  |  |  |  |  |  |
|  | 2 | **Compressor Area** |  |  |  |  |  |  |  |  |  |
|  | 3 | **DMDS Tank Area** |  |  |  |  |  |  |  |  |  |
|  | 4 | **Slop Oil Tank Area** |  |  |  |  |  |  |  |  |  |
|  | 12 | **Steel FPR** |  |  |  |  |  |  |  |  |  |
|  | 5 | **Electrical** |  | 2027-03-06 | 2027-06-11 |  |  |  |  |  |  |
| CONST5720 |  | Electrical - South Area ACC | 24d | 2027-03-06 | 2027-04-06 | CONST5700 FF+30d, CONST5780 FF, CONST5680 FF, CONST5700 | 83d | 0d | Fervo-6D-10H-Holidays | CONST- E&I Contractor [531 h] | H |
| CONST5710 |  | Electrical - North Area ACC | 24d | 2027-05-13 | 2027-06-11 | CONST5690, CONST5650 FF, CONST5660 FF, CONST5650 SS, CONST5820, CONST5690 FF, CONST5840, CONST5850 FF+6d | 27d | 0d | Fervo-6D-10H-Holidays | CONST- E&I Contractor [531 h] | H |
|  | 10 | **Instrumentation** |  | 2027-03-20 | 2027-06-25 |  |  |  |  |  |  |
| CONST5870 |  | Instrumentation - South Area ACC | 24d | 2027-03-20 | 2027-04-20 | CONST5720 SS+12d | 83d | 56d | Fervo-6D-10H-Holidays | CONST- E&I Contractor [531 h] | H |
| CONST5860 |  | Instrumentation - North Area ACC | 24d | 2027-05-27 | 2027-06-25 | CONST5710 SS+12d | 27d | 0d | Fervo-6D-10H-Holidays | CONST- E&I Contractor [531 h] | H |
|  | 3 | **Back Main Area** |  | 2027-01-09 | 2027-11-15 |  |  |  |  |  |  |
|  | 6 | **Civil Site Work** |  | 2027-01-09 | 2027-02-06 |  |  |  |  |  |  |
| CONST5080 |  | Piles Installation (Main Back Area) | 12d | 2027-01-09 | 2027-01-23 | CONST5750, CS1208 | -59d | 0d | Fervo-6D-10H-Holidays | CONST- Civil Contractor [85 h] | H |
| CONST5060 |  | Firewater Underground installation (Main Back Area) | 12d | 2027-01-23 | 2027-02-06 | CONST5080 | 143d | 237.9d | Fervo-6D-10H-Holidays | CONST- Foundation Contractor [63 h] | H |

| ID | WBS | Activity | Duration | Start | Finish | Predecessors | Total float | Free float | Calendar | Resources | x-Uncertainty | Text 1 |
| --- | --- | --- | --- | --- | --- | --- | --- | --- | --- | --- | --- | --- |
|  | 1 | **Piling Installation** |  |  |  |  |  |  |  |  |  |  |
|  | 2 | **Foundation Installation** |  | 2027-01-23 | 2027-03-13 |  |  |  |  |  |  |  |
| CONST4700 |  | Foundation Install - PDC A - Area | 42d | 2027-01-23 | 2027-03-13 | CONST5080, CS2318 | -59d | 0d | Fervo-6D-10H-Holidays | CONST- Foundation Contractor [1540 h] | H |  |
| CONST4950 |  | Foundation Install - Liquid Storage Tanks Area | 42d | 2027-01-23 | 2027-03-13 | CONST4700 SS | 63d | 0d | Fervo-6D-10H-Holidays | CONST- Foundation Contractor [513 h] | H |  |
| CONST4970 |  | Foundation Install - PDC B - Area | 42d | 2027-01-23 | 2027-03-13 | CONST4700 SS | -57d | 0d | Fervo-6D-10H-Holidays | CONST- Foundation Contractor [1540 h] | H |  |
|  | 3 | **Structural Steel Installation** |  | 2027-03-13 | 2027-06-04 |  |  |  |  |  |  |  |
| CONST4710 |  | Structural Steel Install - PDC A - Area | 20d | 2027-03-13 | 2027-04-08 | CONST4700 | -59d | 0d | Fervo-6D-10H-Holidays | CONST- Steel Contractor [756 h] | H | Steel |
| CONST4720 |  | Structural Steel Install - PDC B - Area | 18d | 2027-03-13 | 2027-04-06 | CONST4970 | -57d | 2d | Fervo-6D-10H-Holidays | CONST- Steel Contractor [756 h] | H | Steel |
| CONST4730 |  | Structural Steel Install - Liquid Storage Tanks Area | 20d | 2027-03-13 | 2027-04-08 | CONST4950 | 63d | 0d | Fervo-6D-10H-Holidays | CONST- Steel Contractor [504 h] | H | Steel |
| CONST5910 |  | Erect PDC Building | 48d | 2027-04-08 | 2027-06-04 | CONST4720, CONST4710, PRO-3000 | -59d | 0d | Fervo-6D-10H-Holidays | CONST- Steel Contractor [756 h] | H | Steel |
|  | 7 | **Equipment Installation** |  | 2027-04-08 | 2027-10-11 |  |  |  |  |  |  |  |
| CONST5090 |  | Equipment Install- Liquid Storage Tanks Area | 6d | 2027-04-08 | 2027-04-15 | CONST4950, CONST4730, PRO-2100 | 63d | 0d | Fervo-6D-10H-Holidays | CONST -Mechanical Contractor(s) [221 h] | H |  |
| CONST4910 |  | Equipment Install- PDC A - Area | 72d | 2027-06-04 | 2027-08-27 | CONST4700, CONST4710, CONST5910 | -59d | 0d | Fervo-6D-10H-Holidays | CONST -Mechanical Contractor(s) [111 h] | H |  |
| CONST4900 |  | Equipment Install- PDC B - Area | 72d | 2027-07-19 | 2027-10-11 | CONST4700 FF+20d, CONST4720 FF+20d, PRO-9200 FF+20d, PRO-2000 FF+20d, CONST5910 | -94.9d | 0d | Fervo-6D-10H-Holidays | CONST -Mechanical Contractor(s) [884 h] | H |  |
|  | 1 | **Process Building (Main Structure)** |  |  |  |  |  |  |  |  |  |  |
|  | 3 | **Process Building (Main Structure)-1st Floor** |  |  |  |  |  |  |  |  |  |  |
|  | 2 | **Process Building (Main Structure)-2nd Floor** |  |  |  |  |  |  |  |  |  |  |
|  | 4 | **Process Building (Main Structure)-3rd Floor** |  |  |  |  |  |  |  |  |  |  |
|  | 1 | **Process Building (Main Structure)-4th Floor** |  |  |  |  |  |  |  |  |  |  |
|  | 5 | **Process Building (Main Structure)-5th Floor** |  |  |  |  |  |  |  |  |  |  |
|  | 2 | **Compressor Area** |  |  |  |  |  |  |  |  |  |  |
|  | 3 | **DMDS Tank Area** |  |  |  |  |  |  |  |  |  |  |
|  | 4 | **Slop Oil Tank Area** |  |  |  |  |  |  |  |  |  |  |
|  | 5 | **Electrical Equipment Install** |  |  |  |  |  |  |  |  |  |  |
|  | 4 | **Piping Installation** |  | 2027-04-15 | 2027-04-29 |  |  |  |  |  |  |  |
| CONST4760 |  | Piping Install - Liquid Storage Tanks Area | 12d | 2027-04-15 | 2027-04-29 | CONST4730 SS+20d, CONST4950 FF, CONST4730 FF, CONST5090 | 515.8d | 0d | Fervo-6D-10H-Holidays | CONST-Piping Contractor [1056 h] | H | Piping |

| ID | WBS | Activity | Duration | Start | Finish | Predecessors | Total float | Free float | Calendar | Resources | x-Uncertainty | Text 2 |
| --- | --- | --- | --- | --- | --- | --- | --- | --- | --- | --- | --- | --- |
|  | 8 | **Equipment FPR** |  |  |  |  |  |  |  |  |  |  |
|  | 1 | **Process Building (Main Structure)** |  |  |  |  |  |  |  |  |  |  |
|  | 2 | **Compressor Area** |  |  |  |  |  |  |  |  |  |  |
|  | 3 | **DMDS Tank Area** |  |  |  |  |  |  |  |  |  |  |
|  | 4 | **Slop Oil Tank Area** |  |  |  |  |  |  |  |  |  |  |
|  | 11 | **Paint** |  | 2027-04-29 | 2027-05-13 |  |  |  |  |  |  |  |
| CONST4860 |  | Paint - Overall Main Back Area | 12d | 2027-04-29 | 2027-05-13 | CONST4760 | 515.8d | 0d | Fervo-6D-10H-Holidays | CONST- Paint Contractor [21 h] | H |  |
|  | 9 | **Insulation** |  | 2027-05-13 | 2027-05-27 |  |  |  |  |  |  |  |
| CONST5000 |  | Insulation - Liquid Storage Tanks Area | 12d | 2027-05-13 | 2027-05-27 | CONST4860 | 515.8d | 145.9d | Fervo-6D-10H-Holidays | CONST -Mechanical Contractor(s) [20 h] | H |  |
|  | 1 | **Process Building (Main Structure)** |  |  |  |  |  |  |  |  |  |  |
|  | 2 | **Compressor Area** |  |  |  |  |  |  |  |  |  |  |
|  | 3 | **DMDS Tank Area** |  |  |  |  |  |  |  |  |  |  |
|  | 4 | **Slop Oil Tank Area** |  |  |  |  |  |  |  |  |  |  |
|  | 12 | **Steel FPR** |  |  |  |  |  |  |  |  |  |  |
|  | 5 | **Electrical** |  | 2027-04-15 | 2027-11-01 |  |  |  |  |  |  |  |
| CONST4790 |  | Electrical Install - Liquid Storage Tanks Area | 12d | 2027-04-15 | 2027-04-29 | CONST5090 | 63d | 0d | Fervo-6D-10H-Holidays | CONST- E&I Contractor [531 h] | H |  |
| CONST4800 |  | Electrical Install - PDC A - Area | 72d | 2027-06-28 | 2027-09-21 | CONST4910 FF+20d | -59d | 0d | Fervo-6D-10H-Holidays | CONST- E&I Contractor [354 h] | H | Purge Gas Comp |
| CONST4780 |  | Electrical Install - PDC B - Area | 71.9d | 2027-08-09 | 2027-11-01 | CONST4900 FF+18d, PRO-10500, PRO-10700, PRO-11400, PRO-12600 | -94.9d | 0d | Fervo-6D-10H-Holidays | CONST- E&I Contractor [531 h] | H |  |
|  | 10 | **Instrumentation** |  | 2027-04-29 | 2027-11-15 |  |  |  |  |  |  |  |
| CONST5880 |  | Instrumentation Install - Liquid Storage Tanks Area | 12d | 2027-04-29 | 2027-05-13 | CONST4790 | 63d | 157.9d | Fervo-6D-10H-Holidays | CONST- E&I Contractor [531 h] | H |  |
| CONST5900 |  | Instrumentation Install - PDC A - Area | 48d | 2027-08-09 | 2027-10-05 | CONST4800 FF+12d | -59d | 35.9d | Fervo-6D-10H-Holidays | CONST- E&I Contractor [354 h] | H | Purge Gas Comp |
| CONST5890 |  | Instrumentation Install - PDC B - Area | 46d | 2027-09-23 | 2027-11-15 | CONST4780 FF+12d, PRO-3200 FF+20d, PRO-9800, PRO-2400 | -94.9d | 0d | Fervo-6D-10H-Holidays | CONST- E&I Contractor [531 h] | H |  |
|  | 2 | **Commissioning** |  | 2027-11-16 | 2028-01-12 |  |  |  |  |  |  |  |
| A1120 |  | Commissioning | 40d | 2027-11-16 | 2028-01-12 | PMC1020 | -79d | 89.88d | HAR-5D-08H-1S-HOLIDAYS Thru 2029 |  |  |  |

| ID | WBS | Activity | Duration | Start | Finish | Predecessors | Remaining | Planned start | Planned finish | Total float | Free float | Constraint | Calendar |
| --- | --- | --- | --- | --- | --- | --- | --- | --- | --- | --- | --- | --- | --- |
|  | 1 | **Facility # 5** |  | 2025-04-18 | 2028-03-09 |  |  |  |  |  |  |  |  |
|  | 1 | **Engineering** |  | 2026-02-20 | 2026-10-30 |  |  |  |  |  |  |  |  |
| A1000 |  | Engineering | 178d | 2026-02-20 | 2026-10-30 | CS1048 |  |  |  | 225d | 345d |  | HAR-5D-08H-1S-HOLIDAYS Thru 2029 |
|  | 2 | **Procurement** |  | 2025-04-18 | 2027-10-29 |  |  |  |  |  |  |  |  |
| A1010 |  | Procurement | 0d | 2025-04-18 A | 2027-10-29 | PM-1110 | 501d | 2025-11-10 | 2025-11-10 | -28d | 92d |  | HAR-5D-08H-1S-HOLIDAYS Thru 2029 |
|  | 3 | **Construction** |  | 2026-01-12 | 2028-01-13 |  |  |  |  |  |  |  |  |
| A1020 |  | Construction | 512d | 2026-01-12 | 2028-01-13 | CONST4680 SS |  |  |  | -120d | 0d |  | HAR-5D-08H-1S-HOLIDAYS Thru 2029 |
|  | 4 | **Commissioning** |  | 2028-01-14 | 2028-03-09 |  |  |  |  |  |  |  |  |
| A1090 |  | Commissioning | 40d | 2028-01-14 | 2028-03-09 | A1020, A1000 FF, A1010 FF |  |  |  | -120d | 48.88d |  | HAR-5D-08H-1S-HOLIDAYS Thru 2029 |
|  | 4 | **Facility # 6** |  | 2025-04-18 | 2028-01-18 |  |  |  |  |  |  |  |  |
|  | 1 | **Engineering** |  | 2026-01-12 | 2026-10-30 |  |  |  |  |  |  |  |  |
| A1030 |  | Engineering | 207d | 2026-01-12 | 2026-10-30 | PM-1110 |  |  |  | 225d | 308d | start on or after 2026-01-12 | HAR-5D-08H-1S-HOLIDAYS Thru 2029 |
|  | 2 | **Procurement** |  | 2025-04-18 | 2027-10-28 |  |  |  |  |  |  |  |  |
| A1040 |  | Procurement | 0d | 2025-04-18 A | 2027-10-28 | PM-1110 | 500d | 2025-11-10 | 2025-11-10 | -27d | 56d |  | HAR-5D-08H-1S-HOLIDAYS Thru 2029 |
|  | 3 | **Construction** |  | 2026-01-19 | 2027-11-19 |  |  |  |  |  |  |  |  |
| A1050 |  | Construction | 470d | 2026-01-19 | 2027-11-19 | PM-1110 |  |  |  | -83d | 0d | start on or after 2026-01-19 | HAR-5D-08H-1S-HOLIDAYS Thru 2029 |
|  | 4 | **Commissioning** |  | 2027-11-22 | 2028-01-18 |  |  |  |  |  |  |  |  |
| A1100 |  | Commissioning | 40d | 2027-11-22 | 2028-01-18 | A1050, A1030 FF, A1040 FF |  |  |  | -83d | 85.88d |  | HAR-5D-08H-1S-HOLIDAYS Thru 2029 |
|  | 3 | **Facility # 7** |  | 2025-04-18 | 2028-04-07 |  |  |  |  |  |  |  |  |
|  | 1 | **Engineering** |  | 2026-02-19 | 2026-10-30 |  |  |  |  |  |  |  |  |
| A1060 |  | Engineering | 179d | 2026-02-19 | 2026-10-30 | PM-1110 |  |  |  | 225d | 366d | start on or after 2026-02-19 | HAR-5D-08H-1S-HOLIDAYS Thru 2029 |
|  | 2 | **Procurement** |  | 2025-04-18 | 2027-10-27 |  |  |  |  |  |  |  |  |
| A1070 |  | Procurement | 0d | 2025-04-18 A | 2027-10-27 | PM-1110 | 499d | 2025-11-10 | 2025-11-10 | -26d | 115d |  | HAR-5D-08H-1S-HOLIDAYS Thru 2029 |
|  | 3 | **Construction** |  | 2026-02-02 | 2028-02-11 |  |  |  |  |  |  |  |  |
| A1080 |  | Construction | 518d | 2026-02-02 | 2028-02-11 | PM-1110 |  |  |  | -141d | 0d | start on or after 2026-02-02 | HAR-5D-08H-1S-HOLIDAYS Thru 2029 |

| ID | WBS | Activity | Duration | Start | Finish | Predecessors | Total float | Free float | Calendar |
| --- | --- | --- | --- | --- | --- | --- | --- | --- | --- |
|  | 4 | **Commissioning** |  | 2028-02-14 | 2028-04-07 |  |  |  |  |
| A1110 |  | Commissioning | 40d | 2028-02-14 | 2028-04-07 | A1080, A1060 FF, A1070 FF | -141d | 27.88d | HAR-5D-08H-1S-HOLIDAYS Thru 2029 |
|  | 2 | **Procurement Facility 5, 6, 7 & Transmission** |  | 2024-04-05 | 2027-12-15 |  |  |  |  |
|  | 98 | **High Voltage RCS Disconnect Switches** |  | 2025-11-10 | 2027-01-07 |  |  |  |  |
| PRO-11110 |  | High Voltage RCS Disconnect Switches - RFP Package | 5d | 2025-11-10 | 2025-11-14 | PM-1110 | 235d | 0d |  |
| PRO-11120 |  | High Voltage RCS Disconnect Switches - Issue RFP | 5d | 2025-11-17 | 2025-11-21 | PRO-11110 | 235d | 0d |  |
| PRO-11130 |  | High Voltage RCS Disconnect Switches - Proposals Due | 20d | 2025-11-24 | 2026-01-06 | PRO-11120 | 235d | 0d |  |
| PRO-11140 |  | High Voltage RCS Disconnect Switches - Commercial Evaluation | 5d | 2026-01-07 | 2026-01-13 | PRO-11130 | 235d | 0d |  |
| PRO-11150 |  | High Voltage RCS Disconnect Switches - Technical Evaluation | 5d | 2026-01-07 | 2026-01-13 | PRO-11140 SS | 235d | 0d |  |
| PRO-11160 |  | High Voltage RCS Disconnect Switches - Award | 5d | 2026-01-14 | 2026-01-20 | PRO-11150 | 235d | 0d |  |
| PRO-11170 |  | High Voltage RCS Disconnect Switches - Approved Vendor Drawings | 20d | 2026-01-21 | 2026-02-17 | PRO-11160 | 235d | 0d |  |
| PRO-11190 |  | High Voltage RCS Disconnect Switches - Lead Time | 240d | 2026-01-21 | 2026-12-30 | PRO-11160 | 529.88d | 0d |  |
| PRO-11180 |  | High Voltage RCS Disconnect Switches - Fabrication Vendor Drawings | 50d | 2026-02-18 | 2026-04-29 | PRO-11170 | 649.88d | 50d |  |
| PRO-11200 |  | High Voltage RCS Disconnect Switches - Receive at Site | 5d | 2026-12-31 | 2027-01-07 | PRO-11190 | 529.88d |  |  |
|  | 73 | **Well Pad 15kV Switchgear** |  | 2025-11-10 | 2026-11-06 |  |  |  |  |
| PRO-8510 |  | Well Pad 15kV Switchgear - RFP Package | 5d | 2025-11-10 | 2025-11-14 | PM-1110 | 235d | 0d |  |
| PRO-8520 |  | Well Pad 15kV Switchgear - Issue RFP | 5d | 2025-11-17 | 2025-11-21 | PRO-8510 | 235d | 0d |  |
| PRO-8530 |  | Well Pad 15kV Switchgear - Proposals Due | 20d | 2025-11-24 | 2026-01-06 | PRO-8520 | 235d | 0d |  |
| PRO-8540 |  | Well Pad 15kV Switchgear - Commercial Evaluation | 5d | 2026-01-07 | 2026-01-13 | PRO-8530 | 235d | 0d |  |
| PRO-8550 |  | Well Pad 15kV Switchgear - Technical Evaluation | 5d | 2026-01-07 | 2026-01-13 | PRO-8540 SS | 235d | 0d |  |
| PRO-8560 |  | Well Pad 15kV Switchgear - Award | 5d | 2026-01-14 | 2026-01-20 | PRO-8550 | 235d | 0d |  |
| PRO-8570 |  | Well Pad 15kV Switchgear - Approved Vendor Drawings | 20d | 2026-01-21 | 2026-02-17 | PRO-8560 | 235d | 0d |  |
| PRO-8590 |  | Well Pad 15kV Switchgear - Lead Time | 200d | 2026-01-21 | 2026-10-30 | PRO-8560 | 569.88d | 0d |  |
| PRO-8580 |  | Well Pad 15kV Switchgear - Fabrication Vendor Drawings | 40d | 2026-02-18 | 2026-04-15 | PRO-8570 | 659.88d | 60d |  |
| PRO-8600 |  | Well Pad 15kV Switchgear - Receive at Site | 5d | 2026-11-02 | 2026-11-06 | PRO-8590 | 569.88d |  |  |

| ID | WBS | Activity | Duration | Start | Finish | Predecessors | Complete | Remaining | Planned start | Planned finish | Total float | Free float | Expected finish |
| --- | --- | --- | --- | --- | --- | --- | --- | --- | --- | --- | --- | --- | --- |
|  | 86 | **420kV SF6 Breaker (DT)** |  |  |  |  |  |  |  |  |  |  |  |
|  | 87 | **69 kV to 345 kV Power Transformer** |  | 2025-04-01 | 2027-03-25 |  |  |  |  |  |  |  |  |
| PRO-8410 |  | 69 kV to 345 kV Power Transformer - RFP Package | 5d | 2025-04-01 A | 2025-04-01 A | PM-1110 | 100% |  | 2025-10-06 | 2025-10-10 |  |  |  |
| PRO-8420 |  | 69 kV to 345 kV Power Transformer - Issue RFP | 5d | 2025-04-01 A | 2025-04-01 A | PRO-8410 | 100% |  | 2025-10-13 | 2025-10-17 |  |  |  |
| PRO-8430 |  | 69 kV to 345 kV Power Transformer - Proposals Due | 20d | 2025-04-01 A | 2025-04-01 A | PRO-8420 | 100% |  | 2025-10-20 | 2025-11-14 |  |  |  |
| PRO-8440 |  | 69 kV to 345 kV Power Transformer - Commercial Evaluation | 5d | 2025-04-01 A | 2025-04-01 A | PRO-8430 | 100% |  | 2025-11-17 | 2025-11-21 |  |  |  |
| PRO-8450 |  | 69 kV to 345 kV Power Transformer - Technical Evaluation | 5d | 2025-04-01 A | 2025-04-01 A | PRO-8440 SS | 100% |  | 2025-11-17 | 2025-11-21 |  |  |  |
| PRO-8460 |  | 69 kV to 345 kV Power Transformer - Award | 5d | 2025-04-01 A | 2025-04-01 A | PRO-8450 | 100% |  | 2025-11-24 | 2025-12-02 |  |  |  |
| PRO-8490 |  | 69 kV to 345 kV Power Transformer - Lead Time | 100d | 2025-04-01 A | 2027-03-18 | PRO-8460 |  | 335d | 2026-01-02 | 2026-05-22 | 474.88d | 0d |  |
| PRO-8470 |  | 69 kV to 345 kV Power Transformer - Approved Vendor Drawings | 20d | 2025-11-10 | 2025-12-09 | PRO-8460 |  |  |  |  | 275d | 0d |  |
| PRO-8480 |  | 69 kV to 345 kV Power Transformer - Fabrication Vendor Drawings | 80d | 2025-12-10 | 2026-04-15 | PRO-8470 |  |  |  |  | 659.88d | 60d |  |
| PRO-8500 |  | 69 kV to 345 kV Power Transformer - Receive at Site | 5d | 2027-03-19 | 2027-03-25 | PRO-8490 |  |  |  |  | 474.88d |  |  |
|  | 4 | **420kV Circuit Breakers - EconiQ** |  | 2025-05-19 | 2027-05-07 |  |  |  |  |  |  |  |  |
| PRO-1310 |  | 420kV Circuit Breakers - EconiQ - RFP Package | 5d | 2025-05-19 A | 2025-05-19 A | PM-1110 | 100% |  | 2025-10-06 | 2025-10-10 |  |  |  |
| PRO-1320 |  | 420kV Circuit Breakers - EconiQ - Issue RFP | 5d | 2025-05-19 A | 2025-05-19 A | PRO-1310 | 100% |  | 2025-10-13 | 2025-10-17 |  |  |  |
| PRO-1330 |  | 420kV Circuit Breakers - EconiQ - Proposals Due | 20d | 2025-05-19 A | 2025-05-19 A | PRO-1320 | 100% |  | 2025-10-20 | 2025-11-14 |  |  |  |
| PRO-1340 |  | 420kV Circuit Breakers - EconiQ - Commercial Evaluation | 5d | 2025-05-19 A | 2025-05-19 A | PRO-1330 | 100% |  | 2025-11-17 | 2025-11-21 |  |  |  |
| PRO-1350 |  | 420kV Circuit Breakers - EconiQ - Technical Evaluation | 5d | 2025-05-19 A | 2025-05-19 A | PRO-1340 SS | 100% |  | 2025-11-17 | 2025-11-21 |  |  |  |
| PRO-1360 |  | 420kV Circuit Breakers - EconiQ - Award | 5d | 2025-05-19 A | 2025-05-19 A | PRO-1350 | 100% |  | 2025-11-24 | 2025-12-02 |  |  |  |
| PRO-1370 |  | 420kV Circuit Breakers - EconiQ - Lead Time | 392d | 2025-05-19 A | 2027-05-06 | PRO-1360 | 6% | 369d | 2025-10-06 | 2027-04-22 | 275d | 0d | 2027-05-06 |
| PRO-1390 |  | 420kV Circuit Breakers - EconiQ - Approved Vendor Drawings | 20d | 2025-11-10 | 2025-12-09 | PRO-1370 SS |  |  |  |  | 275d | 0d |  |
| PRO-1380 |  | 420kV Circuit Breakers - EconiQ - Fabrication Vendor Drawings | 80d | 2025-12-10 | 2026-04-15 | PRO-1390 |  |  |  |  | 659.88d | 60d |  |
| PRO-1400 |  | 420kV Circuit Breakers - EconiQ - Receive at Site | 0d | 2027-05-07 | 2027-05-07 | PRO-1370 |  |  |  |  | 445.88d | 0d | 2027-05-06 |
|  | 6 | **420kV Circuit Breakers - SF6** |  | 2024-04-05 | 2027-10-14 |  |  |  |  |  |  |  |  |
| PRO-1510 |  | 420kV Circuit Breakers - SF6 - RFP Package | 5d | 2024-04-05 A | 2024-04-05 A | PM-1110 | 100% |  | 2025-10-06 | 2025-10-10 |  |  |  |
| PRO-1520 |  | 420kV Circuit Breakers - SF6 - Issue RFP | 5d | 2024-04-05 A | 2024-04-05 A | PRO-1510 | 100% |  | 2025-10-13 | 2025-10-17 |  |  |  |
| PRO-1530 |  | 420kV Circuit Breakers - SF6 - Proposals Due | 20d | 2024-04-05 A | 2024-04-05 A | PRO-1520 | 100% |  | 2025-10-20 | 2025-11-14 |  |  |  |
| PRO-1540 |  | 420kV Circuit Breakers - SF6 - Commercial Evaluation | 5d | 2024-04-05 A | 2024-04-05 A | PRO-1530 | 100% |  | 2025-11-17 | 2025-11-21 |  |  |  |
| PRO-1550 |  | 420kV Circuit Breakers - SF6 - Technical Evaluation | 5d | 2024-04-05 A | 2024-04-05 A | PRO-1540 SS | 100% |  | 2025-11-17 | 2025-11-21 |  |  |  |
| PRO-1560 |  | 420kV Circuit Breakers - SF6 - Award | 5d | 2024-04-05 A | 2024-04-05 A | PRO-1550 | 100% |  | 2025-11-24 | 2025-12-02 |  |  |  |
| PRO-1590 |  | 420kV Circuit Breakers - SF6 - Lead Time | 100d | 2024-04-05 A | 2027-09-30 | PRO-1560 |  | 472d | 2026-01-02 | 2026-05-22 | 332.88d | 0d | 2027-09-30 |
| PRO-1570 |  | 420kV Circuit Breakers - SF6 - Approved Vendor Drawings | 20d | 2025-11-10 | 2025-12-09 | PRO-1560 |  |  |  |  | 275d | 0d |  |
| PRO-1580 |  | 420kV Circuit Breakers - SF6 - Fabrication Vendor Drawings | 80d | 2025-12-10 | 2026-04-15 | PRO-1570 |  |  |  |  | 659.88d | 60d |  |
| PRO-1600 |  | 420kV Circuit Breakers - SF6 - Receive at Site | 10d | 2027-10-01 | 2027-10-14 | PRO-1590 |  |  |  |  | 332.88d | 0d | 2027-10-14 |

| ID | WBS | Activity | Duration | Start | Finish | Predecessors | Total float | Free float |
| --- | --- | --- | --- | --- | --- | --- | --- | --- |
|  | 15 | **Water Well ESP** |  | 2025-11-10 | 2026-11-06 |  |  |  |
| PRO-2610 |  | Water Well ESP - RFP Package | 5d | 2025-11-10 | 2025-11-14 | PM-1110 | 235d | 0d |
| PRO-2620 |  | Water Well ESP - Issue RFP | 5d | 2025-11-17 | 2025-11-21 | PRO-2610 | 235d | 0d |
| PRO-2630 |  | Water Well ESP - Proposals Due | 20d | 2025-11-24 | 2026-01-06 | PRO-2620 | 235d | 0d |
| PRO-2640 |  | Water Well ESP - Commercial Evaluation | 5d | 2026-01-07 | 2026-01-13 | PRO-2630 | 235d | 0d |
| PRO-2650 |  | Water Well ESP - Technical Evaluation | 5d | 2026-01-07 | 2026-01-13 | PRO-2640 SS | 235d | 0d |
| PRO-2660 |  | Water Well ESP - Award | 5d | 2026-01-14 | 2026-01-20 | PRO-2650 | 235d | 0d |
| PRO-2670 |  | Water Well ESP - Approved Vendor Drawings | 20d | 2026-01-21 | 2026-02-17 | PRO-2660 | 235d | 0d |
| PRO-2690 |  | Water Well ESP - Lead Time | 200d | 2026-01-21 | 2026-10-30 | PRO-2660 | 569.88d | 0d |
| PRO-2680 |  | Water Well ESP - Fabrication Vendor Drawings | 40d | 2026-02-18 | 2026-04-15 | PRO-2670 | 659.88d | 60d |
| PRO-2700 |  | Water Well ESP - Receive at Site | 5d | 2026-11-02 | 2026-11-06 | PRO-2690 | 569.88d |  |
|  | 16 | **Well Pad Production Pipeline** |  | 2025-11-10 | 2026-11-06 |  |  |  |
| PRO-2410 |  | Well Pad Production Pipeline - RFP Package | 5d | 2025-11-10 | 2025-11-14 | PM-1110 | 235d | 0d |
| PRO-2420 |  | Well Pad Production Pipeline - Issue RFP | 5d | 2025-11-17 | 2025-11-21 | PRO-2410 | 235d | 0d |
| PRO-2430 |  | Well Pad Production Pipeline - Proposals Due | 20d | 2025-11-24 | 2026-01-06 | PRO-2420 | 235d | 0d |
| PRO-2440 |  | Well Pad Production Pipeline - Commercial Evaluation | 5d | 2026-01-07 | 2026-01-13 | PRO-2430 | 235d | 0d |
| PRO-2450 |  | Well Pad Production Pipeline - Technical Evaluation | 5d | 2026-01-07 | 2026-01-13 | PRO-2440 SS | 235d | 0d |
| PRO-2460 |  | Well Pad Production Pipeline - Award | 5d | 2026-01-14 | 2026-01-20 | PRO-2450 | 235d | 0d |
| PRO-2470 |  | Well Pad Production Pipeline - Approved Vendor Drawings | 20d | 2026-01-21 | 2026-02-17 | PRO-2460 | 235d | 0d |
| PRO-2490 |  | Well Pad Production Pipeline - Lead Time | 200d | 2026-01-21 | 2026-10-30 | PRO-2460 | 569.88d | 0d |
| PRO-2480 |  | Well Pad Production Pipeline - Fabrication Vendor Drawings | 40d | 2026-02-18 | 2026-04-15 | PRO-2470 | 659.88d | 60d |
| PRO-2500 |  | Well Pad Production Pipeline - Receive at Site | 5d | 2026-11-02 | 2026-11-06 | PRO-2490 | 569.88d |  |
|  | 23 | **Well Pad (480V) Transformers** |  | 2025-11-10 | 2026-11-06 |  |  |  |
| PRO-3310 |  | Well Pad (480V) Transformers - RFP Package | 5d | 2025-11-10 | 2025-11-14 | PM-1110 | 235d | 0d |
| PRO-3320 |  | Well Pad (480V) Transformers - Issue RFP | 5d | 2025-11-17 | 2025-11-21 | PRO-3310 | 235d | 0d |
| PRO-3330 |  | Well Pad (480V) Transformers - Proposals Due | 20d | 2025-11-24 | 2026-01-06 | PRO-3320 | 235d | 0d |
| PRO-3340 |  | Well Pad (480V) Transformers - Commercial Evaluation | 5d | 2026-01-07 | 2026-01-13 | PRO-3330 | 235d | 0d |
| PRO-3350 |  | Well Pad (480V) Transformers - Technical Evaluation | 5d | 2026-01-07 | 2026-01-13 | PRO-3340 SS | 235d | 0d |
| PRO-3360 |  | Well Pad (480V) Transformers - Award | 5d | 2026-01-14 | 2026-01-20 | PRO-3350 | 235d | 0d |
| PRO-3370 |  | Well Pad (480V) Transformers - Approved Vendor Drawings | 20d | 2026-01-21 | 2026-02-17 | PRO-3360 | 235d | 0d |
| PRO-3390 |  | Well Pad (480V) Transformers - Lead Time | 200d | 2026-01-21 | 2026-10-30 | PRO-3360 | 569.88d | 0d |
| PRO-3380 |  | Well Pad (480V) Transformers - Fabrication Vendor Drawings | 40d | 2026-02-18 | 2026-04-15 | PRO-3370 | 659.88d | 60d |
| PRO-3400 |  | Well Pad (480V) Transformers - Receive at Site | 5d | 2026-11-02 | 2026-11-06 | PRO-3390 | 569.88d |  |

| ID | WBS | Activity | Duration | Start | Finish | Predecessors | Total float | Free float |
| --- | --- | --- | --- | --- | --- | --- | --- | --- |
|  | 26 | **Well Tree Flow Cross** |  | 2025-11-10 | 2026-11-06 |  |  |  |
| PRO-3910 |  | Well Tree Flow Cross - RFP Package | 5d | 2025-11-10 | 2025-11-14 | PM-1110 | 235d | 0d |
| PRO-3920 |  | Well Tree Flow Cross - Issue RFP | 5d | 2025-11-17 | 2025-11-21 | PRO-3910 | 235d | 0d |
| PRO-3930 |  | Well Tree Flow Cross - Proposals Due | 20d | 2025-11-24 | 2026-01-06 | PRO-3920 | 235d | 0d |
| PRO-3940 |  | Well Tree Flow Cross - Commercial Evaluation | 5d | 2026-01-07 | 2026-01-13 | PRO-3930 | 235d | 0d |
| PRO-3950 |  | Well Tree Flow Cross - Technical Evaluation | 5d | 2026-01-07 | 2026-01-13 | PRO-3940 SS | 235d | 0d |
| PRO-3960 |  | Well Tree Flow Cross - Award | 5d | 2026-01-14 | 2026-01-20 | PRO-3950 | 235d | 0d |
| PRO-3970 |  | Well Tree Flow Cross - Approved Vendor Drawings | 20d | 2026-01-21 | 2026-02-17 | PRO-3960 | 235d | 0d |
| PRO-3990 |  | Well Tree Flow Cross - Lead Time | 200d | 2026-01-21 | 2026-10-30 | PRO-3960 | 569.88d | 0d |
| PRO-3980 |  | Well Tree Flow Cross - Fabrication Vendor Drawings | 40d | 2026-02-18 | 2026-04-15 | PRO-3970 | 659.88d | 60d |
| PRO-4000 |  | Well Tree Flow Cross - Receive at Site | 5d | 2026-11-02 | 2026-11-06 | PRO-3990 | 569.88d |  |
|  | 27 | **LV (480V) Switchracks** |  | 2025-11-10 | 2026-12-15 |  |  |  |
| PRO-3210 |  | LV (480V) Switchracks - RFP Package | 5d | 2025-11-10 | 2025-11-14 | PM-1110 | 135d | 0d |
| PRO-3220 |  | LV (480V) Switchracks - Issue RFP | 5d | 2025-11-17 | 2025-11-21 | PRO-3210 | 135d | 0d |
| PRO-3230 |  | LV (480V) Switchracks - Proposals Due | 20d | 2025-11-24 | 2026-01-06 | PRO-3220 | 135d | 0d |
| PRO-3240 |  | LV (480V) Switchracks - Commercial Evaluation | 5d | 2026-01-07 | 2026-01-13 | PRO-3230 | 135d | 0d |
| PRO-3250 |  | LV (480V) Switchracks - Technical Evaluation | 5d | 2026-01-07 | 2026-01-13 | PRO-3240 SS | 135d | 0d |
| PRO-3260 |  | LV (480V) Switchracks - Award | 5d | 2026-01-14 | 2026-01-20 | PRO-3250 | 135d | 0d |
| PRO-3270 |  | LV (480V) Switchracks - Approved Vendor Drawings | 20d | 2026-01-21 | 2026-02-17 | PRO-3260 | 235d | 0d |
| PRO-3290 |  | LV (480V) Switchracks - Lead Time | 225d | 2026-01-21 | 2026-12-08 | PRO-3260 | 135d | 0d |
| PRO-3280 |  | LV (480V) Switchracks - Fabrication Vendor Drawings | 45d | 2026-02-18 | 2026-04-22 | PRO-3270 | 654.88d | 55d |
| PRO-3300 |  | LV (480V) Switchracks - Receive at Site | 5d | 2026-12-09 | 2026-12-15 | PRO-3290 | 135d | 131d |
|  | 33 | **Shut Down Valves on Well Trees** |  | 2025-11-10 | 2026-08-27 |  |  |  |
| PRO-2810 |  | Shut Down Valves on Well Trees - RFP Package | 5d | 2025-11-10 | 2025-11-14 | PM-1110 | 235d | 0d |
| PRO-2820 |  | Shut Down Valves on Well Trees - Issue RFP | 5d | 2025-11-17 | 2025-11-21 | PRO-2810 | 235d | 0d |
| PRO-2830 |  | Shut Down Valves on Well Trees - Proposals Due | 20d | 2025-11-24 | 2026-01-06 | PRO-2820 | 235d | 0d |
| PRO-2840 |  | Shut Down Valves on Well Trees - Commercial Evaluation | 5d | 2026-01-07 | 2026-01-13 | PRO-2830 | 235d | 0d |
| PRO-2850 |  | Shut Down Valves on Well Trees - Technical Evaluation | 5d | 2026-01-07 | 2026-01-13 | PRO-2840 SS | 235d | 0d |
| PRO-2860 |  | Shut Down Valves on Well Trees - Award | 5d | 2026-01-14 | 2026-01-20 | PRO-2850 | 235d | 0d |
| PRO-2870 |  | Shut Down Valves on Well Trees - Approved Vendor Drawings | 20d | 2026-01-21 | 2026-02-17 | PRO-2860 | 235d | 0d |
| PRO-2890 |  | Shut Down Valves on Well Trees - Lead Time | 150d | 2026-01-21 | 2026-08-20 | PRO-2860 | 619.88d | 0d |
| PRO-2880 |  | Shut Down Valves on Well Trees - Fabrication Vendor Drawings | 20d | 2026-02-18 | 2026-03-17 | PRO-2870 | 679.88d | 80d |
| PRO-2900 |  | Shut Down Valves on Well Trees - Receive at Site | 5d | 2026-08-21 | 2026-08-27 | PRO-2890 | 619.88d |  |

| ID | WBS | Activity | Duration | Start | Finish | Predecessors | Complete | Remaining | Planned start | Planned finish | Total float | Free float | Expected finish |
| --- | --- | --- | --- | --- | --- | --- | --- | --- | --- | --- | --- | --- | --- |
|  | 71 | **Well Pad Injection Pipeline** |  | 2025-11-10 | 2026-11-06 |  |  |  |  |  |  |  |  |
| PRO-7810 |  | Well Pad Injection Pipeline - RFP Package | 5d | 2025-11-10 | 2025-11-14 | PM-1110 |  |  |  |  | 235d | 0d |  |
| PRO-7820 |  | Well Pad Injection Pipeline - Issue RFP | 5d | 2025-11-17 | 2025-11-21 | PRO-7810 |  |  |  |  | 235d | 0d |  |
| PRO-7830 |  | Well Pad Injection Pipeline - Proposals Due | 20d | 2025-11-24 | 2026-01-06 | PRO-7820 |  |  |  |  | 235d | 0d |  |
| PRO-7840 |  | Well Pad Injection Pipeline - Commercial Evaluation | 5d | 2026-01-07 | 2026-01-13 | PRO-7830 |  |  |  |  | 235d | 0d |  |
| PRO-7850 |  | Well Pad Injection Pipeline - Technical Evaluation | 5d | 2026-01-07 | 2026-01-13 | PRO-7840 SS |  |  |  |  | 235d | 0d |  |
| PRO-7860 |  | Well Pad Injection Pipeline - Award | 5d | 2026-01-14 | 2026-01-20 | PRO-7850 |  |  |  |  | 235d | 0d |  |
| PRO-7870 |  | Well Pad Injection Pipeline - Approved Vendor Drawings | 20d | 2026-01-21 | 2026-02-17 | PRO-7860 |  |  |  |  | 235d | 0d |  |
| PRO-7890 |  | Well Pad Injection Pipeline - Lead Time | 200d | 2026-01-21 | 2026-10-30 | PRO-7860 |  |  |  |  | 569.88d | 0d |  |
| PRO-7880 |  | Well Pad Injection Pipeline - Fabrication Vendor Drawings | 40d | 2026-02-18 | 2026-04-15 | PRO-7870 |  |  |  |  | 659.88d | 60d |  |
| PRO-7900 |  | Well Pad Injection Pipeline - Receive at Site | 5d | 2026-11-02 | 2026-11-06 | PRO-7890 |  |  |  |  | 569.88d |  |  |
|  | 74 | **Generator Circuit Breaker** |  | 2025-11-10 | 2027-01-21 |  |  |  |  |  |  |  |  |
| PRO-9310 |  | Generator Circuit Breaker - RFP Package | 5d | 2025-11-10 | 2025-11-14 | PM-1110 |  |  |  |  | 100d | 0d |  |
| PRO-9320 |  | Generator Circuit Breaker - Issue RFP | 5d | 2025-11-17 | 2025-11-21 | PRO-9310 |  |  |  |  | 100d | 0d |  |
| PRO-9330 |  | Generator Circuit Breaker - Proposals Due | 20d | 2025-11-24 | 2026-01-06 | PRO-9320 |  |  |  |  | 100d | 0d |  |
| PRO-9340 |  | Generator Circuit Breaker - Commercial Evaluation | 5d | 2026-01-07 | 2026-01-13 | PRO-9330 |  |  |  |  | 100d | 0d |  |
| PRO-9350 |  | Generator Circuit Breaker - Technical Evaluation | 5d | 2026-01-07 | 2026-01-13 | PRO-9340 SS |  |  |  |  | 100d | 0d |  |
| PRO-9360 |  | Generator Circuit Breaker - Award | 5d | 2026-01-14 | 2026-01-20 | PRO-9350 |  |  |  |  | 100d | 0d |  |
| PRO-9370 |  | Generator Circuit Breaker - Approved Vendor Drawings | 20d | 2026-01-21 | 2026-02-17 | PRO-9360 |  |  |  |  | 235d | 0d |  |
| PRO-9390 |  | Generator Circuit Breaker - Lead Time | 250d | 2026-01-21 | 2027-01-14 | PRO-9360 |  |  |  |  | 100d | 0d |  |
| PRO-9380 |  | Generator Circuit Breaker - Fabrication Vendor Drawings | 60d | 2026-02-18 | 2026-05-13 | PRO-9370 |  |  |  |  | 639.88d | 40d |  |
| PRO-9400 |  | Generator Circuit Breaker - Receive at Site | 5d | 2027-01-15 | 2027-01-21 | PRO-9390 |  |  |  |  | 100d | 96d |  |
|  | 2 | **420kV SF6 Breaker** |  | 2025-05-19 | 2027-12-15 |  |  |  |  |  |  |  |  |
| PRO-1110 |  | 420kV SF6 Breaker - RFP Package | 5d | 2025-05-19 A | 2025-05-19 A | PM-1110 | 100% |  | 2025-10-06 | 2025-10-10 |  |  |  |
| PRO-1120 |  | 420kV SF6 Breaker - Issue RFP | 5d | 2025-05-19 A | 2025-05-19 A | PRO-1110 | 100% |  | 2025-10-13 | 2025-10-17 |  |  |  |
| PRO-1130 |  | 420kV SF6 Breaker - Proposals Due | 20d | 2025-05-19 A | 2025-05-19 A | PRO-1120 | 100% |  | 2025-10-20 | 2025-11-14 |  |  |  |
| PRO-1140 |  | 420kV SF6 Breaker - Commercial Evaluation | 5d | 2025-05-19 A | 2025-05-19 A | PRO-1130 | 100% |  | 2025-11-17 | 2025-11-21 |  |  |  |
| PRO-1150 |  | 420kV SF6 Breaker - Technical Evaluation | 5d | 2025-05-19 A | 2025-05-19 A | PRO-1140 SS | 100% |  | 2025-11-17 | 2025-11-21 |  |  |  |
| PRO-1160 |  | 420kV SF6 Breaker - Award | 5d | 2025-05-19 A | 2025-05-19 A | PRO-1150 | 100% |  | 2025-11-24 | 2025-12-02 |  |  |  |
| PRO-1190 |  | 420kV SF6 Breaker - Lead Time | 486d | 2025-05-19 A | 2027-12-14 | PRO-1180 | 19% | 393d | 2026-01-02 | 2027-11-30 | 291.88d | 0d | 2027-12-14 |
| PRO-1170 |  | 420kV SF6 Breaker - Approved Vendor Drawings | 20d | 2025-11-10 | 2025-12-09 | PRO-1160 |  |  |  |  | 275d | 0d |  |
| PRO-1180 |  | 420kV SF6 Breaker - Fabrication Vendor Drawings | 110d | 2025-12-10 | 2026-05-28 | PRO-1170 |  |  |  |  | 291.88d | 0d |  |
| PRO-1200 |  | 420kV SF6 Breaker - Receive at Site | 0d | 2027-12-15 | 2027-12-15 | PRO-1190 |  |  |  |  | 291.88d | 0d | 2027-12-14 |

| ID | WBS | Activity | Duration | Start | Finish | Predecessors | Complete | Remaining | Planned start | Planned finish | Total float | Free float | Expected finish |
| --- | --- | --- | --- | --- | --- | --- | --- | --- | --- | --- | --- | --- | --- |
|  | 28 | **Well Pad MV VFDs + Ehouses** |  | 2025-11-10 | 2026-11-06 |  |  |  |  |  |  |  |  |
| PRO-3810 |  | Well Pad MV VFDs + Ehouses - RFP Package | 5d | 2025-11-10 | 2025-11-14 | PM-1110 |  |  |  |  | 235d | 0d |  |
| PRO-3820 |  | Well Pad MV VFDs + Ehouses - Issue RFP | 5d | 2025-11-17 | 2025-11-21 | PRO-3810 |  |  |  |  | 235d | 0d |  |
| PRO-3830 |  | Well Pad MV VFDs + Ehouses - Proposals Due | 20d | 2025-11-24 | 2026-01-06 | PRO-3820 |  |  |  |  | 235d | 0d |  |
| PRO-3840 |  | Well Pad MV VFDs + Ehouses - Commercial Evaluation | 5d | 2026-01-07 | 2026-01-13 | PRO-3830 |  |  |  |  | 235d | 0d |  |
| PRO-3850 |  | Well Pad MV VFDs + Ehouses - Technical Evaluation | 5d | 2026-01-07 | 2026-01-13 | PRO-3840 SS |  |  |  |  | 235d | 0d |  |
| PRO-3860 |  | Well Pad MV VFDs + Ehouses - Award | 5d | 2026-01-14 | 2026-01-20 | PRO-3850 |  |  |  |  | 235d | 0d |  |
| PRO-3870 |  | Well Pad MV VFDs + Ehouses - Approved Vendor Drawings | 20d | 2026-01-21 | 2026-02-17 | PRO-3860 |  |  |  |  | 235d | 0d |  |
| PRO-3890 |  | Well Pad MV VFDs + Ehouses - Lead Time | 200d | 2026-01-21 | 2026-10-30 | PRO-3860 |  |  |  |  | 569.88d | 0d |  |
| PRO-3880 |  | Well Pad MV VFDs + Ehouses - Fabrication Vendor Drawings | 40d | 2026-02-18 | 2026-04-15 | PRO-3870 |  |  |  |  | 659.88d | 60d |  |
| PRO-3900 |  | Well Pad MV VFDs + Ehouses - Receive at Site | 5d | 2026-11-02 | 2026-11-06 | PRO-3890 |  |  |  |  | 569.88d |  |  |
|  | 75 | **Well Pad DC Charger and Battery** |  | 2025-11-10 | 2026-11-06 |  |  |  |  |  |  |  |  |
| PRO-8210 |  | Well Pad DC Charger and Battery - RFP Package | 5d | 2025-11-10 | 2025-11-14 | PM-1110 |  |  |  |  | 235d | 0d |  |
| PRO-8220 |  | Well Pad DC Charger and Battery - Issue RFP | 5d | 2025-11-17 | 2025-11-21 | PRO-8210 |  |  |  |  | 235d | 0d |  |
| PRO-8230 |  | Well Pad DC Charger and Battery - Proposals Due | 20d | 2025-11-24 | 2026-01-06 | PRO-8220 |  |  |  |  | 235d | 0d |  |
| PRO-8240 |  | Well Pad DC Charger and Battery - Commercial Evaluation | 5d | 2026-01-07 | 2026-01-13 | PRO-8230 |  |  |  |  | 235d | 0d |  |
| PRO-8250 |  | Well Pad DC Charger and Battery - Technical Evaluation | 5d | 2026-01-07 | 2026-01-13 | PRO-8240 SS |  |  |  |  | 235d | 0d |  |
| PRO-8260 |  | Well Pad DC Charger and Battery - Award | 5d | 2026-01-14 | 2026-01-20 | PRO-8250 |  |  |  |  | 235d | 0d |  |
| PRO-8270 |  | Well Pad DC Charger and Battery - Approved Vendor Drawings | 20d | 2026-01-21 | 2026-02-17 | PRO-8260 |  |  |  |  | 235d | 0d |  |
| PRO-8290 |  | Well Pad DC Charger and Battery - Lead Time | 200d | 2026-01-21 | 2026-10-30 | PRO-8260 |  |  |  |  | 569.88d | 0d |  |
| PRO-8280 |  | Well Pad DC Charger and Battery - Fabrication Vendor Drawings | 40d | 2026-02-18 | 2026-04-15 | PRO-8270 |  |  |  |  | 659.88d | 60d |  |
| PRO-8300 |  | Well Pad DC Charger and Battery - Receive at Site | 5d | 2026-11-02 | 2026-11-06 | PRO-8290 |  |  |  |  | 569.88d |  |  |
|  | 7 | **High-Voltage (550kV) RCS Breakers** |  | 2025-09-26 | 2027-10-15 |  |  |  |  |  |  |  |  |
| PRO-1710 |  | High-Voltage (550kV) RCS Breakers - RFP Package | 5d | 2025-09-26 A | 2025-09-26 A | PM-1110 | 100% |  | 2025-10-06 | 2025-10-10 |  |  |  |
| PRO-1720 |  | High-Voltage (550kV) RCS Breakers - Issue RFP | 5d | 2025-09-26 A | 2025-09-26 A | PRO-1710 | 100% |  | 2025-10-13 | 2025-10-17 |  |  |  |
| PRO-1730 |  | High-Voltage (550kV) RCS Breakers - Proposals Due | 20d | 2025-09-26 A | 2025-09-26 A | PRO-1720 | 100% |  | 2025-11-10 | 2025-12-09 |  |  |  |
| PRO-1760 |  | High-Voltage (550kV) RCS Breakers - Award | 5d | 2025-09-26 A | 2025-09-26 A | PRO-1750 | 100% |  | 2025-12-17 | 2026-01-06 |  |  |  |
| PRO-1790 |  | High-Voltage (550kV) RCS Breakers - Lead Time | 520d | 2025-09-26 A | 2027-10-08 | PRO-1760 | 8% | 477d | 2026-01-07 | 2028-01-20 | 331.88d | 0d | 2027-10-08 |
| PRO-1740 |  | High-Voltage (550kV) RCS Breakers - Commercial Evaluation | 1d | 2025-11-10 | 2025-11-10 | PRO-1730 |  |  |  |  | 274d | 0d |  |
| PRO-1750 |  | High-Voltage (550kV) RCS Breakers - Technical Evaluation | 1d | 2025-11-10 | 2025-11-10 | PRO-1740 SS |  |  |  |  | 274d | 0d |  |
| PRO-1770 |  | High-Voltage (550kV) RCS Breakers - Approved Vendor Drawings | 20d | 2025-11-11 | 2025-12-10 | PRO-1760 |  |  |  |  | 274d | 0d |  |
| PRO-1780 |  | High-Voltage (550kV) RCS Breakers - Fabrication Vendor Drawings | 110d | 2025-12-11 | 2026-05-29 | PRO-1770 |  |  |  |  | 628.88d | 29d |  |
| PRO-1800 |  | High-Voltage (550kV) RCS Breakers - Receive at Site | 5d | 2027-10-11 | 2027-10-15 | PRO-1790 |  |  |  |  | 331.88d |  |  |

| ID | WBS | Activity | Type | Duration | Start | Finish | Predecessors | Total float | Free float | Constraint | Calendar |
| --- | --- | --- | --- | --- | --- | --- | --- | --- | --- | --- | --- |
|  | 6 | **General Milestones** |  |  | 2027-08-05 | 2029-02-06 |  |  |  |  |  |
| l11680 |  | Wellpad - Harkley Purge | milestone | 0d | 2027-08-05 | 2027-08-05 |  | 0d | 306d | finish on 2027-08-05 | HAR-4D-10H-1S-HOLIDAYS Thru 2029 |
| P2_M120 |  | Mechanical Completion- Facility 4 | milestone | 0d | 2027-08-09 | 2027-08-09 |  | 0d | 305d | finish on 2027-08-09 | HAR-4D-10H-1S-HOLIDAYS Thru 2029 |
| P2_M130 |  | Mechanical Completion- Facility 5 | milestone | 0d | 2027-08-12 | 2027-08-12 |  | 0d | 302d | finish on 2027-08-12 | HAR-4D-10H-1S-HOLIDAYS Thru 2029 |
| P2_M140 |  | Mechanical Completion- Facility 6 | milestone | 0d | 2027-09-09 | 2027-09-09 |  | 0d | 287d | finish on 2027-09-09 | HAR-4D-10H-1S-HOLIDAYS Thru 2029 |
| l11800 |  | Wellpad - Kings Purge | milestone | 0d | 2027-09-21 | 2027-09-21 |  | 0d | 281.1d | finish on 2027-09-21 | HAR-4D-10H-1S-HOLIDAYS Thru 2029 |
| P2_M150 |  | Mechanical Completion- Facility 7 | milestone | 0d | 2027-12-20 | 2027-12-20 |  | 0d | 231.85d | finish on 2027-12-20 | HAR-4D-10H-1S-HOLIDAYS Thru 2029 |
| P2_M100 |  | Target completion for ISO Testing | milestone | 0d | 2028-04-03 | 2028-04-03 |  | -109.05d | 27.85d | finish on 2028-04-01 | HAR-4D-10H-1S-HOLIDAYS Thru 2029 |
| P2_M160 |  | Iso Testing |  | 144d | 2028-05-18 | 2029-02-06 | P2_M100, A1120, A1090, A1100, A1110 | -136.9d | 0d | start on 2028-05-18 | HAR-4D-10H-1S-HOLIDAYS Thru 2029 |
| P2_M110 |  | COD | milestone | 0d | 2029-02-06 | 2029-02-06 | P2_M160 FF | -136.9d | 0d | finish on 2028-06-01 | HAR-4D-10H-1S-HOLIDAYS Thru 2029 |

## Activity codes

| Code | Value | Meaning |
| --- | --- | --- |
| x-Uncertainty | H | High Duration Uncertainty [optimistic] |
